# Basel Environnement

Schedule from MS Project, 2011-11-01 to 2013-01-31, 7.5 hours a day, A marks actual dates.

## Calendars

- Standard: Mon-Fri 08:00-12:00, 13:00-16:30; Sat-Sun off. Exceptions (off unless hours are given): 2012-01-02 to 2012-01-03 09:00-12:00, 14:00-18:00, 2012-04-06, 2012-04-09 09:00-12:00, 14:00-18:00, 2012-05-21, 2012-06-25, 2012-07-02, 2012-09-03, 2012-10-08, 2012-11-12, 2012-12-24 to 2012-12-27, 2012-12-31 to 2013-01-02.

## Resources

| Resource |
| --- |
| L3 IT |
| L3 ALGO |
| MEP |
| L4 IT |
| L4 DEV DSEIIA |
| L4 DEV RW |
| L4 DEV CGI |
| L4 TI |
| L4 UAT |
| L4 PP |
| L1 IT |
| L1 Business |
| L1 ALGO |
| L1 CGO |
| L1 CGI |
| L1 TI |
| L1 UAT |
| L1 PP |
| GCB |
| Defect resource |
| Post-MEP |
| 128 |
| 427 |

## Schedule

| ID | WBS | Task | Type | Duration | Start | Finish | Predecessors | Complete | Remaining | Baseline start | Baseline finish | Baseline duration | Baseline 1 start | Baseline 1 finish | Total slack | Constraint | Work | Actual work |
| --- | --- | --- | --- | --- | --- | --- | --- | --- | --- | --- | --- | --- | --- | --- | --- | --- | --- | --- |
| 1 | 1 | Project : Start | milestone | 0d | 2011-11-01 A | 2011-11-01 A |  | 100% |  | 2011-11-01 | 2011-11-01 | 0d |  |  |  |  |  |  |
| 2 | 2 | **Delivery Enhancement: 2012-L2** |  | 170.8d | 2011-11-01 A | 2012-06-29 |  | 97% | 4.52d | 2011-11-01 | 2012-07-11 | 176.87d |  |  | 0d |  | 75h | 75h |
| 3 | 2.1 | **Detailled Analysis** |  | 104.87d | 2011-11-04 A | 2012-03-30 A |  | 100% |  | 2011-11-04 | 2012-03-30 | 104.87d |  |  |  |  |  |  |
| 4 | 2.1.1 | D.An.010: MBA |  | 90d | 2011-11-04 A | 2012-03-09 A |  | 100% |  | 2011-11-04 | 2012-03-09 | 90d |  |  |  | start no earlier than 2011-11-04 |  |  |
| 5 | 2.1.2 | D.An.015: MBA Approval | milestone | 0d | 2012-03-30 A | 2012-03-30 A | 4 | 100% |  | 2012-03-30 | 2012-03-30 | 0d |  |  |  | start no earlier than 2012-03-30 |  |  |
| 6 | 2.1.3 | D.An: End | milestone | 0d | 2012-03-30 A | 2012-03-30 A | 5 | 100% |  | 2012-03-30 | 2012-03-30 | 0d |  |  |  |  |  |  |
| 7 | 2.2 | **Detailled Architecture** |  | 119.8d | 2011-11-01 A | 2012-04-18 A |  | 100% |  | 2011-11-01 | 2012-05-03 | 129.87d |  |  |  |  |  |  |
| 8 | 2.2.1 | D.Ar.010: Detailled Architecture |  | 63d | 2011-11-01 A | 2012-01-27 A |  | 100% |  | 2011-11-01 | 2012-01-27 | 63d |  |  |  |  |  |  |
| 9 | 2.2.2 | D.Ar.020: ARB | milestone | 0d | 2012-04-18 A | 2012-04-18 A |  | 100% |  | 2012-05-03 | 2012-05-03 | 0d | 2012-04-18 | 2012-04-18 |  | start no earlier than 2012-04-18 |  |  |
| 10 | 2.2.3 | D.Ar: End | milestone | 0d | 2012-04-18 A | 2012-04-18 A | 9 | 100% |  | 2012-05-03 | 2012-05-03 | 0d |  |  |  |  |  |  |
| 11 | 2.3 | **Development** |  | 79.93d | 2012-01-09 A | 2012-04-30 A |  | 100% |  | 2012-01-09 | 2012-04-30 | 79d |  |  |  |  |  |  |
| 12 | 2.3.1 | DE.010: DSEI-IA |  | 79.93d | 2012-01-09 A | 2012-04-30 A |  | 100% |  | 2012-01-09 | 2012-04-30 | 79d |  |  |  | start no earlier than 2012-01-09 |  |  |
| 13 | 2.3.2 | DE.030: CGI |  | 79.93d | 2012-01-09 A | 2012-04-30 A |  | 100% |  | 2012-01-09 | 2012-04-30 | 79d |  |  |  | finish no earlier than 2012-04-30 |  |  |
| 14 | 2.3.3 | DE : End | milestone | 0d | 2012-04-30 A | 2012-04-30 A | 13 | 100% |  | 2012-04-30 | 2012-04-30 | 0d |  |  |  |  |  |  |
| 15 | 2.4 | **Testing** |  | 96.93d | 2012-01-16 A | 2012-05-31 A |  | 100% |  | 2012-01-16 | 2012-05-31 | 96d |  |  |  |  | 75h | 75h |
| 16 | 2.4.1 | TE.010: Test Strategy |  | 56.93d | 2012-02-15 A | 2012-05-04 A |  | 100% |  | 2012-02-15 | 2012-05-04 | 56d |  |  |  |  |  |  |
| 17 | 2.4.2 | TE.015: Test Strategy Approval | milestone | 0d | 2012-05-04 A | 2012-05-04 A | 16 | 100% |  | 2012-05-04 | 2012-05-04 | 0d |  |  |  |  |  |  |
| 18 | 2.4.3 | TE.030: Test Plan |  | 55d | 2012-01-16 A | 2012-03-30 A |  | 100% |  | 2012-01-16 | 2012-04-30 | 74d |  |  |  |  |  |  |
| 19 | 2.4.4 | TE.035: Test Plan Approval | milestone | 0d | 2012-03-30 A | 2012-03-30 A | 18 | 100% |  | 2012-05-01 | 2012-05-01 | 1d |  |  |  |  |  |  |
| 20 | 2.4.5 | TE.060: Unit Testing |  | 55d | 2012-01-16 A | 2012-03-30 A |  | 100% |  | 2012-01-16 | 2012-03-30 | 55d |  |  |  |  |  |  |
| 21 | 2.4.6 | TE.070: Integrated Testing |  | 62.93d | 2012-02-01 A | 2012-04-30 A |  | 100% |  | 2012-02-01 | 2012-02-29 | 21d |  |  |  | finish no earlier than 2012-04-30 |  |  |
| 22 | 2.4.7 | **TE.080: User Acceptance Testing** |  | 63.93d | 2012-03-01 A | 2012-05-31 A |  | 100% |  | 2012-03-01 | 2012-05-31 | 63d |  |  |  |  | 75h | 75h |
| 23 | 2.4.7.1 | TE.081: IT Contribution |  | 50d | 2012-03-01 A | 2012-05-31 A | 21 | 100% |  | 2012-03-01 | 2012-05-31 | 63d |  |  |  | finish no earlier than 2012-05-31 |  |  |
| 24 | 2.4.7.2 | TE.082: Business Contribution |  | 63.93d | 2012-03-01 A | 2012-05-31 A |  | 100% |  | 2012-03-01 | 2012-03-30 | 22d |  |  |  | finish no earlier than 2012-05-31 | 75h | 75h |
| 25 | 2.4.8 | TE.090: Pre-Production Testing |  | 15d | 2012-05-10 A | 2012-05-31 A |  | 100% |  | 2012-04-10 | 2012-05-31 | 37d |  |  |  | start no earlier than 2012-05-10 |  |  |
| 26 | 2.4.9 | TE.100: Defect Management |  | 63.93d | 2012-03-01 A | 2012-05-31 A | 22SS | 100% |  | 2012-03-01 | 2012-05-31 | 63d |  |  |  | start no earlier than 2012-01-16 |  |  |
| 27 | 2.4.10 | TE: End | milestone | 0d | 2012-05-31 A | 2012-05-31 A | 26 | 100% |  | 2012-05-31 | 2012-05-31 | 0d |  |  |  |  |  |  |

Notes:
- 1: *Schedule Connect: [28]UID=RN7UYZ69.D[$:&C8%Y[&F"C`[11]PUN=SE-1493[6]TUID=1[27]PUID=inv_investments5000601
- 2: *Schedule Connect: [28]UID=RN$(%$PV06%$:U-&\E0QR'@0[11]PUN=SE-1493[8]TUID=360[27]PUID=inv_investments5000601
- 3: *Schedule Connect: [28]UID=RN+^.4M3`F.4*Q#:55F8ZQ"`[11]PUN=SE-1493[8]TUID=271[27]PUID=inv_investments5000601
- 4: *Schedule Connect: [28]UID=RNVGJ%R2W#2$Z)'YV+T#F]:0[11]PUN=SE-1493[8]TUID=272[27]PUID=inv_investments5000601
- 5: *Schedule Connect: [28]UID=RNASJ*DIOIK4R=Q_1;^OL;YP[11]PUN=SE-1493[8]TUID=273[27]PUID=inv_investments5000601
- 7: *Schedule Connect: [28]UID=RNC;ZJ/C_-W4>8WE`BHE>70`[11]PUN=SE-1493[8]TUID=279[27]PUID=inv_investments5000601
- 8: *Schedule Connect: [28]UID=RNGR6!150-5$F%H<).-^770`[11]PUN=SE-1493[8]TUID=280[27]PUID=inv_investments5000601
- 9: *Schedule Connect: [28]UID=RNVX>/P[3T>D"I_\EY99;YK`[11]PUN=SE-1493[8]TUID=281[27]PUID=inv_investments5000601
- 11: *Schedule Connect: [28]UID=RNE''*2?9K)4&X2EVL]Q[S=0[11]PUN=SE-1493[8]TUID=287[27]PUID=inv_investments5000601
- 12: *Schedule Connect: [28]UID=RN='1D<5!Y8$&;6U8@>U$M7@[11]PUN=SE-1493[8]TUID=288[27]PUID=inv_investments5000601
- 13: *Schedule Connect: [28]UID=RNF^@,CD`SW4NX#0&KQ[/<3P[11]PUN=SE-1493[8]TUID=289[27]PUID=inv_investments5000601
- 14: *Schedule Connect: [28]UID=RNBW]F,%,I\TF/OMC9IVW\_`[11]PUN=SE-1493[8]TUID=292[27]PUID=inv_investments5000601
- 15: *Schedule Connect: [28]UID=RN(@G.B&C]S4&/O.$JK(HAW0[11]PUN=SE-1493[8]TUID=293[27]PUID=inv_investments5000601
- 20: *Schedule Connect: [28]UID=RNG(4"*I?(M4NU?@'FWEJ,/@[11]PUN=SE-1493[8]TUID=295[27]PUID=inv_investments5000601
- 21: *Schedule Connect: [28]UID=RN2WE[;\<]\D^A)="I*IW!3@[11]PUN=SE-1493[8]TUID=296[27]PUID=inv_investments5000601
- 22: *Schedule Connect: [28]UID=RNP%)C`>C\F$:T,ZKW<4N\)`[11]PUN=SE-1493[8]TUID=297[27]PUID=inv_investments5000601
- 23: *Schedule Connect: [28]UID=RNP%)C`>C\F$:T,ZKW<4N\)`[11]PUN=SE-1493[8]TUID=297[27]PUID=inv_investments5000601
- 27: *Schedule Connect: [28]UID=RN:ME`^><;FT^:@)COTC;ATP[11]PUN=SE-1493[8]TUID=298[27]PUID=inv_investments5000601

| ID | WBS | Task | Type | Duration | Start | Finish | Predecessors | Complete | Remaining | Baseline start | Baseline finish | Baseline duration | Baseline 1 start | Baseline 1 finish | Total slack | Constraint | Work | Actual work |
| --- | --- | --- | --- | --- | --- | --- | --- | --- | --- | --- | --- | --- | --- | --- | --- | --- | --- | --- |
| 28 | 2.5 | **MEP** |  | 7d | 2012-06-01 | 2012-06-11 |  |  |  | 2012-06-01 | 2012-06-11 | 7d |  |  | 0d |  |  |  |
| 29 | 2.5.1 | MEP.030: Deployement |  | 7d | 2012-06-01 | 2012-06-11 |  |  |  | 2012-06-01 | 2012-06-11 | 7d |  |  | 0d | start no earlier than 2012-06-01 |  |  |
| 30 | 2.5.2 | MEP: End | milestone | 0d | 2012-06-11 | 2012-06-11 | 29 |  |  | 2012-06-11 | 2012-06-11 | 0d |  |  | 0d |  |  |  |
| 31 | 2.6 | Post-MEP Support |  | 13d | 2012-06-12 | 2012-06-29 | 30 |  |  | 2012-06-12 | 2012-07-11 | 20d |  |  | 0d | start no earlier than 2012-06-12 |  |  |
| 32 | 3 | **P6: Program Management** |  | 293.8d | 2011-11-29 A | 2013-01-31 |  | 43% | 168.21d | 2011-11-29 | 2013-01-31 | 291.87d | 2012-03-07 | 2012-03-30 | 0d |  | 262.5h | 105h |
| 33 | 3.1 | **Change Management** |  | 176d | 2012-01-19 A | 2012-09-28 |  | 42% | 101.86d | 2012-01-19 | 2012-09-28 | 176d |  |  | 0d |  | 262.5h | 105h |
| 34 | 3.1.1 | **CM010: Regulatory Changes** |  | 176d | 2012-01-19 A | 2012-09-28 |  | 42% | 101.86d | 2012-01-19 | 2012-09-28 | 176d |  |  | 0d |  | 262.5h | 105h |
| 35 | 3.1.1.1 | CM.011: QIS BIS |  | 146d | 2012-03-01 A | 2012-09-28 |  | 40% | 87.6d | 2012-03-01 | 2012-09-28 | 146d |  |  | 0d | start no earlier than 2012-03-01 | 75h | 30h |
| 36 | 3.1.1.2 | CM.012: BCAR OSFI |  | 69d | 2012-05-25 A | 2012-08-31 |  | 50% | 34.5d | 2012-07-03 | 2012-08-31 | 44d |  |  | 0d | start no earlier than 2012-05-25 | 75h | 37.5h |
| 37 | 3.1.1.3 | CM.013: CAR Guideline |  | 110d | 2012-03-26 A | 2012-08-31 |  | 50% | 55d | 2012-03-26 | 2012-08-31 | 110d |  |  | 0d | start no earlier than 2012-03-26 | 75h | 37.5h |
| 38 | 3.1.1.4 | CM.014 : FAQ BIS & Final CCP Guidance |  | 59d | 2012-05-07 | 2012-07-31 |  |  |  | 2012-04-02 | 2012-07-31 | 82d |  |  | 0d | start no earlier than 2012-05-07 | 37.5h |  |
| 39 | 3.1.1.5 | CM.015: BAM Activities |  | 176d | 2012-01-19 A | 2012-09-28 |  | 50% | 88d | 2012-01-19 | 2012-09-28 | 176d |  |  | 0d | start no earlier than 2012-01-19 |  |  |
| 40 | 3.2 | **Deliverables** |  | 121.93d | 2012-03-02 A | 2012-08-24 |  | 95% | 5.81d | 2012-03-02 | 2012-08-24 | 120d | 2012-03-07 | 2012-03-30 | 8d |  |  |  |
| 41 | 3.2.1 | **D.010: Program Plan** |  | 121.93d | 2012-03-02 A | 2012-08-24 |  | 67% | 40.64d | 2012-03-02 | 2012-08-24 | 120d |  |  | 8d |  |  |  |
| 42 | 3.2.1.1 | D.011: P3.1 Baseline |  | 1d | 2012-03-02 A | 2012-03-02 A | 59 | 100% |  | 2012-03-02 | 2012-03-02 | 0d |  |  |  | start no earlier than 2012-03-02 |  |  |
| 43 | 3.2.1.2 | D.012: P3.2 Baseline |  | 1d | 2012-05-03 A | 2012-05-03 A | 60 | 100% |  | 2012-05-04 | 2012-05-04 | 0d |  |  |  | start no earlier than 2012-05-03 |  |  |
| 44 | 3.2.1.3 | D.013: P 4: Baseline |  | 1d | 2012-08-24 | 2012-08-24 | 61 |  |  | 2012-08-24 | 2012-08-24 | 0d |  |  | 8d | start no earlier than 2012-08-24 |  |  |
| 45 | 3.2.2 | D.020: RACI |  | 18d | 2012-03-07 A | 2012-03-30 A |  | 100% |  | 2012-03-07 | 2012-03-30 | 18d | 2012-03-07 | 2012-03-30 |  | start no earlier than 2012-03-07 |  |  |
| 46 | 3.3 | **Milestones** |  | 293.8d | 2011-11-29 A | 2013-01-31 |  | 15% | 250.27d | 2011-11-29 | 2013-01-31 | 291.87d |  |  | 0d |  |  |  |
| 47 | 3.3.1 | M.010: Kick Off |  | 1d | 2011-11-29 A | 2011-11-29 A |  | 100% |  | 2011-11-29 | 2011-11-29 | 0d |  |  |  | start no earlier than 2011-11-29 |  |  |
| 48 | 3.3.2 | M.020: SIO Roadmap |  | 1d | 2012-02-01 A | 2012-02-01 A |  | 100% |  | 2012-02-01 | 2012-02-01 | 0d |  |  |  | start no earlier than 2012-02-01 |  |  |
| 49 | 3.3.3 | **M.030: PMO Gating** |  | 120.93d | 2012-03-16 A | 2012-09-07 |  | 33% | 80.62d | 2012-03-16 | 2012-09-07 | 119d |  |  | 0d |  |  |  |
| 50 | 3.3.3.1 | M.031: PMO Gating 1/ Start up/ L3 |  | 1d | 2012-03-16 A | 2012-03-16 A | 42 | 100% |  | 2012-03-16 | 2012-03-16 | 0d |  |  |  | start no earlier than 2012-03-16 |  |  |
| 51 | 3.3.3.2 | M.033: PMO Gating 2 / L4 |  | 1d | 2012-06-18 | 2012-06-18 | 43 |  |  | 2012-06-18 | 2012-06-18 | 0d |  |  | 0d | start no earlier than 2012-06-18 |  |  |
| 52 | 3.3.3.3 | M.034: PMO Gating 3 / L1 |  | 1d | 2012-09-07 | 2012-09-07 | 44 |  |  | 2012-09-07 | 2012-09-07 | 0d |  |  | 0d | start no earlier than 2012-09-07 |  |  |
| 53 | 3.3.4 | M.040: Rigour Test |  | 1d | 2012-02-02 A | 2012-02-02 A |  | 100% |  | 2012-02-02 | 2012-02-02 | 0d |  |  |  | start no earlier than 2012-02-02 |  |  |
| 54 | 3.3.5 | M.041: Rigour Test #2 |  | 20d | 2012-07-03 | 2012-07-30 |  |  |  |  |  |  |  |  | 0d | start no earlier than 2012-07-03 |  |  |
| 55 | 3.3.6 | M.050: Project Closure |  | 1d | 2013-01-31 | 2013-01-31 |  |  |  | 2013-01-31 | 2013-01-31 | 0d |  |  | 0d | start no earlier than 2013-01-31 |  |  |

Notes:
- 28: *Schedule Connect: [28]UID=RN&#6&:PA[;TF+>P6^EC$_4@[11]PUN=SE-1493[8]TUID=299[27]PUID=inv_investments5000601
- 32: *Schedule Connect: [28]UID=RNSY0M=XY#9DVY\I=X/NR.B0[11]PUN=SE-1493[6]TUID=2[27]PUID=inv_investments5000601
- 46: *Schedule Connect: [28]UID=RNZ#T@]AP`M4>:[_W=(L,%LP[11]PUN=SE-1493[7]TUID=25[27]PUID=inv_investments5000601
- 48: *Schedule Connect: [28]UID=RN\EW_T:W>4D*+_RJ[KH^68P[11]PUN=SE-1493[7]TUID=30[27]PUID=inv_investments5000601
- 49: *Schedule Connect: [28]UID=RNLU7YS,ZCV4&GSW!&%KS7`0[11]PUN=SE-1493[7]TUID=26[27]PUID=inv_investments5000601
- 50: *Schedule Connect: [28]UID=RNLU7YS,ZCV4&GSW!&%KS7`0[11]PUN=SE-1493[7]TUID=26[27]PUID=inv_investments5000601
- 51: *Schedule Connect: [28]UID=RN4[I,T$47<D>-#Y*F!AL\"@[11]PUN=SE-1493[7]TUID=28[27]PUID=inv_investments5000601
- 52: *Schedule Connect: [28]UID=RN$GW^[GCK@$.80@VS'/HDDP[11]PUN=SE-1493[7]TUID=29[27]PUID=inv_investments5000601
- 53: *Schedule Connect: [28]UID=RN8$\*"J6_>$R!OI89#6NYBP[11]PUN=SE-1493[7]TUID=31[27]PUID=inv_investments5000601
- 55: *Schedule Connect: [28]UID=RNO/1Q(9[?5T2S798E)*A'`@[11]PUN=SE-1493[7]TUID=32[27]PUID=inv_investments5000601

| ID | WBS | Task | Type | Duration | Start | Finish | Predecessors | Complete | Remaining | Baseline start | Baseline finish | Baseline duration | Total slack | Free slack | Constraint | Work | Actual work |
| --- | --- | --- | --- | --- | --- | --- | --- | --- | --- | --- | --- | --- | --- | --- | --- | --- | --- |
| 56 | 4 | **P1: Basel III Release** |  | 294.8d | 2011-11-28 A | 2013-01-31 |  | 42% | 171.59d | 2011-11-28 | 2013-01-31 | 294.8d | 0d |  |  | 9428.62h | 4094.4h |
| 57 | 4.1 | **Detailled Analysis (Global)** |  | 157.8d | 2011-12-16 A | 2012-07-30 |  | 67% | 52.6d | 2011-12-16 | 2012-07-30 | 155.87d | 26d |  |  |  |  |
| 58 | 4.1.1 | **D.An.010: MBA** |  | 157.8d | 2011-12-16 A | 2012-07-30 |  | 67% | 52.6d | 2011-12-16 | 2012-07-30 | 155.87d | 26d |  |  |  |  |
| 59 | 4.1.1.1 | D.An.011: MBA V1 Approval (P1, P3, P4) |  | 1d | 2011-12-16 A | 2011-12-16 A |  | 100% |  | 2011-12-16 | 2011-12-16 | 0d |  |  |  |  |  |
| 60 | 4.1.1.2 | D.An.012: MBA V2 Approval (P1, P3, P4) - L4-2012 |  | 1d | 2012-03-12 A | 2012-03-12 A |  | 100% |  | 2012-03-12 | 2012-03-12 | 0d |  |  | start no earlier than 2012-03-12 |  |  |
| 61 | 4.1.1.3 | D.An.013: MBA Final Approval (P1, P3, P4) - L1-2013 |  | 1d | 2012-07-30 | 2012-07-30 |  |  |  | 2012-07-30 | 2012-07-30 | 0d | 26d | 18d | start no earlier than 2012-07-30 |  |  |
| 62 | 4.2 | **P3.1: ALGO Upgrade: 2012-L3 - V. 4.7.1** |  | 172.87d | 2011-11-28 A | 2012-08-01 |  | 82% | 31.87d | 2011-11-28 | 2012-08-01 | 172.87d | 0d |  |  | 2981.25h | 2533.65h |
| 63 | 4.2.1 | **Detailled Analysis (Version Upgrade tasks)** |  | 18d | 2011-11-28 A | 2011-12-21 A |  | 100% |  | 2011-11-28 | 2011-12-21 | 18d |  |  |  | 120h | 120h |
| 64 | 4.2.1.1 | D.An.040: Gap Analysis |  | 18d | 2011-11-28 A | 2011-12-21 A |  | 100% |  | 2011-11-28 | 2011-12-21 | 18d |  |  | start no earlier than 2011-11-28 | 120h | 120h |
| 65 | 4.2.2 | **Detailled Architecture** |  | 38.5d | 2012-02-13 A | 2012-04-05 A |  | 100% |  | 2012-02-06 | 2012-04-04 | 43d |  |  |  |  |  |
| 66 | 4.2.2.1 | D.Ar.010: Detailled Architecture |  | 35d | 2012-02-13 A | 2012-03-30 A |  | 100% |  | 2012-02-06 | 2012-03-16 | 30d |  |  | finish no earlier than 2012-03-30 |  |  |
| 67 | 4.2.2.2 | D.Ar.015: Business presentation |  | 0.5d | 2012-04-05 A | 2012-04-05 A |  | 100% |  |  |  |  |  |  | start no earlier than 2012-04-05 |  |  |
| 68 | 4.2.3 | **Development** |  | 94.87d | 2011-12-05 A | 2012-04-17 A |  | 100% |  | 2011-12-05 | 2012-05-02 | 105.87d |  |  |  | 607.5h | 607.5h |
| 69 | 4.2.3.1 | DE.070: Upgrade Prototype |  | 88d | 2011-12-05 A | 2012-04-05 A |  | 100% |  | 2011-12-05 | 2012-04-05 | 88d |  |  | start no earlier than 2011-12-05 | 607.5h | 607.5h |
| 70 | 4.2.3.2 | DE.080: Upgrade Built (Deployment in Mtl) | milestone | 0d | 2012-03-22 A | 2012-03-22 A |  | 100% |  | 2012-03-30 | 2012-05-02 | 22d |  |  | start no earlier than 2012-03-30 |  |  |
| 71 | 4.2.3.3 | DE.030: CGI |  | 40d | 2012-02-20 A | 2012-04-17 A |  | 100% |  | 2012-02-20 | 2012-04-04 | 33d |  |  | start no earlier than 2012-02-20 |  |  |
| 72 | 4.2.3.4 | DE: End | milestone | 0d | 2012-04-17 A | 2012-04-17 A | 71 | 100% |  | 2012-05-02 | 2012-05-02 | 0d |  |  |  |  |  |
| 73 | 4.2.4 | **Testing** |  | 99.93d | 2012-02-06 A | 2012-06-27 |  | 77% | 22.78d | 2012-02-06 | 2012-06-27 | 99d | 0d |  |  | 2238.75h | 1806.15h |
| 74 | 4.2.4.1 | TE.005: Fall Back Plan Required | milestone | 0d | 2012-03-09 A | 2012-03-09 A |  | 100% |  | 2012-03-09 | 2012-03-09 | 0d |  |  | start no earlier than 2012-03-09 |  |  |
| 75 | 4.2.4.2 | TE.010: Test Strategy |  | 29.85d | 2012-02-06 A | 2012-03-16 A |  | 100% |  | 2012-02-06 | 2012-03-16 | 29.85d |  |  | start no earlier than 2012-02-06 | 150h | 150h |
| 76 | 4.2.4.3 | TE.015: Test Strategy Approval | milestone | 0d | 2012-03-16 A | 2012-03-16 A | 75 | 100% |  | 2012-03-16 | 2012-03-16 | 0d |  |  |  |  |  |
| 77 | 4.2.4.4 | **TE.020: Test Case** |  | 29d | 2012-03-05 A | 2012-04-16 A |  | 100% |  | 2012-03-05 | 2012-04-05 | 24d |  |  |  | 75h | 75h |
| 78 | 4.2.4.4.1 | TE.021: IT Contribution |  | 29d | 2012-03-05 A | 2012-04-16 A |  | 100% |  | 2012-03-05 | 2012-04-05 | 24d |  |  | start no earlier than 2012-03-05 |  |  |
| 79 | 4.2.4.4.2 | TE.022: Business Contribution |  | 29d | 2012-03-05 A | 2012-04-16 A |  | 100% |  | 2012-03-05 | 2012-04-05 | 24d |  |  | start no earlier than 2012-03-05 | 75h | 75h |
| 80 | 4.2.4.5 | TE.030: Test Plan |  | 10d | 2012-03-23 A | 2012-04-16 A | 77FF | 100% |  | 2012-03-23 | 2012-04-05 | 10d |  |  |  | 75h | 75h |
| 81 | 4.2.4.6 | TE.035: Test Plan Approval | milestone | 0d | 2012-04-16 A | 2012-04-16 A | 80 | 100% |  | 2012-04-05 | 2012-04-05 | 0d |  |  |  |  |  |

Notes:
- 56: *Schedule Connect: [28]UID=RN4XK;<COICD:K;L7/"V,&%`[11]PUN=SE-1493[7]TUID=36[27]PUID=inv_investments5000601
- 62: *Schedule Connect: [28]UID=RN72>FR'1954F4#/1D/T68W`[11]PUN=SE-1493[7]TUID=37[27]PUID=inv_investments5000601
- 63: *Schedule Connect: [28]UID=RN+^.4M3`F.4*Q#:55F8ZQ"`[11]PUN=SE-1493[8]TUID=271[27]PUID=inv_investments5000601
- 65: Architecture pour SCON -
- 69: *Schedule Connect: [28]UID=RNX[8F9?8>NTF>NG#JLWL`;P[11]PUN=SE-1493[8]TUID=274[27]PUID=inv_investments5000601
- 70: *Schedule Connect: [28]UID=RN1S=S!>Z0J4"RP>'`I\*\WP[11]PUN=SE-1493[8]TUID=275[27]PUID=inv_investments5000601
- 73: *Schedule Connect: [28]UID=RN(@G.B&C]S4&/O.$JK(HAW0[11]PUN=SE-1493[8]TUID=293[27]PUID=inv_investments5000601
- 74: Not required
- 78: *Schedule Connect: [28]UID=RNP%)C`>C\F$:T,ZKW<4N\)`[11]PUN=SE-1493[8]TUID=297[27]PUID=inv_investments5000601

| ID | WBS | Task | Type | Duration | Start | Finish | Predecessors | Complete | Remaining | Baseline start | Baseline finish | Baseline duration | Total slack | Constraint | Work | Actual work |
| --- | --- | --- | --- | --- | --- | --- | --- | --- | --- | --- | --- | --- | --- | --- | --- | --- |
| 82 | 4.2.4.7 | **TE.040: Regression Testing** |  | 15d | 2012-03-12 A | 2012-03-30 A |  | 100% |  | 2012-03-12 | 2012-03-30 | 15d |  |  | 225h | 225h |
| 83 | 4.2.4.7.1 | TE.041: IT Contribution |  | 15d | 2012-03-12 A | 2012-03-30 A |  | 100% |  | 2012-03-12 | 2012-03-30 | 15d |  | start no earlier than 2012-03-12 | 112.5h | 112.5h |
| 84 | 4.2.4.7.2 | TE.042: Business Contribution |  | 15d | 2012-03-12 A | 2012-03-30 A |  | 100% |  | 2012-03-12 | 2012-03-30 | 15d |  | start no earlier than 2012-03-12 | 112.5h | 112.5h |
| 85 | 4.2.4.8 | **TE.050: Deployment Testing** |  | 10d | 2012-04-02 A | 2012-04-17 A | 82 | 100% |  | 2012-04-02 | 2012-04-17 | 10d |  |  | 258.75h | 258.75h |
| 86 | 4.2.4.8.1 | TE.051: IT Contribution |  | 10d | 2012-04-02 A | 2012-04-17 A |  | 100% |  | 2012-04-02 | 2012-04-17 | 10d |  | start no earlier than 2012-04-02 | 172.5h | 172.5h |
| 87 | 4.2.4.8.2 | TE.052: Business Contribution |  | 10d | 2012-04-02 A | 2012-04-17 A |  | 100% |  | 2012-04-02 | 2012-04-17 | 10d |  | start no earlier than 2012-04-02 | 86.25h | 86.25h |
| 88 | 4.2.4.9 | **TE.070: Integrated Testing** |  | 14d | 2012-04-17 A | 2012-05-07 A |  | 100% |  | 2012-04-18 | 2012-05-07 | 14d |  |  | 630h | 630h |
| 89 | 4.2.4.9.1 | TE.071: IT Contribution |  | 14d | 2012-04-17 A | 2012-05-07 A | 87 | 100% |  | 2012-04-18 | 2012-05-07 | 14d |  |  | 420h | 420h |
| 90 | 4.2.4.9.2 | TE.072: Business Contribution |  | 14d | 2012-04-17 A | 2012-05-07 A | 87 | 100% |  | 2012-04-18 | 2012-05-07 | 14d |  |  | 210h | 210h |
| 91 | 4.2.4.10 | **TE.080: User Acceptance Testing** |  | 32d | 2012-05-07 A | 2012-06-20 |  | 41% | 19.04d | 2012-05-07 | 2012-06-20 | 32d | 0d |  | 727.5h | 392.4h |
| 92 | 4.2.4.10.1 | TE.081: IT Contribution |  | 32d | 2012-05-07 A | 2012-06-20 |  | 80% | 6.4d | 2012-05-07 | 2012-06-20 | 32d | 0d | start no earlier than 2012-05-07 | 487.5h | 390h |
| 93 | 4.2.4.10.2 | TE.082: Business Contribution |  | 32d | 2012-05-07 A | 2012-06-20 |  | 1% | 31.68d | 2012-05-07 | 2012-06-20 | 32d | 0d | start no earlier than 2012-05-07 | 240h | 2.4h |
| 94 | 4.2.4.11 | TE.090: Pre-Production Testing |  | 5d | 2012-06-20 | 2012-06-27 | 91FS-1d |  |  | 2012-06-20 | 2012-06-27 | 5d | 0d |  | 97.5h |  |
| 95 | 4.2.4.12 | TE.100: Defect Management |  | 74d | 2012-03-12 A | 2012-06-27 | 82SS | 60% | 29.6d | 2012-03-12 | 2012-06-27 | 74d | 0d |  |  |  |
| 96 | 4.2.4.13 | TE: End | milestone | 0d | 2012-06-27 | 2012-06-27 | 95 |  |  | 2012-06-27 | 2012-06-27 | 0d | 0d |  |  |  |
| 97 | 4.2.5 | **MEP** |  | 4d | 2012-06-27 | 2012-07-04 |  |  |  | 2012-06-28 | 2012-07-04 | 4d | 0d |  | 15h |  |
| 98 | 4.2.5.1 | MEP.030: Deployement |  | 4d | 2012-06-27 | 2012-07-04 | 96 |  |  | 2012-06-28 | 2012-07-04 | 4d | 0d |  | 15h |  |
| 99 | 4.2.5.2 | MEP: End | milestone | 0d | 2012-07-04 | 2012-07-04 | 98 |  |  | 2012-07-04 | 2012-07-04 | 0d | 0d |  |  |  |
| 100 | 4.2.6 | Post-MEP Support |  | 20d | 2012-07-04 | 2012-08-01 | 99 |  |  | 2012-07-05 | 2012-08-01 | 20d | 0d |  |  |  |
| 101 | 4.3 | **P.11: Complementary Data - Stabilization** |  | 165.8d | 2011-12-15 A | 2012-08-09 |  | 74% | 42.96d | 2011-12-15 | 2012-05-17 | 108.87d | 0d |  | 489.75h | 489.75h |
| 102 | 4.3.1 | **Detailled Analysis** |  | 20d | 2012-02-28 A | 2012-03-26 A |  | 100% |  | 2012-02-28 | 2012-03-27 | 21d |  |  | 489.75h | 489.75h |
| 103 | 4.3.1.1 | D.An.010: MBA |  | 7d | 2012-02-28 A | 2012-03-07 A |  | 100% |  | 2012-02-28 | 2012-03-07 | 7d |  | start no earlier than 2012-02-28 |  |  |
| 104 | 4.3.1.2 | D.An.015: MBA Approval |  | 2d | 2012-03-08 A | 2012-03-09 A | 103 | 100% |  | 2012-03-08 | 2012-03-09 | 2d |  |  |  |  |
| 105 | 4.3.1.3 | D.An.030: SRD |  | 9d | 2012-03-12 A | 2012-03-22 A | 104 | 100% |  | 2012-03-12 | 2012-03-23 | 10d |  |  | 452.25h | 452.25h |
| 106 | 4.3.1.4 | D.An.035: SRD Approval |  | 2d | 2012-03-23 A | 2012-03-26 A | 105 | 100% |  | 2012-03-26 | 2012-03-27 | 2d |  |  | 37.5h | 37.5h |
| 107 | 4.3.1.5 | D.An: End | milestone | 0d | 2012-03-26 A | 2012-03-26 A | 106 | 100% |  | 2012-03-27 | 2012-03-27 | 0d |  |  |  |  |

Notes:
- 83: *Schedule Connect: [28]UID=RNP%)C`>C\F$:T,ZKW<4N\)`[11]PUN=SE-1493[8]TUID=297[27]PUID=inv_investments5000601
- 86: *Schedule Connect: [28]UID=RNP%)C`>C\F$:T,ZKW<4N\)`[11]PUN=SE-1493[8]TUID=297[27]PUID=inv_investments5000601
- 88: *Schedule Connect: [28]UID=RNG(4"*I?(M4NU?@'FWEJ,/@[11]PUN=SE-1493[8]TUID=295[27]PUID=inv_investments5000601
- 89: *Schedule Connect: [28]UID=RNP%)C`>C\F$:T,ZKW<4N\)`[11]PUN=SE-1493[8]TUID=297[27]PUID=inv_investments5000601
- 91: *Schedule Connect: [28]UID=RN2WE[;\<]\D^A)="I*IW!3@[11]PUN=SE-1493[8]TUID=296[27]PUID=inv_investments5000601
- 92: *Schedule Connect: [28]UID=RNP%)C`>C\F$:T,ZKW<4N\)`[11]PUN=SE-1493[8]TUID=297[27]PUID=inv_investments5000601
- 94: *Schedule Connect: [28]UID=RNP%)C`>C\F$:T,ZKW<4N\)`[11]PUN=SE-1493[8]TUID=297[27]PUID=inv_investments5000601
- 96: *Schedule Connect: [28]UID=RN:ME`^><;FT^:@)COTC;ATP[11]PUN=SE-1493[8]TUID=298[27]PUID=inv_investments5000601
- 97: *Schedule Connect: [28]UID=RN&#6&:PA[;TF+>P6^EC$_4@[11]PUN=SE-1493[8]TUID=299[27]PUID=inv_investments5000601
- 102: *Schedule Connect: [28]UID=RN+^.4M3`F.4*Q#:55F8ZQ"`[11]PUN=SE-1493[8]TUID=271[27]PUID=inv_investments5000601
- 103: *Schedule Connect: [28]UID=RNVGJ%R2W#2$Z)'YV+T#F]:0[11]PUN=SE-1493[8]TUID=272[27]PUID=inv_investments5000601
- 104: *Schedule Connect: [28]UID=RNASJ*DIOIK4R=Q_1;^OL;YP[11]PUN=SE-1493[8]TUID=273[27]PUID=inv_investments5000601
- 105: *Schedule Connect: [28]UID=RNX[8F9?8>NTF>NG#JLWL`;P[11]PUN=SE-1493[8]TUID=274[27]PUID=inv_investments5000601
- 106: *Schedule Connect: [28]UID=RN1S=S!>Z0J4"RP>'`I\*\WP[11]PUN=SE-1493[8]TUID=275[27]PUID=inv_investments5000601

| ID | WBS | Task | Type | Duration | Start | Finish | Predecessors | Complete | Remaining | Baseline start | Baseline finish | Baseline duration | Total slack | Constraint | Work | Actual work |
| --- | --- | --- | --- | --- | --- | --- | --- | --- | --- | --- | --- | --- | --- | --- | --- | --- |
| 108 | 4.3.2 | **Detailled Architecture** |  | 41d | 2011-12-15 A | 2012-02-10 A |  | 100% |  | 2011-12-15 | 2012-02-10 | 41d |  |  |  |  |
| 109 | 4.3.2.1 | D.Ar.010: Architecture préliminaire |  | 41d | 2011-12-15 A | 2012-02-10 A |  | 100% |  | 2011-12-15 | 2012-02-10 | 41d |  | start no earlier than 2011-12-15 |  |  |
| 110 | 4.3.3 | **Development** |  | 82.93d | 2012-04-11 A | 2012-08-09 |  | 66% | 28.35d | 2012-04-13 | 2012-05-17 | 25d | 0d |  |  |  |
| 111 | 4.3.3.1 | **Development L3** |  | 41.93d | 2012-04-11 A | 2012-06-08 |  | 96% | 1.7d |  |  |  | 0d |  |  |  |
| 112 | 4.3.3.1.1 | DE.030: CGI - RWA |  | 37d | 2012-04-11 A | 2012-06-04 | 107FS+10d | 90% | 3.7d | 2012-04-13 | 2012-05-17 | 25d | 0d |  |  |  |
| 113 | 4.3.3.1.2 | DE.040: ALGO |  | 41d | 2012-04-11 A | 2012-06-08 A | 107FS+10d | 100% |  | 2012-04-13 | 2012-05-17 | 25d |  |  |  |  |
| 114 | 4.3.3.1.3 | **DE.010: DSEI-IA** |  | 25d | 2012-04-30 A | 2012-06-04 |  | 98% | 0.5d |  |  |  | 0d |  |  |  |
| 115 | 4.3.3.1.3.1 | DE.011: Excel Macro |  | 20d | 2012-05-07 A | 2012-06-04 |  | 95% | 1d | 2012-04-13 | 2012-05-17 | 25d | 0d | start no earlier than 2012-05-07 |  |  |
| 116 | 4.3.3.1.3.2 | DE.012: EBX |  | 20d | 2012-05-07 A | 2012-06-04 A |  | 100% |  |  |  |  |  | start no earlier than 2012-05-07 |  |  |
| 117 | 4.3.3.1.3.3 | DE.013: RDM (Analyse d'impact) |  | 10d | 2012-04-30 A | 2012-05-11 A |  | 100% |  |  |  |  |  | start no earlier than 2012-04-30 |  |  |
| 118 | 4.3.3.1.4 | DE : End | milestone | 0d | 2012-06-04 | 2012-06-04 | 114 |  |  | 2012-05-17 | 2012-05-17 | 0d | 0d | start no earlier than 2012-05-22 |  |  |
| 119 | 4.3.3.1.5 | CD Integrated testing finished (iteration 3) |  | 3d | 2012-06-06 A | 2012-06-08 |  | 80% | 0.6d |  |  |  | 0d | start no earlier than 2012-06-06 |  |  |
| 120 | 4.3.3.2 | **Development L4** |  | 27d | 2012-07-03 | 2012-08-09 |  |  |  |  |  |  | 0d |  |  |  |
| 121 | 4.3.3.2.1 | DE.030: CGI |  | 15d | 2012-07-03 | 2012-07-23 |  |  |  |  |  |  | 0d | start no earlier than 2012-07-03 |  |  |
| 122 | 4.3.3.2.2 | DE.040: ALGO |  | 15d | 2012-07-03 | 2012-07-23 |  |  |  |  |  |  | 0d | start no earlier than 2012-07-03 |  |  |
| 123 | 4.3.3.2.3 | **DE.010: DSEI-IA** |  | 15d | 2012-07-03 | 2012-07-23 |  |  |  |  |  |  | 0d |  |  |  |
| 124 | 4.3.3.2.3.1 | DE.012: EBX |  | 15d | 2012-07-03 | 2012-07-23 |  |  |  |  |  |  | 0d | start no earlier than 2012-07-03 |  |  |
| 125 | 4.3.3.2.3.2 | DE.013: RDM |  | 15d | 2012-07-03 | 2012-07-23 |  |  |  |  |  |  | 0d | start no earlier than 2012-07-03 |  |  |
| 126 | 4.3.3.2.4 | DE: End | milestone | 0d | 2012-07-23 | 2012-07-23 | 125 |  |  |  |  |  | 0d |  |  |  |
| 127 | 4.3.3.2.5 | CD Integrated testing finished (iteration 1) | milestone | 0d | 2012-08-09 | 2012-08-09 |  |  |  | 2012-05-07 | 2012-05-07 | 0d | 0d | start no earlier than 2012-08-09 |  |  |
| 128 | 4.4 | **P3.2: ALGO Upgrade: 2012-L4 - B3 Extension** |  | 192.93d | 2012-02-01 A | 2012-11-05 |  | 35% | 126.08d | 2012-02-01 | 2012-11-05 | 192.93d | 0d |  | 3692.25h | 1071h |
| 129 | 4.4.1 | **Detailled Analysis** |  | 86.93d | 2012-02-01 A | 2012-06-05 A |  | 100% |  | 2012-02-01 | 2012-05-25 | 80.93d |  |  | 902.25h | 902.25h |
| 130 | 4.4.1.1 | D.An.020: Workshops |  | 54d | 2012-02-01 A | 2012-04-18 A |  | 100% |  | 2012-02-01 | 2012-04-11 | 49d |  | start no earlier than 2012-02-01 | 450h | 450h |
| 131 | 4.4.1.2 | D.An.030: SRD |  | 77d | 2012-02-01 A | 2012-05-22 A |  | 100% |  | 2012-02-01 | 2012-05-22 | 77d |  | finish no earlier than 2012-04-25 | 452.25h | 452.25h |
| 132 | 4.4.1.3 | D.An.035: SRD Approval | milestone | 0d | 2012-06-05 A | 2012-06-05 A |  | 100% |  | 2012-05-23 | 2012-05-25 | 3d |  | start no earlier than 2012-06-05 |  |  |
| 133 | 4.4.1.4 | D.An: End | milestone | 0d | 2012-06-05 A | 2012-06-05 A | 132 | 100% |  | 2012-05-25 | 2012-05-25 | 0d |  |  |  |  |

Notes:
- 110: *Schedule Connect: [28]UID=RNE''*2?9K)4&X2EVL]Q[S=0[11]PUN=SE-1493[8]TUID=287[27]PUID=inv_investments5000601
- 112: *Schedule Connect: [28]UID=RNW4'!7&QH+T2A)Q:8KQS6!`[11]PUN=SE-1493[8]TUID=290[27]PUID=inv_investments5000601 / Text10: 2012-04-30 CGI: 5% d'avancement mais confirme qu'ils finiront pour le 15 mai
- 113: *Schedule Connect: [28]UID=RN7I70SQ-K8$6)8L!>8V">;@[11]PUN=SE-1493[8]TUID=291[27]PUID=inv_investments5000601
- 115: *Schedule Connect: [28]UID=RN='1D<5!Y8$&;6U8@>U$M7@[11]PUN=SE-1493[8]TUID=288[27]PUID=inv_investments5000601 / Text10: ODS DSEIIA prévue pour le 4 mai
- 118: *Schedule Connect: [28]UID=RNBW]F,%,I\TF/OMC9IVW\_`[11]PUN=SE-1493[8]TUID=292[27]PUID=inv_investments5000601
- 128: *Schedule Connect: [28]UID=RN^/WX1#%/7TN=7CL<\?"#-P[11]PUN=SE-1493[7]TUID=89[27]PUID=inv_investments5000601
- 129: *Schedule Connect: [28]UID=RN+^.4M3`F.4*Q#:55F8ZQ"`[11]PUN=SE-1493[8]TUID=271[27]PUID=inv_investments5000601
- 131: *Schedule Connect: [28]UID=RNX[8F9?8>NTF>NG#JLWL`;P[11]PUN=SE-1493[8]TUID=274[27]PUID=inv_investments5000601 / Text10: DDC 002
- 132: *Schedule Connect: [28]UID=RN1S=S!>Z0J4"RP>'`I\*\WP[11]PUN=SE-1493[8]TUID=275[27]PUID=inv_investments5000601

| ID | WBS | Task | Type | Duration | Start | Finish | Predecessors | Complete | Remaining | Baseline start | Baseline finish | Baseline duration | Total slack | Constraint | Work | Actual work | Text10 |
| --- | --- | --- | --- | --- | --- | --- | --- | --- | --- | --- | --- | --- | --- | --- | --- | --- | --- |
| 134 | 4.4.2 | **Detailled Architecture** |  | 83.93d | 2012-02-14 A | 2012-06-13 |  | 99% | 0d | 2012-02-14 | 2012-06-08 | 81.93d | 0d |  |  |  |  |
| 135 | 4.4.2.1 | D.Ar.010: Detailled Architecture |  | 66d | 2012-02-14 A | 2012-05-17 A |  | 100% |  | 2012-02-14 | 2012-05-17 | 66d |  | finish no earlier than 2012-05-17 |  |  | DDC 001 |
| 136 | 4.4.2.2 | D.Ar.015: Business presentation |  | 1d | 2012-05-28 A | 2012-05-28 A | 135FS+5d | 100% |  | 2012-05-28 | 2012-05-28 | 1d |  |  |  |  |  |
| 137 | 4.4.2.3 | D.Ar.020: ARB | milestone | 0d | 2012-06-13 | 2012-06-13 | 135FS+15d |  |  | 2012-06-08 | 2012-06-08 | 0d | 0d | start no earlier than 2012-06-13 |  |  |  |
| 138 | 4.4.2.4 | D.Ar: End | milestone | 0d | 2012-06-13 | 2012-06-13 | 137 |  |  | 2012-06-08 | 2012-06-08 | 0d | 0d |  |  |  |  |
| 139 | 4.4.3 | **Development** |  | 45d | 2012-05-01 A | 2012-07-05 |  | 17% | 37.56d | 2012-05-01 | 2012-07-05 | 45d | 0d |  | 1125h | 166.5h |  |
| 140 | 4.4.3.1 | DE.010: DSEI-IA |  | 45d | 2012-05-01 A | 2012-07-05 |  | 7% | 41.85d | 2012-05-01 | 2012-07-05 | 45d | 0d | start no earlier than 2012-05-01 | 450h | 31.5h |  |
| 141 | 4.4.3.2 | DE.040: ALGO + Prototype + doc |  | 45d | 2012-05-01 A | 2012-07-05 | 140SS | 33% | 30.15d | 2012-05-01 | 2012-07-05 | 45d | 0d |  | 337.5h | 111.38h |  |
| 142 | 4.4.3.3 | DE.030: CGI |  | 45d | 2012-05-01 A | 2012-07-05 | 140SS | 7% | 41.85d | 2012-05-01 | 2012-07-05 | 45d | 0d |  | 337.5h | 23.63h |  |
| 143 | 4.4.3.4 | DE.110: Business functionnal Validation (RDM) |  | 5d | 2012-06-04 A | 2012-06-08 |  | 40% | 3d |  |  |  | 0d | start no earlier than 2012-06-04 |  |  |  |
| 144 | 4.4.3.5 | DE : End | milestone | 0d | 2012-07-05 | 2012-07-05 | 142 |  |  | 2012-07-05 | 2012-07-05 | 0d | 0d |  |  |  |  |
| 145 | 4.4.4 | **Testing** |  | 80d | 2012-06-07 A | 2012-10-01 |  |  | 79.83d | 2012-06-07 | 2012-10-01 | 80d | 0d |  | 1642.5h | 2.25h |  |
| 146 | 4.4.4.1 | TE.010: Test Strategy |  | 30d | 2012-06-07 A | 2012-07-20 |  | 2% | 29.4d | 2012-06-07 | 2012-07-20 | 30d | 0d | start no earlier than 2012-06-07 | 112.5h | 2.25h | DDC004 |
| 147 | 4.4.4.2 | TE.015: Test Strategy Approval | milestone | 0d | 2012-07-20 | 2012-07-20 | 146 |  |  | 2012-07-20 | 2012-07-20 | 0d | 0d |  |  |  | DDC004 |
| 148 | 4.4.4.3 | **TE.020: Test Case** |  | 30d | 2012-06-07 | 2012-07-20 |  |  |  | 2012-06-07 | 2012-07-20 | 30d | 0d |  | 150h |  | DDC004 |
| 149 | 4.4.4.3.1 | TE.021: IT Contribution |  | 30d | 2012-06-07 | 2012-07-20 | 146SS |  |  | 2012-06-07 | 2012-07-20 | 30d | 0d |  |  |  | DDC004 |
| 150 | 4.4.4.3.2 | TE.022: Business Contribution |  | 30d | 2012-06-07 | 2012-07-20 | 146SS |  |  | 2012-06-07 | 2012-07-20 | 30d | 0d |  | 150h |  | DDC004 |
| 151 | 4.4.4.4 | TE.030: Test Plan |  | 20d | 2012-06-21 | 2012-07-20 |  |  |  | 2012-06-21 | 2012-07-20 | 20d | 0d | start no earlier than 2012-06-21 | 75h |  | DDC004 |
| 152 | 4.4.4.5 | TE.035: Test Plan Approval | milestone | 0d | 2012-07-20 | 2012-07-20 | 151 |  |  | 2012-07-20 | 2012-07-20 | 0d | 0d |  |  |  | DDC004 |
| 153 | 4.4.4.6 | **TE.070: Integrated Testing** |  | 10d | 2012-07-16 | 2012-07-27 |  |  |  | 2012-06-27 | 2012-07-25 | 20d | 0d |  | 150h |  |  |
| 154 | 4.4.4.6.1 | TE.071: IT Contribution |  | 10d | 2012-07-16 | 2012-07-27 |  |  |  | 2012-06-27 | 2012-07-25 | 20d | 0d | start no earlier than 2012-07-16 | 150h |  |  |
| 155 | 4.4.4.6.2 | TE.072: Business Contribution |  | 10d | 2012-07-16 | 2012-07-27 |  |  |  | 2012-06-27 | 2012-07-25 | 20d | 0d | start no earlier than 2012-07-16 |  |  |  |
| 156 | 4.4.4.7 | **TE.080: User Acceptance Testing** |  | 35d | 2012-07-27 | 2012-09-14 |  |  |  | 2012-07-26 | 2012-09-21 | 40.49d | 0d |  | 607.5h |  |  |
| 157 | 4.4.4.7.1 | TE.081: IT Contribution |  | 35d | 2012-07-27 | 2012-09-14 |  |  |  | 2012-07-26 | 2012-09-21 | 40.49d | 0d | start no earlier than 2012-07-27 | 495h |  |  |
| 158 | 4.4.4.7.2 | TE.082: Business Contribution |  | 35d | 2012-07-27 | 2012-09-14 |  |  |  | 2012-08-09 | 2012-09-21 | 30d | 0d | start no earlier than 2012-07-27 | 112.5h |  |  |
| 159 | 4.4.4.8 | TE.090: Pre-Production Testing |  | 11d | 2012-09-17 | 2012-10-01 |  |  |  | 2012-09-24 | 2012-10-01 | 5d | 0d | start no earlier than 2012-09-17 | 45h |  |  |
| 160 | 4.4.4.9 | TE.100: Defect Management |  | 67d | 2012-06-27 | 2012-10-01 |  |  |  | 2012-06-27 | 2012-10-01 | 67d | 0d | start no earlier than 2012-06-27 | 502.5h |  |  |
| 161 | 4.4.4.10 | TE: End | milestone | 0d | 2012-10-01 | 2012-10-01 | 160 |  |  | 2012-10-01 | 2012-10-01 | 0d | 0d |  |  |  |  |

Notes:
- 134: *Schedule Connect: [28]UID=RNC;ZJ/C_-W4>8WE`BHE>70`[11]PUN=SE-1493[8]TUID=279[27]PUID=inv_investments5000601
- 135: *Schedule Connect: [28]UID=RNGR6!150-5$F%H<).-^770`[11]PUN=SE-1493[8]TUID=280[27]PUID=inv_investments5000601
- 137: *Schedule Connect: [28]UID=RNVX>/P[3T>D"I_\EY99;YK`[11]PUN=SE-1493[8]TUID=281[27]PUID=inv_investments5000601
- 139: *Schedule Connect: [28]UID=RNE''*2?9K)4&X2EVL]Q[S=0[11]PUN=SE-1493[8]TUID=287[27]PUID=inv_investments5000601
- 140: *Schedule Connect: [28]UID=RN='1D<5!Y8$&;6U8@>U$M7@[11]PUN=SE-1493[8]TUID=288[27]PUID=inv_investments5000601
- 141: *Schedule Connect: [28]UID=RNF^@,CD`SW4NX#0&KQ[/<3P[11]PUN=SE-1493[8]TUID=289[27]PUID=inv_investments5000601
- 142: *Schedule Connect: [28]UID=RNW4'!7&QH+T2A)Q:8KQS6!`[11]PUN=SE-1493[8]TUID=290[27]PUID=inv_investments5000601
- 144: *Schedule Connect: [28]UID=RNBW]F,%,I\TF/OMC9IVW\_`[11]PUN=SE-1493[8]TUID=292[27]PUID=inv_investments5000601
- 145: *Schedule Connect: [28]UID=RN(@G.B&C]S4&/O.$JK(HAW0[11]PUN=SE-1493[8]TUID=293[27]PUID=inv_investments5000601
- 149: *Schedule Connect: [28]UID=RNP%)C`>C\F$:T,ZKW<4N\)`[11]PUN=SE-1493[8]TUID=297[27]PUID=inv_investments5000601
- 153: *Schedule Connect: [28]UID=RNG(4"*I?(M4NU?@'FWEJ,/@[11]PUN=SE-1493[8]TUID=295[27]PUID=inv_investments5000601
- 154: *Schedule Connect: [28]UID=RNP%)C`>C\F$:T,ZKW<4N\)`[11]PUN=SE-1493[8]TUID=297[27]PUID=inv_investments5000601
- 156: *Schedule Connect: [28]UID=RN2WE[;\<]\D^A)="I*IW!3@[11]PUN=SE-1493[8]TUID=296[27]PUID=inv_investments5000601
- 157: *Schedule Connect: [28]UID=RNP%)C`>C\F$:T,ZKW<4N\)`[11]PUN=SE-1493[8]TUID=297[27]PUID=inv_investments5000601
- 159: *Schedule Connect: [28]UID=RNP%)C`>C\F$:T,ZKW<4N\)`[11]PUN=SE-1493[8]TUID=297[27]PUID=inv_investments5000601
- 161: *Schedule Connect: [28]UID=RN:ME`^><;FT^:@)COTC;ATP[11]PUN=SE-1493[8]TUID=298[27]PUID=inv_investments5000601

| ID | WBS | Task | Type | Duration | Start | Finish | Predecessors | Baseline start | Baseline finish | Baseline duration | Total slack | Constraint | Work |
| --- | --- | --- | --- | --- | --- | --- | --- | --- | --- | --- | --- | --- | --- |
| 162 | 4.4.5 | **MEP** |  | 4d | 2012-10-02 | 2012-10-05 |  | 2012-10-02 | 2012-10-05 | 4d | 0d |  | 22.5h |
| 163 | 4.4.5.1 | MEP.030: Deployement |  | 4d | 2012-10-02 | 2012-10-05 | 161 | 2012-10-02 | 2012-10-05 | 4d | 0d | must start on 2012-10-02 | 22.5h |
| 164 | 4.4.5.2 | MEP: End | milestone | 0d | 2012-10-05 | 2012-10-05 | 163 | 2012-10-05 | 2012-10-05 | 0d | 0d |  |  |
| 165 | 4.4.6 | Post-MEP Support |  | 20d | 2012-10-09 | 2012-11-05 | 164 | 2012-10-09 | 2012-11-05 | 20d | 0d |  |  |
| 166 | 4.5 | **P4: FRC : 2013-L1 - BCAR 2013** |  | 157d | 2012-06-11 | 2013-01-31 |  | 2012-06-11 | 2013-01-31 | 157d | 0d |  | 2265.38h |
| 167 | 4.5.1 | **Detailled Analysis** |  | 45d | 2012-06-11 | 2012-08-14 |  | 2012-06-11 | 2012-09-10 | 63d | 0d |  | 450h |
| 168 | 4.5.1.1 | D.An.020: Workshops |  | 20d | 2012-06-20 | 2012-07-19 |  | 2012-06-11 | 2012-07-31 | 35d | 0d | start no earlier than 2012-06-20 | 150h |
| 169 | 4.5.1.2 | D.An.030: SRD |  | 40d | 2012-06-11 | 2012-08-07 |  | 2012-07-16 | 2012-08-31 | 35d | 0d | start no earlier than 2012-06-11 | 262.5h |
| 170 | 4.5.1.3 | D.An.035: SRD Approval |  | 5d | 2012-08-08 | 2012-08-14 | 169 | 2012-09-04 | 2012-09-10 | 5d | 0d |  | 37.5h |
| 171 | 4.5.1.4 | D.An: End | milestone | 0d | 2012-08-14 | 2012-08-14 | 170 | 2012-09-10 | 2012-09-10 | 0d | 0d |  |  |
| 172 | 4.5.2 | **Detailled Architecture** |  | 54d | 2012-06-20 | 2012-09-06 |  | 2012-06-18 | 2012-08-24 | 48d | 0d |  | 150h |
| 173 | 4.5.2.1 | D.Ar.010: Detailled Architecture |  | 48d | 2012-06-20 | 2012-08-28 |  | 2012-06-18 | 2012-08-24 | 48d | 0d | start no earlier than 2012-06-20 | 150h |
| 174 | 4.5.2.2 | D.Ar.015: Business presentation |  | 1d | 2012-09-06 | 2012-09-06 | 173FS+5d |  |  |  | 0d |  |  |
| 175 | 4.5.2.3 | D.Ar.020: ARB | milestone | 0d | 2012-08-28 | 2012-08-28 | 173 | 2012-08-24 | 2012-08-24 | 0d | 0d |  |  |
| 176 | 4.5.2.4 | D.Ar: End | milestone | 0d | 2012-08-28 | 2012-08-28 | 173 | 2012-08-24 | 2012-08-24 | 0d | 0d |  |  |
| 177 | 4.5.3 | **Development** |  | 72d | 2012-07-20 | 2012-10-31 |  | 2012-08-01 | 2012-10-11 | 50d | 0d |  | 675h |
| 178 | 4.5.3.1 | DE.010: DSEI-IA |  | 72d | 2012-07-20 | 2012-10-31 |  | 2012-08-01 | 2012-10-11 | 50d | 0d | start no earlier than 2012-07-20 | 300h |
| 179 | 4.5.3.2 | DE.030: CGI |  | 72d | 2012-07-20 | 2012-10-31 | 178SS | 2012-08-01 | 2012-10-11 | 50d | 0d |  | 375h |
| 180 | 4.5.3.3 | DE.050: FRC |  | 72d | 2012-07-20 | 2012-10-31 | 178SS | 2012-08-01 | 2012-10-11 | 50d | 0d |  |  |
| 181 | 4.5.3.4 | DE.110: Business functionnal Validation |  | 5d | 2012-09-04 | 2012-09-10 |  |  |  |  | 0d | start no earlier than 2012-09-04 |  |
| 182 | 4.5.3.5 | DE : End | milestone | 0d | 2012-10-31 | 2012-10-31 | 179 | 2012-10-11 | 2012-10-11 | 0d | 0d |  |  |
| 183 | 4.5.4 | **Testing** |  | 89d | 2012-08-20 | 2013-01-03 |  | 2012-08-06 | 2013-01-08 | 102d | 0d |  | 967.88h |
| 184 | 4.5.4.1 | TE.010: Test Strategy |  | 25d | 2012-08-20 | 2012-09-24 |  | 2012-08-06 | 2012-08-24 | 15d | 0d | start no earlier than 2012-08-20 | 75.38h |
| 185 | 4.5.4.2 | TE.015: Test Strategy Approval |  | 1d | 2012-09-25 | 2012-09-25 | 184 | 2012-08-31 | 2012-08-31 | 0d | 0d |  |  |

Notes:
- 162: *Schedule Connect: [28]UID=RN&#6&:PA[;TF+>P6^EC$_4@[11]PUN=SE-1493[8]TUID=299[27]PUID=inv_investments5000601
- 166: *Schedule Connect: [28]UID=RN.T\R$54T#TB?H-G"/#$Z6P[11]PUN=SE-1493[8]TUID=186[27]PUID=inv_investments5000601
- 167: *Schedule Connect: [28]UID=RN+^.4M3`F.4*Q#:55F8ZQ"`[11]PUN=SE-1493[8]TUID=271[27]PUID=inv_investments5000601
- 169: *Schedule Connect: [28]UID=RNX[8F9?8>NTF>NG#JLWL`;P[11]PUN=SE-1493[8]TUID=274[27]PUID=inv_investments5000601
- 170: *Schedule Connect: [28]UID=RN1S=S!>Z0J4"RP>'`I\*\WP[11]PUN=SE-1493[8]TUID=275[27]PUID=inv_investments5000601
- 172: *Schedule Connect: [28]UID=RNC;ZJ/C_-W4>8WE`BHE>70`[11]PUN=SE-1493[8]TUID=279[27]PUID=inv_investments5000601
- 173: *Schedule Connect: [28]UID=RNGR6!150-5$F%H<).-^770`[11]PUN=SE-1493[8]TUID=280[27]PUID=inv_investments5000601
- 175: *Schedule Connect: [28]UID=RNVX>/P[3T>D"I_\EY99;YK`[11]PUN=SE-1493[8]TUID=281[27]PUID=inv_investments5000601
- 177: *Schedule Connect: [28]UID=RNE''*2?9K)4&X2EVL]Q[S=0[11]PUN=SE-1493[8]TUID=287[27]PUID=inv_investments5000601
- 178: *Schedule Connect: [28]UID=RN='1D<5!Y8$&;6U8@>U$M7@[11]PUN=SE-1493[8]TUID=288[27]PUID=inv_investments5000601
- 179: *Schedule Connect: [28]UID=RNF^@,CD`SW4NX#0&KQ[/<3P[11]PUN=SE-1493[8]TUID=289[27]PUID=inv_investments5000601
- 182: *Schedule Connect: [28]UID=RNBW]F,%,I\TF/OMC9IVW\_`[11]PUN=SE-1493[8]TUID=292[27]PUID=inv_investments5000601
- 183: *Schedule Connect: [28]UID=RN(@G.B&C]S4&/O.$JK(HAW0[11]PUN=SE-1493[8]TUID=293[27]PUID=inv_investments5000601

| ID | WBS | Task | Type | Duration | Start | Finish | Predecessors | Complete | Remaining | Baseline start | Baseline finish | Baseline duration | Total slack | Constraint | Work | Actual work | Text10 |
| --- | --- | --- | --- | --- | --- | --- | --- | --- | --- | --- | --- | --- | --- | --- | --- | --- | --- |
| 186 | 4.5.4.3 | **TE.020: Test Case** |  | 19d | 2012-09-11 | 2012-10-05 |  |  |  | 2012-08-06 | 2012-08-31 | 20d | 0d |  | 75h |  |  |
| 187 | 4.5.4.3.1 | TE.021: IT Contribution |  | 19d | 2012-09-11 | 2012-10-05 |  |  |  | 2012-08-06 | 2012-08-31 | 20d | 0d | start no earlier than 2012-09-11 |  |  |  |
| 188 | 4.5.4.3.2 | TE.022: Business Contribution |  | 19d | 2012-09-11 | 2012-10-05 |  |  |  | 2012-08-06 | 2012-08-31 | 20d | 0d | start no earlier than 2012-09-11 | 75h |  |  |
| 189 | 4.5.4.4 | TE.030: Test Plan |  | 15d | 2012-09-25 | 2012-10-16 |  |  |  | 2012-08-20 | 2012-08-31 | 10d | 0d | start no earlier than 2012-09-25 | 75h |  |  |
| 190 | 4.5.4.5 | TE.035: Test Plan Approval | milestone | 0d | 2012-10-16 | 2012-10-16 | 189 |  |  | 2012-09-10 | 2012-09-10 | 0d | 0d |  |  |  |  |
| 191 | 4.5.4.6 | **TE.070: Integrated Testing** |  | 11d | 2012-10-09 | 2012-10-23 |  |  |  | 2012-10-10 | 2012-10-24 | 11d | 0d |  | 75h |  | Les IT sont fait par les fournisseurs. Veut-on les suivre ? |
| 192 | 4.5.4.6.1 | TE.071: IT Contribution |  | 11d | 2012-10-09 | 2012-10-23 |  |  |  | 2012-10-10 | 2012-10-24 | 11d | 0d | start no earlier than 2012-10-09 | 75h |  |  |
| 193 | 4.5.4.6.2 | TE.072: Business Contribution |  | 11d | 2012-10-09 | 2012-10-23 |  |  |  | 2012-10-10 | 2012-10-24 | 11d | 0d | start no earlier than 2012-10-09 |  |  |  |
| 194 | 4.5.4.7 | **TE.080: User Acceptance Testing** |  | 34d | 2012-10-31 | 2012-12-18 |  |  |  | 2012-10-24 | 2012-12-20 | 41d | 0d |  | 607.5h |  |  |
| 195 | 4.5.4.7.1 | TE.081: IT Contribution |  | 34d | 2012-10-31 | 2012-12-18 |  |  |  | 2012-10-24 | 2012-12-20 | 41d | 0d | start no earlier than 2012-10-31 | 495h |  |  |
| 196 | 4.5.4.7.2 | TE.082: Business Contribution |  | 34d | 2012-10-31 | 2012-12-18 | 195FF |  |  | 2012-11-08 | 2012-12-20 | 30d | 0d |  | 112.5h |  |  |
| 197 | 4.5.4.8 | TE.090: Pre-Production Testing |  | 6d | 2012-12-18 | 2013-01-03 |  |  |  | 2012-12-21 | 2013-01-08 | 6d | 0d | start no earlier than 2012-12-18 | 60h |  |  |
| 198 | 4.5.4.9 | TE.100: Defect Management |  | 55d | 2012-10-09 | 2013-01-03 | 191SS |  |  | 2012-10-10 | 2013-01-08 | 57d | 0d |  |  |  |  |
| 199 | 4.5.4.10 | TE: End | milestone | 0d | 2013-01-03 | 2013-01-03 | 198 |  |  | 2013-01-08 | 2013-01-08 | 0d | 0d |  |  |  |  |
| 200 | 4.5.5 | **MEP** |  | 3d | 2013-01-03 | 2013-01-07 |  |  |  | 2013-01-03 | 2013-01-08 | 4d | 0d |  | 22.5h |  |  |
| 201 | 4.5.5.1 | MEP.030: Deployement |  | 3d | 2013-01-03 | 2013-01-07 |  |  |  | 2013-01-03 | 2013-01-08 | 4d | 0d | start no earlier than 2013-01-03 | 22.5h |  |  |
| 202 | 4.5.5.2 | MEP: End | milestone | 0d | 2013-01-07 | 2013-01-07 | 201 |  |  | 2013-01-08 | 2013-01-08 | 0d | 0d |  |  |  |  |
| 203 | 4.5.6 | Post-MEP Support |  | 18d | 2013-01-08 | 2013-01-31 | 202 |  |  | 2013-01-09 | 2013-01-31 | 17d | 0d |  |  |  |  |
| 204 | 5 | **P5-P2-P7: Capital exposition to Financial Institutions** |  | 305.8d | 2011-11-01 A | 2013-01-21 |  | 21% | 242.87d |  |  |  | 0d |  | 3828.75h | 924.38h |  |
| 205 | 5.1 | **P5: MORE** |  | 245.8d | 2011-11-15 A | 2012-10-31 |  | 18% | 200.95d | 2011-11-15 | 2012-10-31 | 244.87d | 0d |  | 3513.75h | 684.38h |  |
| 206 | 5.1.1 | **Detailled Analysis (Global)** |  | 95.93d | 2012-02-14 A | 2012-06-29 |  | 83% | 16.58d | 2012-02-14 | 2012-06-29 | 94d | 0d |  |  |  |  |
| 207 | 5.1.1.1 | **D.An.010: MBA** |  | 0d | 2012-02-17 A | 2012-02-17 A |  | 100% |  | 2012-02-17 | 2012-06-29 | 91d |  |  |  |  |  |
| 208 | 5.1.1.1.1 | D.An.011: MBA V1 (ALL P5 Parts) | milestone | 0d | 2012-02-17 A | 2012-02-17 A |  | 100% |  | 2012-02-17 | 2012-02-17 | 0d |  | start no earlier than 2012-01-16 |  |  |  |
| 209 | 5.1.1.2 | **D.An.030: SRD** |  | 95.93d | 2012-02-14 A | 2012-06-29 |  | 83% | 16.58d | 2012-02-14 | 2012-04-20 | 47d | 0d |  |  |  |  |
| 210 | 5.1.1.2.1 | D.An.031: SRD V1 (P5.2, P5.5-V1) |  | 14d | 2012-02-14 A | 2012-03-02 A |  | 100% |  | 2012-02-14 | 2012-03-02 | 14d |  | start no earlier than 2012-02-14 |  |  |  |
| 211 | 5.1.1.2.2 | D.An.032: SRD V2 ( P2.3, P5.4 V1, P5.5) |  | 15d | 2012-03-05 A | 2012-03-23 A | 210 | 100% |  | 2012-03-05 | 2012-03-23 | 15d |  | finish no earlier than 2012-03-23 |  |  |  |
| 212 | 5.1.1.2.3 | D.An.032: SRD V2.5 ( P5.4, P5.7) |  | 24d | 2012-03-05 A | 2012-04-05 A |  | 100% |  |  |  |  |  | start no earlier than 2012-03-05 |  |  |  |
| 213 | 5.1.1.2.4 | D.An.032: SRD V3 (P5.3) |  | 4d | 2012-04-09 A | 2012-04-13 A | 212 | 100% |  | 2012-03-26 | 2012-04-13 | 13d |  | finish no earlier than 2012-04-13 |  |  |  |
| 214 | 5.1.1.2.5 | D.An.032: SRD V3.5 Final |  | 5d | 2012-04-16 A | 2012-04-20 A | 213 | 100% |  | 2012-04-16 | 2012-04-19 | 4d |  |  |  |  |  |
| 215 | 5.1.1.2.6 | D.An.033: SRD V3.5 Final Approval |  | 5d | 2012-04-23 A | 2012-04-27 A |  | 100% |  | 2012-04-20 | 2012-04-20 | 1d |  | start no earlier than 2012-04-20 |  |  |  |
| 216 | 5.1.1.2.7 | D.An.032: SRD V4 (DW/T Long term solution) |  | 7d | 2012-06-20 | 2012-06-29 |  |  |  | 2012-03-26 | 2012-04-13 | 13d | 0d | start no earlier than 2012-06-20 |  |  |  |
| 217 | 5.1.1.2.8 | D.An.032: SRD V5 (P5.6-DDC MODA) |  | 7d | 2012-06-20 | 2012-06-29 |  |  |  |  |  |  | 0d | start no earlier than 2012-06-20 |  |  |  |

Notes:
- 187: *Schedule Connect: [28]UID=RNP%)C`>C\F$:T,ZKW<4N\)`[11]PUN=SE-1493[8]TUID=297[27]PUID=inv_investments5000601
- 191: *Schedule Connect: [28]UID=RNG(4"*I?(M4NU?@'FWEJ,/@[11]PUN=SE-1493[8]TUID=295[27]PUID=inv_investments5000601
- 192: *Schedule Connect: [28]UID=RNP%)C`>C\F$:T,ZKW<4N\)`[11]PUN=SE-1493[8]TUID=297[27]PUID=inv_investments5000601
- 194: *Schedule Connect: [28]UID=RN2WE[;\<]\D^A)="I*IW!3@[11]PUN=SE-1493[8]TUID=296[27]PUID=inv_investments5000601
- 195: *Schedule Connect: [28]UID=RNP%)C`>C\F$:T,ZKW<4N\)`[11]PUN=SE-1493[8]TUID=297[27]PUID=inv_investments5000601
- 197: *Schedule Connect: [28]UID=RNP%)C`>C\F$:T,ZKW<4N\)`[11]PUN=SE-1493[8]TUID=297[27]PUID=inv_investments5000601
- 199: *Schedule Connect: [28]UID=RN:ME`^><;FT^:@)COTC;ATP[11]PUN=SE-1493[8]TUID=298[27]PUID=inv_investments5000601
- 200: *Schedule Connect: [28]UID=RN&#6&:PA[;TF+>P6^EC$_4@[11]PUN=SE-1493[8]TUID=299[27]PUID=inv_investments5000601
- 205: *Schedule Connect: [28]UID=RNM>.>>HIZUDNO"@?\,UPW6@[11]PUN=SE-1493[8]TUID=232[27]PUID=inv_investments5000601

| ID | WBS | Task | Type | Duration | Start | Finish | Predecessors | Complete | Remaining | Baseline start | Baseline finish | Baseline duration | Total slack | Constraint | Work | Actual work |
| --- | --- | --- | --- | --- | --- | --- | --- | --- | --- | --- | --- | --- | --- | --- | --- | --- |
| 218 | 5.1.2 | **P5.1: Risk by Trade** |  | 111.87d | 2011-11-15 A | 2012-04-20 A |  | 100% |  | 2011-11-15 | 2012-04-30 | 117.87d |  |  | 225h | 225h |
| 219 | 5.1.2.1 | **Development** |  | 56d | 2011-11-15 A | 2012-02-01 A |  | 100% |  | 2011-11-15 | 2012-02-01 | 56d |  |  |  |  |
| 220 | 5.1.2.1.1 | DE.010: DSEI-IA |  | 56d | 2011-11-15 A | 2012-02-01 A |  | 100% |  | 2011-11-15 | 2012-02-01 | 56d |  | start no earlier than 2011-11-15 |  |  |
| 221 | 5.1.2.1.2 | DE.020: Murex |  | 56d | 2011-11-15 A | 2012-02-01 A |  | 100% |  | 2011-11-15 | 2012-02-01 | 56d |  | start no earlier than 2011-11-15 |  |  |
| 222 | 5.1.2.1.3 | DE : End | milestone | 0d | 2012-02-01 A | 2012-02-01 A | 221 | 100% |  | 2012-02-01 | 2012-02-01 | 0d |  |  |  |  |
| 223 | 5.1.2.2 | **Testing** |  | 86.87d | 2011-12-01 A | 2012-03-30 A |  | 100% |  | 2011-12-01 | 2012-03-30 | 86.87d |  |  | 225h | 225h |
| 224 | 5.1.2.2.1 | TE.020: Test Case |  | 13d | 2011-12-01 A | 2011-12-19 A |  | 100% |  | 2011-12-01 | 2011-12-19 | 13d |  | start no earlier than 2011-12-01 |  |  |
| 225 | 5.1.2.2.2 | TE.030: Test Plan |  | 13d | 2011-12-01 A | 2011-12-19 A |  | 100% |  | 2011-12-01 | 2011-12-19 | 13d |  | start no earlier than 2011-12-01 |  |  |
| 226 | 5.1.2.2.3 | TE.035: Test Plan Approval | milestone | 0d | 2011-12-19 A | 2011-12-19 A | 225 | 100% |  | 2011-12-19 | 2011-12-19 | 0d |  |  |  |  |
| 227 | 5.1.2.2.4 | **TE.070: Integrated Testing** |  | 27d | 2012-02-02 A | 2012-03-09 A |  | 100% |  | 2012-02-02 | 2012-03-09 | 27d |  |  | 75h | 75h |
| 228 | 5.1.2.2.4.1 | TE.071: IT Contribution |  | 27d | 2012-02-02 A | 2012-03-09 A |  | 100% |  | 2012-02-02 | 2012-03-09 | 27d |  | start no earlier than 2012-02-02 | 75h | 75h |
| 229 | 5.1.2.2.4.2 | TE.072: Business Contribution |  | 22d | 2012-02-09 A | 2012-03-09 A | 228FF | 100% |  | 2012-02-09 | 2012-03-09 | 22d |  |  |  |  |
| 230 | 5.1.2.2.5 | TE.090: Pré-Prod - Migration |  | 30d | 2012-02-13 A | 2012-03-23 A |  | 100% |  | 2012-02-13 | 2012-03-23 | 30d |  |  |  |  |
| 231 | 5.1.2.2.6 | **TE.080: User Acceptance Testing** |  | 35d | 2012-02-13 A | 2012-03-30 A |  | 100% |  | 2012-02-13 | 2012-03-30 | 35d |  |  | 150h | 150h |
| 232 | 5.1.2.2.6.1 | TE.081: IT Contribution |  | 35d | 2012-02-13 A | 2012-03-30 A |  | 100% |  | 2012-02-13 | 2012-03-30 | 35d |  | start no earlier than 2012-02-13 | 75h | 75h |
| 233 | 5.1.2.2.6.2 | TE.082: Business Contribution |  | 30d | 2012-02-20 A | 2012-03-30 A | 232FF | 100% |  | 2012-02-20 | 2012-03-30 | 30d |  |  | 75h | 75h |
| 234 | 5.1.2.2.7 | TE.100: Defect Management |  | 50d | 2011-12-01 A | 2012-03-30 A | 227SS, 233FF | 100% |  | 2011-12-01 | 2012-03-30 | 50d |  | start no earlier than 2011-12-01 |  |  |
| 235 | 5.1.2.2.8 | TE: End | milestone | 0d | 2012-03-30 A | 2012-03-30 A | 234 | 100% |  | 2012-03-30 | 2012-03-30 | 0d |  |  |  |  |
| 236 | 5.1.2.3 | **MEP** |  | 0d | 2012-03-23 A | 2012-03-23 A |  | 100% |  | 2012-03-30 | 2012-03-30 | 0d |  |  |  |  |
| 237 | 5.1.2.3.1 | MEP.030: Deployement | milestone | 0d | 2012-03-23 A | 2012-03-23 A | 235 | 100% |  | 2012-03-30 | 2012-03-30 | 0d |  |  |  |  |
| 238 | 5.1.2.3.2 | MEP: End | milestone | 0d | 2012-03-23 A | 2012-03-23 A | 237 | 100% |  | 2012-03-30 | 2012-03-30 | 0d |  |  |  |  |
| 239 | 5.1.2.4 | Post-MEP Support |  | 19d | 2012-03-23 A | 2012-04-20 A | 238 | 100% |  | 2012-04-02 | 2012-04-30 | 19d |  |  |  |  |
| 240 | 5.1.3 | **P5.2: Normalization of instruments** |  | 119.93d | 2012-03-13 A | 2012-08-31 |  | 45% | 65.65d | 2012-02-20 | 2012-10-01 | 155d | 0d |  | 453.75h | 206.25h |
| 241 | 5.1.3.1 | **Development** |  | 47d | 2012-03-13 A | 2012-05-18 A |  | 100% |  | 2012-02-27 | 2012-04-20 | 38d |  |  |  |  |
| 242 | 5.1.3.1.1 | DE.010: DSEI-IA - MORE |  | 47d | 2012-03-13 A | 2012-05-18 A |  | 100% |  | 2012-02-27 | 2012-04-20 | 38d |  | finish no earlier than 2012-05-11 |  |  |
| 243 | 5.1.3.1.2 | DE : End | milestone | 0d | 2012-05-18 A | 2012-05-18 A | 242 | 100% |  | 2012-04-20 | 2012-04-20 | 0d |  |  |  |  |

Notes:
- 218: *Schedule Connect: [28]UID=RN3,LZVYF=B4Z1Q[TT2:-S!@[11]PUN=SE-1493[8]TUID=233[27]PUID=inv_investments5000601
- 219: *Schedule Connect: [28]UID=RNE''*2?9K)4&X2EVL]Q[S=0[11]PUN=SE-1493[8]TUID=287[27]PUID=inv_investments5000601
- 220: *Schedule Connect: [28]UID=RN='1D<5!Y8$&;6U8@>U$M7@[11]PUN=SE-1493[8]TUID=288[27]PUID=inv_investments5000601
- 221: *Schedule Connect: [28]UID=RNF^@,CD`SW4NX#0&KQ[/<3P[11]PUN=SE-1493[8]TUID=289[27]PUID=inv_investments5000601
- 222: *Schedule Connect: [28]UID=RNBW]F,%,I\TF/OMC9IVW\_`[11]PUN=SE-1493[8]TUID=292[27]PUID=inv_investments5000601
- 223: *Schedule Connect: [28]UID=RN(@G.B&C]S4&/O.$JK(HAW0[11]PUN=SE-1493[8]TUID=293[27]PUID=inv_investments5000601
- 227: *Schedule Connect: [28]UID=RN2WE[;\<]\D^A)="I*IW!3@[11]PUN=SE-1493[8]TUID=296[27]PUID=inv_investments5000601
- 228: *Schedule Connect: [28]UID=RNP%)C`>C\F$:T,ZKW<4N\)`[11]PUN=SE-1493[8]TUID=297[27]PUID=inv_investments5000601
- 230: *Schedule Connect: [28]UID=RN:ME`^><;FT^:@)COTC;ATP[11]PUN=SE-1493[8]TUID=298[27]PUID=inv_investments5000601
- 231: *Schedule Connect: [28]UID=RNP%)C`>C\F$:T,ZKW<4N\)`[11]PUN=SE-1493[8]TUID=297[27]PUID=inv_investments5000601
- 232: *Schedule Connect: [28]UID=RNP%)C`>C\F$:T,ZKW<4N\)`[11]PUN=SE-1493[8]TUID=297[27]PUID=inv_investments5000601
- 234: *Schedule Connect: [28]UID=RNPI7YA`HXS4>Z:!QG"#D3!0[11]PUN=SE-1493[8]TUID=294[27]PUID=inv_investments5000601
- 235: *Schedule Connect: [28]UID=RNG(4"*I?(M4NU?@'FWEJ,/@[11]PUN=SE-1493[8]TUID=295[27]PUID=inv_investments5000601
- 236: *Schedule Connect: [28]UID=RN&#6&:PA[;TF+>P6^EC$_4@[11]PUN=SE-1493[8]TUID=299[27]PUID=inv_investments5000601
- 241: *Schedule Connect: [28]UID=RNE''*2?9K)4&X2EVL]Q[S=0[11]PUN=SE-1493[8]TUID=287[27]PUID=inv_investments5000601
- 242: *Schedule Connect: [28]UID=RN='1D<5!Y8$&;6U8@>U$M7@[11]PUN=SE-1493[8]TUID=288[27]PUID=inv_investments5000601
- 243: *Schedule Connect: [28]UID=RNBW]F,%,I\TF/OMC9IVW\_`[11]PUN=SE-1493[8]TUID=292[27]PUID=inv_investments5000601

| ID | WBS | Task | Type | Duration | Start | Finish | Predecessors | Complete | Remaining | Baseline start | Baseline finish | Baseline duration | Total slack | Constraint | Work | Actual work | Text10 |
| --- | --- | --- | --- | --- | --- | --- | --- | --- | --- | --- | --- | --- | --- | --- | --- | --- | --- |
| 244 | 5.1.3.2 | **Testing** |  | 58d | 2012-04-13 A | 2012-07-06 |  | 32% | 39.46d | 2012-02-20 | 2012-07-13 | 100d | 0d |  | 453.75h | 206.25h |  |
| 245 | 5.1.3.2.1 | TE.010: Test Strategy |  | 20d | 2012-04-13 A | 2012-05-10 A |  | 100% |  | 2012-03-01 | 2012-03-14 | 10d |  | start no earlier than 2012-04-13 | 93.75h | 93.75h |  |
| 246 | 5.1.3.2.2 | TE.015: Test Strategy Approval |  | 1d | 2012-05-11 A | 2012-05-11 A | 245 | 100% |  | 2012-03-15 | 2012-03-15 | 1d |  |  |  |  |  |
| 247 | 5.1.3.2.3 | **TE.020: Test Case and Test Plan** |  | 17d | 2012-04-18 A | 2012-05-10 A |  | 100% |  | 2012-02-20 | 2012-03-15 | 19d |  |  | 112.5h | 112.5h |  |
| 248 | 5.1.3.2.3.1 | TE.021: IT Contribution |  | 17d | 2012-04-18 A | 2012-05-10 A |  | 100% |  | 2012-02-20 | 2012-03-15 | 19d |  | start no earlier than 2012-04-18 | 112.5h | 112.5h |  |
| 249 | 5.1.3.2.4 | TE.035: Test Case and Test Plan Approval |  | 1d | 2012-05-11 A | 2012-05-11 A |  | 100% |  | 2012-03-23 | 2012-03-23 | 1d |  | start no earlier than 2012-05-11 |  |  |  |
| 250 | 5.1.3.2.5 | **TE.070: Integrated Testing** |  | 10d | 2012-06-04 | 2012-06-15 |  |  |  | 2012-05-22 | 2012-06-14 | 18d | 0d |  | 75h |  |  |
| 251 | 5.1.3.2.5.1 | TE.071: IT Contribution |  | 10d | 2012-06-04 | 2012-06-15 |  |  |  | 2012-05-22 | 2012-06-14 | 18d | 0d | start no earlier than 2012-06-04 | 75h |  |  |
| 252 | 5.1.3.2.5.2 | TE.072: Business Contribution |  | 10d | 2012-06-04 | 2012-06-15 | 251FF |  |  | 2012-05-22 | 2012-06-14 | 18d | 0d | start no earlier than 2012-06-04 |  |  |  |
| 253 | 5.1.3.2.6 | **TE.075: Tracability Matrix (TA)** |  | 14d | 2012-05-22 | 2012-06-08 |  |  |  | 2012-03-26 | 2012-04-11 | 11d | 0d |  | 22.5h |  |  |
| 254 | 5.1.3.2.6.1 | TE.075.1: Réalisation de la matrice |  | 14d | 2012-05-22 | 2012-06-08 | 249 |  |  | 2012-03-26 | 2012-04-10 | 10d | 0d | start no earlier than 2012-05-22 | 22.5h |  |  |
| 255 | 5.1.3.2.6.2 | TE.075.2: Matrix approval | milestone | 0d | 2012-06-08 | 2012-06-08 | 254 |  |  | 2012-04-11 | 2012-04-11 | 1d | 0d |  |  |  |  |
| 256 | 5.1.3.2.7 | **TE.080: User Acceptance Testing** |  | 13d | 2012-06-18 | 2012-07-06 |  |  |  | 2012-06-15 | 2012-07-13 | 19d | 0d |  | 150h |  |  |
| 257 | 5.1.3.2.7.1 | TE.081: IT Contribution |  | 13d | 2012-06-18 | 2012-07-06 |  |  |  | 2012-06-15 | 2012-07-13 | 19d | 0d | start no earlier than 2012-06-18 | 75h |  |  |
| 258 | 5.1.3.2.7.2 | TE.082: Business Contribution |  | 13d | 2012-06-18 | 2012-07-06 | 257FF |  |  | 2012-06-15 | 2012-07-13 | 19d | 0d | start no earlier than 2012-06-04 | 75h |  |  |
| 259 | 5.1.3.2.8 | TE.100: Defect Management |  | 23d | 2012-06-04 | 2012-07-06 | 250SS |  |  | 2012-05-22 | 2012-07-13 | 37d | 0d | start no earlier than 2012-05-14 |  |  |  |
| 260 | 5.1.3.2.9 | TE: End | milestone | 0d | 2012-07-06 | 2012-07-06 | 259 |  |  | 2012-07-13 | 2012-07-13 | 0d | 0d |  |  |  |  |
| 261 | 5.1.3.3 | **MEP** |  | 0d | 2012-08-03 | 2012-08-03 |  |  |  | 2012-08-31 | 2012-09-04 | 2d | 0d |  |  |  |  |
| 262 | 5.1.3.3.1 | MEP.030: Deployement | milestone | 0d | 2012-08-03 | 2012-08-03 |  |  |  | 2012-08-31 | 2012-09-04 | 2d | 0d | start no earlier than 2012-08-03 |  |  |  |
| 263 | 5.1.3.3.2 | MEP: End | milestone | 0d | 2012-08-03 | 2012-08-03 | 262 |  |  | 2012-09-04 | 2012-09-04 | 0d | 0d |  |  |  |  |
| 264 | 5.1.3.4 | Post-MEP Support |  | 21d | 2012-08-03 | 2012-08-31 | 263 |  |  | 2012-09-04 | 2012-10-01 | 20d | 0d | finish no earlier than 2012-06-29 |  |  |  |
| 265 | 5.1.4 | **P5.4 Split basket** |  | 104.93d | 2012-04-03 A | 2012-08-31 |  | 7% | 97.4d | 2012-03-14 | 2012-10-01 | 138d | 0d |  | 435h |  |  |
| 266 | 5.1.4.1 | **Development** |  | 51d | 2012-04-03 A | 2012-06-15 |  | 30% | 35.7d | 2012-03-26 | 2012-05-23 | 40d | 0d |  |  |  |  |
| 267 | 5.1.4.1.1 | DE.010: DSEI-IA - MORE |  | 51d | 2012-04-03 A | 2012-06-15 | 211 | 30% | 35.7d | 2012-03-26 | 2012-05-23 | 40d | 0d | start no earlier than 2012-04-03 |  |  | Confirmation date par DSEI-IA d'ici le 6 juin |
| 268 | 5.1.4.1.2 | DE : End | milestone | 0d | 2012-06-15 | 2012-06-15 | 267 |  |  | 2012-05-23 | 2012-05-23 | 0d | 0d |  |  |  |  |

Notes:
- 244: *Schedule Connect: [28]UID=RN(@G.B&C]S4&/O.$JK(HAW0[11]PUN=SE-1493[8]TUID=293[27]PUID=inv_investments5000601
- 248: *Schedule Connect: [28]UID=RNP%)C`>C\F$:T,ZKW<4N\)`[11]PUN=SE-1493[8]TUID=297[27]PUID=inv_investments5000601
- 250: *Schedule Connect: [28]UID=RN2WE[;\<]\D^A)="I*IW!3@[11]PUN=SE-1493[8]TUID=296[27]PUID=inv_investments5000601
- 251: *Schedule Connect: [28]UID=RNP%)C`>C\F$:T,ZKW<4N\)`[11]PUN=SE-1493[8]TUID=297[27]PUID=inv_investments5000601
- 256: *Schedule Connect: [28]UID=RNP%)C`>C\F$:T,ZKW<4N\)`[11]PUN=SE-1493[8]TUID=297[27]PUID=inv_investments5000601
- 257: *Schedule Connect: [28]UID=RNP%)C`>C\F$:T,ZKW<4N\)`[11]PUN=SE-1493[8]TUID=297[27]PUID=inv_investments5000601
- 259: *Schedule Connect: [28]UID=RNPI7YA`HXS4>Z:!QG"#D3!0[11]PUN=SE-1493[8]TUID=294[27]PUID=inv_investments5000601
- 260: *Schedule Connect: [28]UID=RNG(4"*I?(M4NU?@'FWEJ,/@[11]PUN=SE-1493[8]TUID=295[27]PUID=inv_investments5000601
- 261: *Schedule Connect: [28]UID=RN&#6&:PA[;TF+>P6^EC$_4@[11]PUN=SE-1493[8]TUID=299[27]PUID=inv_investments5000601
- 266: *Schedule Connect: [28]UID=RNE''*2?9K)4&X2EVL]Q[S=0[11]PUN=SE-1493[8]TUID=287[27]PUID=inv_investments5000601
- 267: *Schedule Connect: [28]UID=RN='1D<5!Y8$&;6U8@>U$M7@[11]PUN=SE-1493[8]TUID=288[27]PUID=inv_investments5000601
- 268: *Schedule Connect: [28]UID=RNBW]F,%,I\TF/OMC9IVW\_`[11]PUN=SE-1493[8]TUID=292[27]PUID=inv_investments5000601

| ID | WBS | Task | Type | Duration | Start | Finish | Predecessors | Complete | Remaining | Baseline start | Baseline finish | Baseline duration | Total slack | Free slack | Constraint | Work | Actual work |
| --- | --- | --- | --- | --- | --- | --- | --- | --- | --- | --- | --- | --- | --- | --- | --- | --- | --- |
| 269 | 5.1.4.2 | **Testing** |  | 43.93d | 2012-06-01 | 2012-08-03 |  |  |  | 2012-03-14 | 2012-07-13 | 83d | 0d |  |  | 435h |  |
| 270 | 5.1.4.2.1 | TE.010: Test Strategy |  | 10d | 2012-06-01 | 2012-06-15 | 268FS-10d, 278SF-1d |  |  | 2012-03-26 | 2012-04-10 | 10d | 0d |  |  | 37.5h |  |
| 271 | 5.1.4.2.2 | TE.015: Test Strategy Approval | milestone | 0d | 2012-06-15 | 2012-06-15 | 270 |  |  | 2012-04-11 | 2012-04-11 | 1d | 0d |  |  |  |  |
| 272 | 5.1.4.2.3 | **TE.020: Test Case** |  | 10d | 2012-06-01 | 2012-06-15 |  |  |  | 2012-03-14 | 2012-04-11 | 19d | 0d |  |  | 112.5h |  |
| 273 | 5.1.4.2.3.1 | TE.021: IT Contribution |  | 10d | 2012-06-01 | 2012-06-15 | 268FS-10d |  |  | 2012-03-14 | 2012-04-11 | 19d | 0d |  |  | 37.5h |  |
| 274 | 5.1.4.2.3.2 | TE.022: Business Contribution |  | 10d | 2012-06-01 | 2012-06-15 | 268FS-10d |  |  | 2012-03-14 | 2012-04-11 | 19d | 0d |  | start no earlier than 2012-05-22 | 75h |  |
| 275 | 5.1.4.2.4 | TE.030: Test Plan |  | 10d | 2012-06-01 | 2012-06-15 | 268FS-10d |  |  | 2012-04-12 | 2012-04-18 | 5d | 0d |  | start no earlier than 2012-05-22 | 37.5h |  |
| 276 | 5.1.4.2.5 | TE.035: Test Plan Approval | milestone | 0d | 2012-06-15 | 2012-06-15 | 275 |  |  | 2012-04-19 | 2012-04-19 | 1d | 0d |  | start no earlier than 2012-06-08 |  |  |
| 277 | 5.1.4.2.6 | **TE.070: Integrated Testing** |  | 19d | 2012-06-18 | 2012-07-16 |  |  |  | 2012-05-22 | 2012-06-14 | 18d | 0d |  |  | 75h |  |
| 278 | 5.1.4.2.6.1 | TE.071: IT Contribution |  | 19d | 2012-06-18 | 2012-07-16 |  |  |  | 2012-05-22 | 2012-06-14 | 18d | 0d |  | start no earlier than 2012-06-18 | 75h |  |
| 279 | 5.1.4.2.7 | **TE.075: Tracability Matrix (TA)** |  | 19d | 2012-06-18 | 2012-07-16 |  |  |  | 2012-04-20 | 2012-05-04 | 11d | 0d |  |  | 22.5h |  |
| 280 | 5.1.4.2.7.1 | TE.075.1: Réalisation de la matrice |  | 19d | 2012-06-18 | 2012-07-16 |  |  |  | 2012-04-20 | 2012-05-03 | 10d | 0d |  | start no earlier than 2012-06-18 | 22.5h |  |
| 281 | 5.1.4.2.7.2 | TE.075.2: Matrix approval | milestone | 0d | 2012-07-16 | 2012-07-16 | 280 |  |  | 2012-05-04 | 2012-05-04 | 1d | 0d |  |  |  |  |
| 282 | 5.1.4.2.8 | **TE.080: User Acceptance Testing** |  | 15d | 2012-07-16 | 2012-08-03 |  |  |  | 2012-06-18 | 2012-07-13 | 18d | 0d |  |  | 150h |  |
| 283 | 5.1.4.2.8.1 | TE.081: IT Contribution |  | 15d | 2012-07-16 | 2012-08-03 |  |  |  | 2012-06-18 | 2012-07-13 | 18d | 0d |  | start no earlier than 2012-07-16 | 75h |  |
| 284 | 5.1.4.2.8.2 | TE.082: Business Contribution |  | 15d | 2012-07-16 | 2012-08-03 |  |  |  | 2012-06-18 | 2012-07-13 | 18d | 0d |  | start no earlier than 2012-07-16 | 75h |  |
| 285 | 5.1.4.2.9 | TE.100: Defect Management |  | 33d | 2012-06-18 | 2012-08-03 | 277SS, 284FF |  |  | 2012-05-22 | 2012-07-13 | 37d | 0d |  |  |  |  |
| 286 | 5.1.4.2.10 | TE: End | milestone | 0d | 2012-08-03 | 2012-08-03 | 285 |  |  | 2012-07-13 | 2012-07-13 | 0d | 0d |  |  |  |  |
| 287 | 5.1.4.3 | **MEP** |  | 0d | 2012-08-03 | 2012-08-03 |  |  |  | 2012-08-31 | 2012-09-04 | 2d | 0d |  |  |  |  |
| 288 | 5.1.4.3.1 | MEP.030: Deployement | milestone | 0d | 2012-08-03 | 2012-08-03 |  |  |  | 2012-08-31 | 2012-09-04 | 2d | 0d |  | start no earlier than 2012-08-03 |  |  |
| 289 | 5.1.4.3.2 | MEP: End | milestone | 0d | 2012-08-03 | 2012-08-03 | 288 |  |  | 2012-09-04 | 2012-09-04 | 0d | 0d |  |  |  |  |
| 290 | 5.1.4.4 | Post-MEP Support |  | 21d | 2012-08-03 | 2012-08-31 | 289 |  |  | 2012-09-04 | 2012-10-01 | 20d | 0d |  |  |  |  |
| 291 | 5.1.5 | **P5.7 Maturity data** |  | 104.93d | 2012-04-03 A | 2012-08-31 |  | 30% | 73.95d | 2012-03-14 | 2012-10-01 | 138d | 0d |  |  | 435h | 159.38h |
| 292 | 5.1.5.1 | **Development** |  | 60d | 2012-04-03 A | 2012-06-29 |  | 60% | 24d | 2012-03-26 | 2012-05-23 | 40d | 5.1d |  |  |  |  |
| 293 | 5.1.5.1.1 | DE.010: DSEI-IA - MORE |  | 60d | 2012-04-03 A | 2012-06-29 |  | 60% | 24d | 2012-03-26 | 2012-05-23 | 40d | 5.1d | 0d | start no earlier than 2012-04-03 |  |  |
| 294 | 5.1.5.1.2 | DE : End | milestone | 0d | 2012-06-29 | 2012-06-29 | 293 |  |  | 2012-05-23 | 2012-05-23 | 0d | 5.1d | 0d |  |  |  |

Notes:
- 269: *Schedule Connect: [28]UID=RN(@G.B&C]S4&/O.$JK(HAW0[11]PUN=SE-1493[8]TUID=293[27]PUID=inv_investments5000601
- 273: *Schedule Connect: [28]UID=RNP%)C`>C\F$:T,ZKW<4N\)`[11]PUN=SE-1493[8]TUID=297[27]PUID=inv_investments5000601
- 277: *Schedule Connect: [28]UID=RN2WE[;\<]\D^A)="I*IW!3@[11]PUN=SE-1493[8]TUID=296[27]PUID=inv_investments5000601
- 278: *Schedule Connect: [28]UID=RNP%)C`>C\F$:T,ZKW<4N\)`[11]PUN=SE-1493[8]TUID=297[27]PUID=inv_investments5000601
- 282: *Schedule Connect: [28]UID=RNP%)C`>C\F$:T,ZKW<4N\)`[11]PUN=SE-1493[8]TUID=297[27]PUID=inv_investments5000601
- 283: *Schedule Connect: [28]UID=RNP%)C`>C\F$:T,ZKW<4N\)`[11]PUN=SE-1493[8]TUID=297[27]PUID=inv_investments5000601
- 285: *Schedule Connect: [28]UID=RNPI7YA`HXS4>Z:!QG"#D3!0[11]PUN=SE-1493[8]TUID=294[27]PUID=inv_investments5000601
- 286: *Schedule Connect: [28]UID=RNG(4"*I?(M4NU?@'FWEJ,/@[11]PUN=SE-1493[8]TUID=295[27]PUID=inv_investments5000601
- 287: *Schedule Connect: [28]UID=RN&#6&:PA[;TF+>P6^EC$_4@[11]PUN=SE-1493[8]TUID=299[27]PUID=inv_investments5000601
- 292: *Schedule Connect: [28]UID=RNE''*2?9K)4&X2EVL]Q[S=0[11]PUN=SE-1493[8]TUID=287[27]PUID=inv_investments5000601
- 293: *Schedule Connect: [28]UID=RN='1D<5!Y8$&;6U8@>U$M7@[11]PUN=SE-1493[8]TUID=288[27]PUID=inv_investments5000601
- 294: *Schedule Connect: [28]UID=RNBW]F,%,I\TF/OMC9IVW\_`[11]PUN=SE-1493[8]TUID=292[27]PUID=inv_investments5000601

| ID | WBS | Task | Type | Duration | Start | Finish | Predecessors | Complete | Remaining | Baseline start | Baseline finish | Baseline duration | Total slack | Free slack | Constraint | Work | Actual work |
| --- | --- | --- | --- | --- | --- | --- | --- | --- | --- | --- | --- | --- | --- | --- | --- | --- | --- |
| 295 | 5.1.5.2 | **Testing** |  | 34.93d | 2012-06-14 A | 2012-08-03 |  | 19% | 28.45d | 2012-03-14 | 2012-07-13 | 83d | 0d |  |  | 435h | 159.38h |
| 296 | 5.1.5.2.1 | TE.010: Test Strategy |  | 6d | 2012-06-14 A | 2012-06-22 | 294FS-10d | 85% | 0.9d | 2012-03-26 | 2012-04-10 | 10d | 0d |  | start no earlier than 2012-05-22 | 37.5h | 31.88h |
| 297 | 5.1.5.2.2 | TE.015: Test Strategy Approval | milestone | 0d | 2012-06-22 | 2012-06-22 | 296 |  |  | 2012-04-11 | 2012-04-11 | 1d | 0d |  | start no earlier than 2012-06-08 |  |  |
| 298 | 5.1.5.2.3 | **TE.020: Test Case** |  | 6d | 2012-06-14 A | 2012-06-22 |  | 85% | 0.9d | 2012-03-14 | 2012-04-11 | 19d | 0d |  |  | 112.5h | 95.62h |
| 299 | 5.1.5.2.3.1 | TE.021: IT Contribution |  | 6d | 2012-06-14 A | 2012-06-22 | 294FS-10d | 85% | 0.9d | 2012-03-14 | 2012-04-11 | 19d | 0d |  | start no earlier than 2012-05-22 | 37.5h | 31.88h |
| 300 | 5.1.5.2.3.2 | TE.022: Business Contribution |  | 6d | 2012-06-14 A | 2012-06-22 | 294FS-10d | 85% | 0.9d | 2012-03-14 | 2012-04-11 | 19d | 0d |  | start no earlier than 2012-05-22 | 75h | 63.75h |
| 301 | 5.1.5.2.4 | TE.030: Test Plan |  | 6d | 2012-06-14 A | 2012-06-22 | 294FS-10d | 85% | 0.9d | 2012-04-12 | 2012-04-18 | 5d | 0d |  | start no earlier than 2012-05-22 | 37.5h | 31.88h |
| 302 | 5.1.5.2.5 | TE.035: Test Plan Approval | milestone | 0d | 2012-06-22 | 2012-06-22 | 301 |  |  | 2012-04-19 | 2012-04-19 | 1d | 0d |  | start no earlier than 2012-06-08 |  |  |
| 303 | 5.1.5.2.6 | **TE.070: Integrated Testing** |  | 14d | 2012-06-26 | 2012-07-16 |  |  |  | 2012-05-22 | 2012-06-14 | 18d | 0d |  |  | 75h |  |
| 304 | 5.1.5.2.6.1 | TE.071: IT Contribution |  | 14d | 2012-06-26 | 2012-07-16 |  |  |  | 2012-05-22 | 2012-06-14 | 18d | 0d |  | start no earlier than 2012-06-26 | 75h |  |
| 305 | 5.1.5.2.7 | **TE.075: Tracability Matrix (TA)** |  | 14d | 2012-06-26 | 2012-07-16 |  |  |  | 2012-04-20 | 2012-05-04 | 11d | 0d |  |  | 22.5h |  |
| 306 | 5.1.5.2.7.1 | TE.075.1: Réalisation de la matrice |  | 14d | 2012-06-26 | 2012-07-16 |  |  |  | 2012-04-20 | 2012-05-03 | 10d | 0d |  | start no earlier than 2012-06-26 | 22.5h |  |
| 307 | 5.1.5.2.7.2 | TE.075.2: Matrix approval | milestone | 0d | 2012-07-16 | 2012-07-16 | 306 |  |  | 2012-05-04 | 2012-05-04 | 1d | 0d |  |  |  |  |
| 308 | 5.1.5.2.8 | **TE.080: User Acceptance Testing** |  | 15d | 2012-07-16 | 2012-08-03 |  |  |  | 2012-06-18 | 2012-07-13 | 18d | 0d |  |  | 150h |  |
| 309 | 5.1.5.2.8.1 | TE.081: IT Contribution |  | 15d | 2012-07-16 | 2012-08-03 |  |  |  | 2012-06-18 | 2012-07-13 | 18d | 0d |  | start no earlier than 2012-07-16 | 75h |  |
| 310 | 5.1.5.2.8.2 | TE.082: Business Contribution |  | 15d | 2012-07-16 | 2012-08-03 |  |  |  | 2012-06-18 | 2012-07-13 | 18d | 0d |  | start no earlier than 2012-07-16 | 75h |  |
| 311 | 5.1.5.2.9 | TE.100: Defect Management |  | 28d | 2012-06-26 | 2012-08-03 |  |  |  | 2012-05-22 | 2012-07-13 | 37d | 0d |  | start no earlier than 2012-06-26 |  |  |
| 312 | 5.1.5.2.10 | TE: End | milestone | 0d | 2012-08-03 | 2012-08-03 | 311 |  |  | 2012-07-13 | 2012-07-13 | 0d | 0d |  |  |  |  |
| 313 | 5.1.5.3 | **MEP** |  | 0d | 2012-08-03 | 2012-08-03 |  |  |  | 2012-08-31 | 2012-09-04 | 2d | 0d |  |  |  |  |
| 314 | 5.1.5.3.1 | MEP.030: Deployement | milestone | 0d | 2012-08-03 | 2012-08-03 |  |  |  | 2012-08-31 | 2012-09-04 | 2d | 0d |  | start no earlier than 2012-08-03 |  |  |
| 315 | 5.1.5.3.2 | MEP: End | milestone | 0d | 2012-08-03 | 2012-08-03 | 314 |  |  | 2012-09-04 | 2012-09-04 | 0d | 0d |  |  |  |  |
| 316 | 5.1.5.4 | Post-MEP Support |  | 21d | 2012-08-03 | 2012-08-31 | 315 |  |  | 2012-09-04 | 2012-10-01 | 20d | 0d |  |  |  |  |
| 317 | 5.1.6 | **P5.3: Greek reports** |  | 86d | 2012-05-01 A | 2012-08-31 |  | 16% | 72.01d | 2012-03-26 | 2012-09-04 | 111d | 0d |  |  | 435h | 93.75h |
| 318 | 5.1.6.1 | **Development** |  | 19d | 2012-05-01 A | 2012-05-28 |  | 60% | 7.6d | 2012-03-26 | 2012-05-23 | 40d | 5d |  |  |  |  |
| 319 | 5.1.6.1.1 | DE.010: DSEI-IA - MORE |  | 19d | 2012-05-01 A | 2012-05-28 |  | 60% | 7.6d | 2012-03-26 | 2012-05-23 | 40d | 5d | 0d | start no earlier than 2012-05-01 |  |  |
| 320 | 5.1.6.1.2 | DE : End | milestone | 0d | 2012-05-28 | 2012-05-28 | 319 |  |  | 2012-05-23 | 2012-05-23 | 0d | 5d | 0d |  |  |  |

Notes:
- 295: *Schedule Connect: [28]UID=RN(@G.B&C]S4&/O.$JK(HAW0[11]PUN=SE-1493[8]TUID=293[27]PUID=inv_investments5000601
- 299: *Schedule Connect: [28]UID=RNP%)C`>C\F$:T,ZKW<4N\)`[11]PUN=SE-1493[8]TUID=297[27]PUID=inv_investments5000601
- 303: *Schedule Connect: [28]UID=RN2WE[;\<]\D^A)="I*IW!3@[11]PUN=SE-1493[8]TUID=296[27]PUID=inv_investments5000601
- 304: *Schedule Connect: [28]UID=RNP%)C`>C\F$:T,ZKW<4N\)`[11]PUN=SE-1493[8]TUID=297[27]PUID=inv_investments5000601
- 308: *Schedule Connect: [28]UID=RNP%)C`>C\F$:T,ZKW<4N\)`[11]PUN=SE-1493[8]TUID=297[27]PUID=inv_investments5000601
- 309: *Schedule Connect: [28]UID=RNP%)C`>C\F$:T,ZKW<4N\)`[11]PUN=SE-1493[8]TUID=297[27]PUID=inv_investments5000601
- 311: *Schedule Connect: [28]UID=RNPI7YA`HXS4>Z:!QG"#D3!0[11]PUN=SE-1493[8]TUID=294[27]PUID=inv_investments5000601
- 312: *Schedule Connect: [28]UID=RNG(4"*I?(M4NU?@'FWEJ,/@[11]PUN=SE-1493[8]TUID=295[27]PUID=inv_investments5000601
- 313: *Schedule Connect: [28]UID=RN&#6&:PA[;TF+>P6^EC$_4@[11]PUN=SE-1493[8]TUID=299[27]PUID=inv_investments5000601
- 317: *Schedule Connect: [28]UID=RN^QE.0B<A5$:937+B0[ATC@[11]PUN=SE-1493[8]TUID=326[27]PUID=inv_investments5000601
- 318: *Schedule Connect: [28]UID=RNE''*2?9K)4&X2EVL]Q[S=0[11]PUN=SE-1493[8]TUID=287[27]PUID=inv_investments5000601
- 319: *Schedule Connect: [28]UID=RN='1D<5!Y8$&;6U8@>U$M7@[11]PUN=SE-1493[8]TUID=288[27]PUID=inv_investments5000601
- 320: *Schedule Connect: [28]UID=RNBW]F,%,I\TF/OMC9IVW\_`[11]PUN=SE-1493[8]TUID=292[27]PUID=inv_investments5000601

| ID | WBS | Task | Type | Duration | Start | Finish | Predecessors | Complete | Remaining | Baseline start | Baseline finish | Baseline duration | Total slack | Constraint | Work | Actual work |
| --- | --- | --- | --- | --- | --- | --- | --- | --- | --- | --- | --- | --- | --- | --- | --- | --- |
| 321 | 5.1.6.2 | **Testing** |  | 33d | 2012-05-14 A | 2012-06-29 |  | 13% | 28.69d | 2012-03-14 | 2012-07-13 | 83d | 0d |  | 435h | 93.75h |
| 322 | 5.1.6.2.1 | TE.010: Test Strategy |  | 10d | 2012-05-14 A | 2012-05-28 | 320FS-10d | 50% | 5d | 2012-03-26 | 2012-04-10 | 10d | 0d |  | 37.5h | 18.75h |
| 323 | 5.1.6.2.2 | TE.015: Test Strategy Approval | milestone | 0d | 2012-05-28 | 2012-05-28 | 322 |  |  | 2012-04-11 | 2012-04-11 | 1d | 0d |  |  |  |
| 324 | 5.1.6.2.3 | **TE.020: Test Case** |  | 10d | 2012-05-14 A | 2012-05-28 |  | 50% | 5d | 2012-03-14 | 2012-04-11 | 19d | 0d |  | 112.5h | 56.25h |
| 325 | 5.1.6.2.3.1 | TE.021: IT Contribution |  | 10d | 2012-05-14 A | 2012-05-28 | 320FS-10d | 50% | 5d | 2012-03-14 | 2012-04-11 | 19d | 0d |  | 37.5h | 18.75h |
| 326 | 5.1.6.2.3.2 | TE.022: Business Contribution |  | 10d | 2012-05-14 A | 2012-05-28 | 320FS-10d | 50% | 5d | 2012-03-14 | 2012-04-11 | 19d | 0d |  | 75h | 37.5h |
| 327 | 5.1.6.2.4 | TE.030: Test Plan |  | 10d | 2012-05-14 A | 2012-05-28 | 320FS-10d | 50% | 5d | 2012-04-12 | 2012-04-18 | 5d | 0d |  | 37.5h | 18.75h |
| 328 | 5.1.6.2.5 | TE.035: Test Plan Approval | milestone | 0d | 2012-05-28 | 2012-05-28 | 327 |  |  | 2012-04-19 | 2012-04-19 | 1d | 0d |  |  |  |
| 329 | 5.1.6.2.6 | **TE.070: Integrated Testing** |  | 19d | 2012-05-22 | 2012-06-15 |  |  |  | 2012-05-22 | 2012-06-14 | 18d | 0d |  | 75h |  |
| 330 | 5.1.6.2.6.1 | TE.071: IT Contribution |  | 19d | 2012-05-22 | 2012-06-15 |  |  |  | 2012-05-22 | 2012-06-14 | 18d | 0d | start no earlier than 2012-05-22 | 75h |  |
| 331 | 5.1.6.2.6.2 | TE.072: Business Contribution |  | 19d | 2012-05-22 | 2012-06-15 |  |  |  | 2012-05-22 | 2012-06-14 | 18d | 0d | start no earlier than 2012-05-22 |  |  |
| 332 | 5.1.6.2.7 | **TE.075: Tracability Matrix (TA)** |  | 19d | 2012-05-22 | 2012-06-15 |  |  |  | 2012-04-20 | 2012-05-04 | 11d | 0d |  | 22.5h |  |
| 333 | 5.1.6.2.7.1 | TE.075.1: Réalisation de la matrice |  | 19d | 2012-05-22 | 2012-06-15 |  |  |  | 2012-04-20 | 2012-05-03 | 10d | 0d | start no earlier than 2012-05-22 | 22.5h |  |
| 334 | 5.1.6.2.7.2 | TE.075.2: Matrix approval | milestone | 0d | 2012-06-15 | 2012-06-15 | 333 |  |  | 2012-05-04 | 2012-05-04 | 1d | 0d |  |  |  |
| 335 | 5.1.6.2.8 | **TE.080: User Acceptance Testing** |  | 14d | 2012-06-11 | 2012-06-29 |  |  |  | 2012-06-18 | 2012-07-13 | 18d | 0d |  | 150h |  |
| 336 | 5.1.6.2.8.1 | TE.081: IT Contribution |  | 14d | 2012-06-11 | 2012-06-29 |  |  |  | 2012-06-18 | 2012-07-13 | 18d | 0d | start no earlier than 2012-06-11 | 75h |  |
| 337 | 5.1.6.2.8.2 | TE.082: Business Contribution |  | 14d | 2012-06-11 | 2012-06-29 |  |  |  | 2012-06-18 | 2012-07-13 | 18d | 0d | start no earlier than 2012-06-11 | 75h |  |
| 338 | 5.1.6.2.9 | TE.100: Defect Management |  | 28d | 2012-05-22 | 2012-06-29 |  |  |  | 2012-05-22 | 2012-07-13 | 37d | 0d | start no earlier than 2012-05-22 |  |  |
| 339 | 5.1.6.2.10 | TE: End | milestone | 0d | 2012-06-29 | 2012-06-29 | 338 |  |  | 2012-07-13 | 2012-07-13 | 0d | 0d |  |  |  |
| 340 | 5.1.6.3 | **MEP** |  | 0d | 2012-08-03 | 2012-08-03 |  |  |  | 2012-08-31 | 2012-09-04 | 2d | 0d |  |  |  |
| 341 | 5.1.6.3.1 | MEP.030: Deployement | milestone | 0d | 2012-08-03 | 2012-08-03 |  |  |  | 2012-08-31 | 2012-09-04 | 2d | 0d | start no earlier than 2012-08-03 |  |  |
| 342 | 5.1.6.3.2 | MEP: End | milestone | 0d | 2012-08-03 | 2012-08-03 | 341 |  |  | 2012-09-04 | 2012-09-04 | 0d | 0d |  |  |  |
| 343 | 5.1.6.4 | Post-MEP Support |  | 21d | 2012-08-03 | 2012-08-31 | 342 |  |  | 2012-09-04 | 2012-10-01 | 20d | 0d |  |  |  |
| 344 | 5.1.7 | **P5.5 Extract files from MORE to P7 usage** |  | 76d | 2012-06-12 A | 2012-09-28 |  | 1% | 74.94d | 2012-03-26 | 2012-09-04 | 111d | 0d |  | 435h |  |
| 345 | 5.1.7.1 | **Development** |  | 27d | 2012-06-12 A | 2012-07-20 |  | 10% | 24.3d | 2012-03-26 | 2012-05-23 | 40d | 0d |  |  |  |
| 346 | 5.1.7.1.1 | DE.010: DSEI-IA - MORE |  | 27d | 2012-06-12 A | 2012-07-20 |  | 10% | 24.3d | 2012-03-26 | 2012-05-23 | 40d | 0d | start no earlier than 2012-06-12 |  |  |
| 347 | 5.1.7.1.2 | DE : End | milestone | 0d | 2012-07-20 | 2012-07-20 | 346 |  |  | 2012-05-23 | 2012-05-23 | 0d | 0d |  |  |  |

Notes:
- 321: *Schedule Connect: [28]UID=RN(@G.B&C]S4&/O.$JK(HAW0[11]PUN=SE-1493[8]TUID=293[27]PUID=inv_investments5000601
- 325: *Schedule Connect: [28]UID=RNP%)C`>C\F$:T,ZKW<4N\)`[11]PUN=SE-1493[8]TUID=297[27]PUID=inv_investments5000601
- 329: *Schedule Connect: [28]UID=RN2WE[;\<]\D^A)="I*IW!3@[11]PUN=SE-1493[8]TUID=296[27]PUID=inv_investments5000601
- 330: *Schedule Connect: [28]UID=RNP%)C`>C\F$:T,ZKW<4N\)`[11]PUN=SE-1493[8]TUID=297[27]PUID=inv_investments5000601
- 335: *Schedule Connect: [28]UID=RNP%)C`>C\F$:T,ZKW<4N\)`[11]PUN=SE-1493[8]TUID=297[27]PUID=inv_investments5000601
- 336: *Schedule Connect: [28]UID=RNP%)C`>C\F$:T,ZKW<4N\)`[11]PUN=SE-1493[8]TUID=297[27]PUID=inv_investments5000601
- 338: *Schedule Connect: [28]UID=RNPI7YA`HXS4>Z:!QG"#D3!0[11]PUN=SE-1493[8]TUID=294[27]PUID=inv_investments5000601
- 339: *Schedule Connect: [28]UID=RNG(4"*I?(M4NU?@'FWEJ,/@[11]PUN=SE-1493[8]TUID=295[27]PUID=inv_investments5000601
- 340: *Schedule Connect: [28]UID=RN&#6&:PA[;TF+>P6^EC$_4@[11]PUN=SE-1493[8]TUID=299[27]PUID=inv_investments5000601
- 344: *Schedule Connect: [28]UID=RN^QE.0B<A5$:937+B0[ATC@[11]PUN=SE-1493[8]TUID=326[27]PUID=inv_investments5000601
- 345: *Schedule Connect: [28]UID=RNE''*2?9K)4&X2EVL]Q[S=0[11]PUN=SE-1493[8]TUID=287[27]PUID=inv_investments5000601
- 346: *Schedule Connect: [28]UID=RN='1D<5!Y8$&;6U8@>U$M7@[11]PUN=SE-1493[8]TUID=288[27]PUID=inv_investments5000601
- 347: *Schedule Connect: [28]UID=RNBW]F,%,I\TF/OMC9IVW\_`[11]PUN=SE-1493[8]TUID=292[27]PUID=inv_investments5000601

| ID | WBS | Task | Type | Duration | Start | Finish | Predecessors | Baseline start | Baseline finish | Baseline duration | Total slack | Constraint | Work |
| --- | --- | --- | --- | --- | --- | --- | --- | --- | --- | --- | --- | --- | --- |
| 348 | 5.1.7.2 | **Testing** |  | 42d | 2012-07-09 | 2012-09-05 |  | 2012-03-14 | 2012-07-13 | 83d | 0d |  | 435h |
| 349 | 5.1.7.2.1 | TE.010: Test Strategy |  | 10d | 2012-07-09 | 2012-07-20 | 347FS-10d | 2012-03-26 | 2012-04-10 | 10d | 0d |  | 37.5h |
| 350 | 5.1.7.2.2 | TE.015: Test Strategy Approval | milestone | 0d | 2012-07-20 | 2012-07-20 | 349 | 2012-04-11 | 2012-04-11 | 1d | 0d |  |  |
| 351 | 5.1.7.2.3 | **TE.020: Test Case** |  | 10d | 2012-07-09 | 2012-07-20 |  | 2012-03-14 | 2012-04-11 | 19d | 0d |  | 112.5h |
| 352 | 5.1.7.2.3.1 | TE.021: IT Contribution |  | 10d | 2012-07-09 | 2012-07-20 | 347FS-10d | 2012-03-14 | 2012-04-11 | 19d | 0d |  | 37.5h |
| 353 | 5.1.7.2.3.2 | TE.022: Business Contribution |  | 10d | 2012-07-09 | 2012-07-20 | 347FS-10d | 2012-03-14 | 2012-04-11 | 19d | 0d |  | 75h |
| 354 | 5.1.7.2.4 | TE.030: Test Plan |  | 10d | 2012-07-09 | 2012-07-20 | 347FS-10d | 2012-04-12 | 2012-04-18 | 5d | 0d |  | 37.5h |
| 355 | 5.1.7.2.5 | TE.035: Test Plan Approval | milestone | 0d | 2012-07-20 | 2012-07-20 | 354 | 2012-04-19 | 2012-04-19 | 1d | 0d |  |  |
| 356 | 5.1.7.2.6 | **TE.070: Integrated Testing** |  | 15d | 2012-07-23 | 2012-08-10 |  | 2012-05-22 | 2012-06-14 | 18d | 0d |  | 75h |
| 357 | 5.1.7.2.6.1 | TE.071: IT Contribution |  | 15d | 2012-07-23 | 2012-08-10 |  | 2012-05-22 | 2012-06-14 | 18d | 0d | start no earlier than 2012-07-23 | 75h |
| 358 | 5.1.7.2.6.2 | TE.072: Business Contribution |  | 15d | 2012-07-23 | 2012-08-10 |  | 2012-05-22 | 2012-06-14 | 18d | 0d | start no earlier than 2012-07-23 |  |
| 359 | 5.1.7.2.7 | **TE.075: Tracability Matrix (TA)** |  | 15d | 2012-07-23 | 2012-08-10 |  | 2012-04-20 | 2012-05-04 | 11d | 0d |  | 22.5h |
| 360 | 5.1.7.2.7.1 | TE.075.1: Réalisation de la matrice |  | 15d | 2012-07-23 | 2012-08-10 |  | 2012-04-20 | 2012-05-03 | 10d | 0d | start no earlier than 2012-07-23 | 22.5h |
| 361 | 5.1.7.2.7.2 | TE.075.2: Matrix approval | milestone | 0d | 2012-08-10 | 2012-08-10 | 360 | 2012-05-04 | 2012-05-04 | 1d | 0d |  |  |
| 362 | 5.1.7.2.8 | **TE.080: User Acceptance Testing** |  | 17d | 2012-08-13 | 2012-09-05 |  | 2012-06-18 | 2012-07-13 | 18d | 0d |  | 150h |
| 363 | 5.1.7.2.8.1 | TE.081: IT Contribution |  | 17d | 2012-08-13 | 2012-09-05 |  | 2012-06-18 | 2012-07-13 | 18d | 0d | start no earlier than 2012-08-13 | 75h |
| 364 | 5.1.7.2.8.2 | TE.082: Business Contribution |  | 17d | 2012-08-13 | 2012-09-05 | 363SS | 2012-06-18 | 2012-07-13 | 18d | 0d | start no earlier than 2012-07-13 | 75h |
| 365 | 5.1.7.2.9 | TE.100: Defect Management |  | 32d | 2012-07-23 | 2012-09-05 |  | 2012-05-22 | 2012-07-13 | 37d | 0d | start no earlier than 2012-07-23 |  |
| 366 | 5.1.7.2.10 | TE: End | milestone | 0d | 2012-09-05 | 2012-09-05 | 365 | 2012-07-13 | 2012-07-13 | 0d | 0d |  |  |
| 367 | 5.1.7.3 | **MEP** |  | 0d | 2012-09-07 | 2012-09-07 |  | 2012-08-31 | 2012-09-04 | 2d | 0d |  |  |
| 368 | 5.1.7.3.1 | MEP.030: Deployement | milestone | 0d | 2012-09-07 | 2012-09-07 |  | 2012-08-31 | 2012-09-04 | 2d | 0d | start no earlier than 2012-09-07 |  |
| 369 | 5.1.7.3.2 | MEP: End | milestone | 0d | 2012-09-07 | 2012-09-07 | 368 | 2012-09-04 | 2012-09-04 | 0d | 0d |  |  |
| 370 | 5.1.7.4 | Post-MEP Support |  | 16d | 2012-09-07 | 2012-09-28 | 369 | 2012-09-04 | 2012-10-01 | 20d | 0d |  |  |
| 371 | 5.1.8 | **P5.6.1 DDC MODA- MORE (Business Dev) - TBD in June** |  | 104d | 2012-06-04 | 2012-10-31 |  | 2012-03-26 | 2012-09-04 | 111d | 0d |  | 510h |
| 372 | 5.1.8.1 | **Development** |  | 104d | 2012-06-04 | 2012-10-31 |  | 2012-04-16 | 2012-06-08 | 39d | 0d |  | 300h |
| 373 | 5.1.8.1.1 | DE.100: BNC - MODA |  | 104d | 2012-06-04 | 2012-10-31 |  | 2012-04-16 | 2012-06-08 | 39d | 0d | start no earlier than 2012-06-04 | 300h |
| 374 | 5.1.8.1.2 | DE : End | milestone | 0d | 2012-10-31 | 2012-10-31 | 373 | 2012-06-08 | 2012-06-08 | 0d | 0d |  |  |

Notes:
- 348: *Schedule Connect: [28]UID=RN(@G.B&C]S4&/O.$JK(HAW0[11]PUN=SE-1493[8]TUID=293[27]PUID=inv_investments5000601
- 352: *Schedule Connect: [28]UID=RNP%)C`>C\F$:T,ZKW<4N\)`[11]PUN=SE-1493[8]TUID=297[27]PUID=inv_investments5000601
- 356: *Schedule Connect: [28]UID=RN2WE[;\<]\D^A)="I*IW!3@[11]PUN=SE-1493[8]TUID=296[27]PUID=inv_investments5000601
- 357: *Schedule Connect: [28]UID=RNP%)C`>C\F$:T,ZKW<4N\)`[11]PUN=SE-1493[8]TUID=297[27]PUID=inv_investments5000601
- 362: *Schedule Connect: [28]UID=RNP%)C`>C\F$:T,ZKW<4N\)`[11]PUN=SE-1493[8]TUID=297[27]PUID=inv_investments5000601
- 363: *Schedule Connect: [28]UID=RNP%)C`>C\F$:T,ZKW<4N\)`[11]PUN=SE-1493[8]TUID=297[27]PUID=inv_investments5000601
- 365: *Schedule Connect: [28]UID=RNPI7YA`HXS4>Z:!QG"#D3!0[11]PUN=SE-1493[8]TUID=294[27]PUID=inv_investments5000601
- 366: *Schedule Connect: [28]UID=RNG(4"*I?(M4NU?@'FWEJ,/@[11]PUN=SE-1493[8]TUID=295[27]PUID=inv_investments5000601
- 367: *Schedule Connect: [28]UID=RN&#6&:PA[;TF+>P6^EC$_4@[11]PUN=SE-1493[8]TUID=299[27]PUID=inv_investments5000601
- 372: *Schedule Connect: [28]UID=RNE''*2?9K)4&X2EVL]Q[S=0[11]PUN=SE-1493[8]TUID=287[27]PUID=inv_investments5000601
- 373: *Schedule Connect: [28]UID=RNF^@,CD`SW4NX#0&KQ[/<3P[11]PUN=SE-1493[8]TUID=289[27]PUID=inv_investments5000601
- 374: *Schedule Connect: [28]UID=RNBW]F,%,I\TF/OMC9IVW\_`[11]PUN=SE-1493[8]TUID=292[27]PUID=inv_investments5000601

| ID | WBS | Task | Type | Duration | Start | Finish | Predecessors | Baseline start | Baseline finish | Baseline duration | Total slack | Constraint | Work |
| --- | --- | --- | --- | --- | --- | --- | --- | --- | --- | --- | --- | --- | --- |
| 375 | 5.1.8.2 | **Testing** |  | 104d | 2012-06-04 | 2012-10-31 |  | 2012-03-26 | 2012-08-03 | 90d | 0d |  | 210h |
| 376 | 5.1.8.2.1 | TE.010: Test Strategy |  | 104d | 2012-06-04 | 2012-10-31 |  | 2012-03-26 | 2012-03-30 | 5d | 0d | start no earlier than 2012-06-04 | 22.5h |
| 377 | 5.1.8.2.2 | TE.015: Test Strategy Approval | milestone | 0d | 2012-10-31 | 2012-10-31 | 376 | 2012-04-02 | 2012-04-02 | 1d | 0d |  |  |
| 378 | 5.1.8.2.3 | **TE.020: Test Case** |  | 104d | 2012-06-04 | 2012-10-31 |  | 2012-04-03 | 2012-04-11 | 5d | 0d |  | 112.5h |
| 379 | 5.1.8.2.3.1 | TE.021: IT Contribution |  | 104d | 2012-06-04 | 2012-10-31 |  | 2012-04-03 | 2012-04-11 | 5d | 0d | start no earlier than 2012-06-04 | 37.5h |
| 380 | 5.1.8.2.3.2 | TE.022: Business Contribution |  | 104d | 2012-06-04 | 2012-10-31 |  | 2012-04-03 | 2012-04-11 | 5d | 0d | start no earlier than 2012-06-04 | 75h |
| 381 | 5.1.8.2.4 | TE.030: Test Plan |  | 104d | 2012-06-04 | 2012-10-31 |  | 2012-04-12 | 2012-04-18 | 5d | 0d | start no earlier than 2012-06-04 |  |
| 382 | 5.1.8.2.5 | TE.035: Test Plan Approval | milestone | 0d | 2012-10-31 | 2012-10-31 | 381 | 2012-04-19 | 2012-04-19 | 1d | 0d |  |  |
| 383 | 5.1.8.2.6 | **TE.060: Unit Testing** |  | 104d | 2012-06-04 | 2012-10-31 |  | 2012-06-08 | 2012-06-08 | 0d | 0d |  |  |
| 384 | 5.1.8.2.6.1 | TE.061: IT Contribution |  | 104d | 2012-06-04 | 2012-10-31 |  | 2012-06-08 | 2012-06-08 | 0d | 0d | finish no earlier than 2012-10-31 |  |
| 385 | 5.1.8.2.6.2 | TE.062: Business Contribution |  | 104d | 2012-06-04 | 2012-10-31 |  | 2012-06-08 | 2012-06-08 | 0d | 0d | finish no earlier than 2012-10-31 |  |
| 386 | 5.1.8.2.7 | **TE.070: Integrated Testing** |  | 104d | 2012-06-04 | 2012-10-31 |  | 2012-06-11 | 2012-07-06 | 18d | 0d |  |  |
| 387 | 5.1.8.2.7.1 | TE.072: Business Contribution |  | 104d | 2012-06-04 | 2012-10-31 |  | 2012-06-11 | 2012-07-06 | 18d | 0d | start no earlier than 2012-06-04 |  |
| 388 | 5.1.8.2.8 | **TE.080: User Acceptance Testing** |  | 104d | 2012-06-04 | 2012-10-31 |  | 2012-07-09 | 2012-08-03 | 20d | 0d |  | 75h |
| 389 | 5.1.8.2.8.1 | TE.082: Business Contribution |  | 104d | 2012-06-04 | 2012-10-31 |  | 2012-07-09 | 2012-08-03 | 20d | 0d | start no earlier than 2012-06-04 | 75h |
| 390 | 5.1.8.2.9 | TE.100: Defect Management |  | 104d | 2012-06-04 | 2012-10-31 |  | 2012-06-11 | 2012-08-03 | 38d | 0d | start no earlier than 2012-06-04 |  |
| 391 | 5.1.8.2.10 | TE: End | milestone | 0d | 2012-10-31 | 2012-10-31 | 390 | 2012-08-03 | 2012-08-03 | 0d | 0d |  |  |
| 392 | 5.1.8.3 | **MEP** |  | 0d | 2012-10-31 | 2012-10-31 |  | 2012-08-31 | 2012-09-04 | 2d | 0d |  |  |
| 393 | 5.1.8.3.1 | MEP.010: Deployement | milestone | 0d | 2012-10-31 | 2012-10-31 |  | 2012-08-31 | 2012-09-04 | 2d | 0d | start no earlier than 2012-10-31 |  |
| 394 | 5.1.8.3.2 | MEP: End | milestone | 0d | 2012-10-31 | 2012-10-31 | 393 | 2012-09-04 | 2012-09-04 | 0d | 0d |  |  |
| 395 | 5.1.9 | **P5.6.2 DDC MORE-MODA (DSEI-IA) - TBD in June** |  | 104d | 2012-06-04 | 2012-10-31 |  | 2012-03-26 | 2012-09-04 | 111d | 0d |  | 585h |
| 396 | 5.1.9.1 | **Development** |  | 104d | 2012-06-04 | 2012-10-31 |  | 2012-04-16 | 2012-06-08 | 39d | 0d |  | 300h |
| 397 | 5.1.9.1.1 | DE.010: DSEI-IA - MORE |  | 104d | 2012-06-04 | 2012-10-31 |  | 2012-04-16 | 2012-06-08 | 39d | 0d | start no earlier than 2012-06-04 | 300h |
| 398 | 5.1.9.1.2 | DE : End | milestone | 0d | 2012-10-31 | 2012-10-31 | 397 | 2012-06-08 | 2012-06-08 | 0d | 0d |  |  |

Notes:
- 375: *Schedule Connect: [28]UID=RN(@G.B&C]S4&/O.$JK(HAW0[11]PUN=SE-1493[8]TUID=293[27]PUID=inv_investments5000601
- 379: *Schedule Connect: [28]UID=RNP%)C`>C\F$:T,ZKW<4N\)`[11]PUN=SE-1493[8]TUID=297[27]PUID=inv_investments5000601
- 383: *Schedule Connect: [28]UID=RNG(4"*I?(M4NU?@'FWEJ,/@[11]PUN=SE-1493[8]TUID=295[27]PUID=inv_investments5000601
- 384: *Schedule Connect: [28]UID=RNP%)C`>C\F$:T,ZKW<4N\)`[11]PUN=SE-1493[8]TUID=297[27]PUID=inv_investments5000601
- 386: *Schedule Connect: [28]UID=RN2WE[;\<]\D^A)="I*IW!3@[11]PUN=SE-1493[8]TUID=296[27]PUID=inv_investments5000601
- 388: *Schedule Connect: [28]UID=RNP%)C`>C\F$:T,ZKW<4N\)`[11]PUN=SE-1493[8]TUID=297[27]PUID=inv_investments5000601
- 390: *Schedule Connect: [28]UID=RNPI7YA`HXS4>Z:!QG"#D3!0[11]PUN=SE-1493[8]TUID=294[27]PUID=inv_investments5000601
- 391: *Schedule Connect: [28]UID=RNG(4"*I?(M4NU?@'FWEJ,/@[11]PUN=SE-1493[8]TUID=295[27]PUID=inv_investments5000601
- 392: *Schedule Connect: [28]UID=RN&#6&:PA[;TF+>P6^EC$_4@[11]PUN=SE-1493[8]TUID=299[27]PUID=inv_investments5000601
- 396: *Schedule Connect: [28]UID=RNE''*2?9K)4&X2EVL]Q[S=0[11]PUN=SE-1493[8]TUID=287[27]PUID=inv_investments5000601
- 397: *Schedule Connect: [28]UID=RN='1D<5!Y8$&;6U8@>U$M7@[11]PUN=SE-1493[8]TUID=288[27]PUID=inv_investments5000601
- 398: *Schedule Connect: [28]UID=RNBW]F,%,I\TF/OMC9IVW\_`[11]PUN=SE-1493[8]TUID=292[27]PUID=inv_investments5000601

| ID | WBS | Task | Type | Duration | Start | Finish | Predecessors | Complete | Remaining | Baseline start | Baseline finish | Baseline duration | Total slack | Constraint | Work |
| --- | --- | --- | --- | --- | --- | --- | --- | --- | --- | --- | --- | --- | --- | --- | --- |
| 399 | 5.1.9.2 | **Testing** |  | 104d | 2012-06-04 | 2012-10-31 |  |  |  | 2012-03-26 | 2012-08-03 | 90d | 0d |  | 285h |
| 400 | 5.1.9.2.1 | TE.010: Test Strategy |  | 104d | 2012-06-04 | 2012-10-31 |  |  |  | 2012-03-26 | 2012-03-30 | 5d | 0d | start no earlier than 2012-06-04 | 22.5h |
| 401 | 5.1.9.2.2 | TE.015: Test Strategy Approval | milestone | 0d | 2012-10-31 | 2012-10-31 | 400 |  |  | 2012-04-02 | 2012-04-02 | 1d | 0d |  |  |
| 402 | 5.1.9.2.3 | **TE.020: Test Case** |  | 104d | 2012-06-04 | 2012-10-31 |  |  |  | 2012-04-03 | 2012-04-11 | 5d | 0d |  | 37.5h |
| 403 | 5.1.9.2.3.1 | TE.021: IT Contribution |  | 104d | 2012-06-04 | 2012-10-31 |  |  |  | 2012-04-03 | 2012-04-11 | 5d | 0d | start no earlier than 2012-06-04 | 37.5h |
| 404 | 5.1.9.2.4 | TE.030: Test Plan |  | 104d | 2012-06-04 | 2012-10-31 |  |  |  | 2012-04-12 | 2012-04-18 | 5d | 0d | start no earlier than 2012-06-04 |  |
| 405 | 5.1.9.2.5 | TE.035: Test Plan Approval | milestone | 0d | 2012-10-31 | 2012-10-31 | 404 |  |  | 2012-04-19 | 2012-04-19 | 1d | 0d |  |  |
| 406 | 5.1.9.2.6 | **TE.060: Unit Testing** |  | 104d | 2012-06-04 | 2012-10-31 |  |  |  | 2012-06-08 | 2012-06-08 | 0d | 0d |  |  |
| 407 | 5.1.9.2.6.1 | TE.061: IT Contribution |  | 104d | 2012-06-04 | 2012-10-31 |  |  |  | 2012-06-08 | 2012-06-08 | 0d | 0d | finish no earlier than 2012-10-31 |  |
| 408 | 5.1.9.2.7 | **TE.070: Integrated Testing** |  | 104d | 2012-06-04 | 2012-10-31 |  |  |  | 2012-06-11 | 2012-07-06 | 18d | 0d |  | 75h |
| 409 | 5.1.9.2.7.1 | TE.071: IT Contribution |  | 104d | 2012-06-04 | 2012-10-31 |  |  |  | 2012-06-11 | 2012-07-06 | 18d | 0d | start no earlier than 2012-06-04 | 75h |
| 410 | 5.1.9.2.8 | **TE.080: User Acceptance Testing** |  | 104d | 2012-06-04 | 2012-10-31 |  |  |  | 2012-07-09 | 2012-08-03 | 20d | 0d |  | 150h |
| 411 | 5.1.9.2.8.1 | TE.081: IT Contribution |  | 104d | 2012-06-04 | 2012-10-31 |  |  |  | 2012-07-09 | 2012-08-03 | 20d | 0d | start no earlier than 2012-06-04 | 75h |
| 412 | 5.1.9.2.8.2 | TE.082: Business Contribution |  | 104d | 2012-06-04 | 2012-10-31 |  |  |  | 2012-07-09 | 2012-08-03 | 20d | 0d | start no earlier than 2012-06-04 | 75h |
| 413 | 5.1.9.2.9 | TE.100: Defect Management |  | 104d | 2012-06-04 | 2012-10-31 |  |  |  | 2012-06-11 | 2012-08-03 | 38d | 0d | start no earlier than 2012-06-04 |  |
| 414 | 5.1.9.2.10 | TE: End | milestone | 0d | 2012-10-31 | 2012-10-31 | 413 |  |  | 2012-08-03 | 2012-08-03 | 0d | 0d |  |  |
| 415 | 5.1.9.3 | **MEP** |  | 0d | 2012-10-31 | 2012-10-31 |  |  |  | 2012-08-31 | 2012-09-04 | 2d | 0d |  |  |
| 416 | 5.1.9.3.1 | MEP.010: Deployement | milestone | 0d | 2012-10-31 | 2012-10-31 |  |  |  | 2012-08-31 | 2012-09-04 | 2d | 0d | start no earlier than 2012-10-31 |  |
| 417 | 5.1.9.3.2 | MEP: End | milestone | 0d | 2012-10-31 | 2012-10-31 | 416 |  |  | 2012-09-04 | 2012-09-04 | 0d | 0d |  |  |
| 418 | 5.1.10 | P5.6.3 DDC Most More - Load real PNL - TBD in June |  | 104d | 2012-06-04 | 2012-10-31 |  |  |  |  |  |  | 0d | finish no earlier than 2012-10-31 |  |
| 419 | 5.1.11 | **P5.8: Export Files to prototype P7** |  | 71.93d | 2012-03-26 A | 2012-07-09 |  | 98% | 1.63d | 2012-06-29 | 2012-07-31 | 21d | 0d |  |  |
| 420 | 5.1.11.1 | EF010: Sample Muke up file provided by user |  | 33d | 2012-03-26 A | 2012-05-11 A |  | 100% |  | 2012-06-29 | 2012-06-29 | 0d |  | start no earlier than 2012-03-26 |  |
| 421 | 5.1.11.2 | EF011: Sample Muke up file extract (IT) - #1 |  | 10d | 2012-04-23 A | 2012-05-04 A |  | 100% |  |  |  |  |  | start no earlier than 2012-04-23 |  |
| 422 | 5.1.11.3 | EF013: Sample Muke up file extract (IT) - #3 |  | 1d | 2012-07-09 | 2012-07-09 |  |  |  | 2012-07-31 | 2012-07-31 | 0d | 0d | start no earlier than 2012-07-09 |  |

Notes:
- 399: *Schedule Connect: [28]UID=RN(@G.B&C]S4&/O.$JK(HAW0[11]PUN=SE-1493[8]TUID=293[27]PUID=inv_investments5000601
- 403: *Schedule Connect: [28]UID=RNP%)C`>C\F$:T,ZKW<4N\)`[11]PUN=SE-1493[8]TUID=297[27]PUID=inv_investments5000601
- 406: *Schedule Connect: [28]UID=RNG(4"*I?(M4NU?@'FWEJ,/@[11]PUN=SE-1493[8]TUID=295[27]PUID=inv_investments5000601
- 407: *Schedule Connect: [28]UID=RNP%)C`>C\F$:T,ZKW<4N\)`[11]PUN=SE-1493[8]TUID=297[27]PUID=inv_investments5000601
- 408: *Schedule Connect: [28]UID=RN2WE[;\<]\D^A)="I*IW!3@[11]PUN=SE-1493[8]TUID=296[27]PUID=inv_investments5000601
- 409: *Schedule Connect: [28]UID=RNP%)C`>C\F$:T,ZKW<4N\)`[11]PUN=SE-1493[8]TUID=297[27]PUID=inv_investments5000601
- 410: *Schedule Connect: [28]UID=RNP%)C`>C\F$:T,ZKW<4N\)`[11]PUN=SE-1493[8]TUID=297[27]PUID=inv_investments5000601
- 411: *Schedule Connect: [28]UID=RNP%)C`>C\F$:T,ZKW<4N\)`[11]PUN=SE-1493[8]TUID=297[27]PUID=inv_investments5000601
- 413: *Schedule Connect: [28]UID=RNPI7YA`HXS4>Z:!QG"#D3!0[11]PUN=SE-1493[8]TUID=294[27]PUID=inv_investments5000601
- 414: *Schedule Connect: [28]UID=RNG(4"*I?(M4NU?@'FWEJ,/@[11]PUN=SE-1493[8]TUID=295[27]PUID=inv_investments5000601
- 415: *Schedule Connect: [28]UID=RN&#6&:PA[;TF+>P6^EC$_4@[11]PUN=SE-1493[8]TUID=299[27]PUID=inv_investments5000601
- 419: *Schedule Connect: [28]UID=RN^QE.0B<A5$:937+B0[ATC@[11]PUN=SE-1493[8]TUID=326[27]PUID=inv_investments5000601
- 420: *Schedule Connect: [28]UID=RNP59E])_-'TJ8P_/^,(V$Q0[11]PUN=SE-1493[8]TUID=327[27]PUID=inv_investments5000601
- 422: *Schedule Connect: [28]UID=RNP59E])_-'TJ8P_/^,(V$Q0[11]PUN=SE-1493[8]TUID=327[27]PUID=inv_investments5000601

| ID | WBS | Task | Type | Duration | Start | Finish | Predecessors | Complete | Remaining | Baseline start | Baseline finish | Baseline duration | Total slack | Constraint | Work | Actual work |
| --- | --- | --- | --- | --- | --- | --- | --- | --- | --- | --- | --- | --- | --- | --- | --- | --- |
| 423 | 5.1.12 | **P5.9: Prod - Daily Run** |  | 41d | 2012-09-04 | 2012-10-31 |  |  |  | 2012-09-04 | 2012-10-31 | 41d | 0d |  |  |  |
| 424 | 5.1.12.1 | PDR: Parallel Run - September |  | 19d | 2012-09-04 | 2012-09-28 |  |  |  | 2012-09-04 | 2012-09-28 | 19d | 0d | start no earlier than 2012-09-04 |  |  |
| 425 | 5.1.12.2 | PDR: Parallel Run - October |  | 22d | 2012-10-01 | 2012-10-31 | 424 |  |  | 2012-10-01 | 2012-10-31 | 22d | 0d |  |  |  |
| 426 | 5.2 | **P2: Datawarehouse - Treasury** |  | 218.93d | 2012-03-01 A | 2013-01-21 |  | 26% | 162.81d | 2011-11-01 | 2012-12-04 | 277.87d | 0d |  | 315h | 240h |
| 427 | 5.2.1 | **P2.1: Static Data Flat File and P2.3: ETF Data File** |  | 103.93d | 2012-03-01 A | 2012-07-30 |  | 47% | 55.51d | 2011-11-01 | 2011-11-01 | 0d | 0d |  |  |  |
| 428 | 5.2.1.1 | **Profiling** |  | 33.93d | 2012-03-12 A | 2012-04-27 A |  | 100% |  |  |  |  |  |  |  |  |
| 429 | 5.2.1.1.1 | Pr010: P2.1: IT Contribution |  | 33d | 2012-03-12 A | 2012-04-27 A |  | 100% |  |  |  |  |  | start no earlier than 2012-03-12 |  |  |
| 430 | 5.2.1.1.2 | Pr010: P2.3: IT Contribution |  | 5d | 2012-04-23 A | 2012-04-27 A |  | 100% |  |  |  |  |  | start no earlier than 2012-04-23 |  |  |
| 431 | 5.2.1.2 | **Developpement & Testing** |  | 102d | 2012-03-01 A | 2012-07-27 |  | 45% | 56.1d |  |  |  | 0d |  |  |  |
| 432 | 5.2.1.2.1 | DET100: BNC - Smart Co |  | 102d | 2012-03-01 A | 2012-07-27 |  | 45% | 56.1d |  |  |  | 0d | start no earlier than 2012-03-01 |  |  |
| 433 | 5.2.1.3 | **MEP** |  | 64d | 2012-04-27 A | 2012-07-30 |  | 17% | 52.85d |  |  |  | 0d |  |  |  |
| 434 | 5.2.1.3.1 | MEP030: Produce Data File (V. Beta) |  | 2d | 2012-04-27 A | 2012-04-30 A |  | 100% |  |  |  |  |  | start no earlier than 2012-04-27 |  |  |
| 435 | 5.2.1.3.2 | MEP040: Tuning Production File (Data Completeness) |  | 61d | 2012-05-01 A | 2012-07-27 |  | 15% | 51.85d |  |  |  | 0d | start no earlier than 2012-05-01 |  |  |
| 436 | 5.2.1.3.3 | MEP010: Deployement |  | 1d | 2012-07-30 | 2012-07-30 | 435 |  |  |  |  |  | 0d |  |  |  |
| 437 | 5.2.1.3.4 | MEP End | milestone | 0d | 2012-07-30 | 2012-07-30 | 436 |  |  |  |  |  | 0d |  |  |  |
| 438 | 5.2.2 | **P2.2: SmartCo - New Static Data File for DW/T** |  | 41d | 2012-03-01 A | 2012-04-30 A |  | 100% |  | 2012-03-01 | 2012-04-30 | 41d |  |  | 240h | 240h |
| 439 | 5.2.2.1 | **Testing** |  | 31d | 2012-03-01 A | 2012-04-16 A |  | 100% |  | 2012-03-01 | 2012-04-16 | 31d |  |  | 240h | 240h |
| 440 | 5.2.2.1.1 | TE.070: Integrated Testing |  | 22d | 2012-03-01 A | 2012-03-30 A |  | 100% |  | 2012-03-01 | 2012-03-30 | 22d |  | start no earlier than 2012-03-01 | 165h | 165h |
| 441 | 5.2.2.1.2 | **TE.080: User Acceptance Testing** |  | 9d | 2012-04-02 A | 2012-04-16 A |  | 100% |  | 2012-04-02 | 2012-04-16 | 9d |  |  | 75h | 75h |
| 442 | 5.2.2.1.2.1 | TE.083: BDQ Express certification |  | 9d | 2012-04-02 A | 2012-04-16 A | 440 | 100% |  | 2012-04-02 | 2012-04-16 | 9d |  | start no earlier than 2012-04-02 | 75h | 75h |
| 443 | 5.2.2.1.3 | TE: End | milestone | 0d | 2012-04-16 A | 2012-04-16 A | 442 | 100% |  | 2012-04-16 | 2012-04-16 | 0d |  |  |  |  |
| 444 | 5.2.2.2 | **MEP** |  | 7d | 2012-04-19 A | 2012-04-30 A |  | 100% |  | 2012-04-16 | 2012-04-30 | 11d |  |  |  |  |
| 445 | 5.2.2.2.1 | Deployment |  | 7d | 2012-04-19 A | 2012-04-30 A | 443FS+3d | 100% |  | 2012-04-16 | 2012-04-30 | 11d |  |  |  |  |
| 446 | 5.2.2.2.2 | MEP: End | milestone | 0d | 2012-04-30 A | 2012-04-30 A | 445 | 100% |  | 2012-04-30 | 2012-04-30 | 0d |  |  |  |  |

Notes:
- 440: *Schedule Connect: [28]UID=RN2WE[;\<]\D^A)="I*IW!3@[11]PUN=SE-1493[8]TUID=296[27]PUID=inv_investments5000601
- 441: *Schedule Connect: [28]UID=RNP%)C`>C\F$:T,ZKW<4N\)`[11]PUN=SE-1493[8]TUID=297[27]PUID=inv_investments5000601

| ID | WBS | Task | Type | Duration | Start | Finish | Predecessors | Baseline start | Baseline finish | Baseline duration | Total slack | Constraint | Work |
| --- | --- | --- | --- | --- | --- | --- | --- | --- | --- | --- | --- | --- | --- |
| 447 | 5.2.3 | **P2.4: SmartCo - New ETF File for DW/T (NPC & KVAR/MORE)** |  | 127d | 2012-05-01 | 2012-10-31 |  | 2012-04-16 | 2012-10-02 | 118d | 0d |  | 75h |
| 448 | 5.2.3.1 | **Development** |  | 105d | 2012-05-01 | 2012-09-28 |  | 2012-04-16 | 2012-06-08 | 39d | 0d |  |  |
| 449 | 5.2.3.1.1 | DE.020: DSEI-IA - PART 1 |  | 42d | 2012-05-01 | 2012-06-29 |  | 2012-04-16 | 2012-06-08 | 39d | 0d | start no earlier than 2012-05-01 |  |
| 450 | 5.2.3.1.2 | DE.020: DSEI-IA - PART 2 |  | 63d | 2012-07-03 | 2012-09-28 | 449 | 2012-04-16 | 2012-06-08 | 39d | 0d |  |  |
| 451 | 5.2.3.2 | **Testing** |  | 28d | 2012-09-04 | 2012-10-12 |  | 2012-06-11 | 2012-08-03 | 38d | 0d |  | 75h |
| 452 | 5.2.3.2.1 | **TE.070: Integrated Testing** |  | 19d | 2012-09-04 | 2012-09-28 |  | 2012-06-11 | 2012-07-06 | 18d | 0d |  | 75h |
| 453 | 5.2.3.2.1.1 | TE.071: IT Contribution |  | 19d | 2012-09-04 | 2012-09-28 |  | 2012-06-11 | 2012-07-06 | 18d | 0d | start no earlier than 2012-09-04 | 75h |
| 454 | 5.2.3.2.1.2 | TE.072: Business Contribution |  | 19d | 2012-09-04 | 2012-09-28 | 453FF | 2012-06-11 | 2012-07-06 | 18d | 0d |  |  |
| 455 | 5.2.3.2.2 | TE.090: Regression Testing |  | 9d | 2012-10-01 | 2012-10-12 | 454 | 2012-07-09 | 2012-08-03 | 20d | 0d |  |  |
| 456 | 5.2.3.2.3 | TE: End | milestone | 0d | 2012-10-12 | 2012-10-12 | 455 | 2012-08-03 | 2012-08-03 | 0d | 0d |  |  |
| 457 | 5.2.3.3 | **MEP** |  | 10d | 2012-10-15 | 2012-10-26 |  | 2012-08-31 | 2012-09-04 | 2d | 0d |  |  |
| 458 | 5.2.3.3.1 | MEP.030: Deployement |  | 10d | 2012-10-15 | 2012-10-26 | 455 | 2012-08-31 | 2012-09-04 | 2d | 0d | start no earlier than 2012-08-31 |  |
| 459 | 5.2.3.3.2 | MEP: End | milestone | 0d | 2012-10-26 | 2012-10-26 | 458 | 2012-09-04 | 2012-09-04 | 0d | 0d |  |  |
| 460 | 5.2.3.4 | Post-MEP Support |  | 3d | 2012-10-29 | 2012-10-31 | 459 | 2012-09-05 | 2012-10-02 | 20d | 0d |  |  |
| 461 | 5.2.4 | **P2.9: Link DW/T to MORE (including P2.2 & P2.4 Final adjustments)** |  | 72d | 2012-10-01 | 2013-01-21 |  | 2012-10-01 | 2012-12-04 | 45d | 0d |  |  |
| 462 | 5.2.4.1 | **Development** |  | 43d | 2012-10-01 | 2012-11-30 |  | 2012-10-01 | 2012-10-15 | 10d | 0d |  |  |
| 463 | 5.2.4.1.1 | DE.100: DSEIIA, MORE and DWT |  | 43d | 2012-10-01 | 2012-11-30 |  | 2012-10-01 | 2012-10-15 | 10d | 0d | start no earlier than 2012-10-01 |  |
| 464 | 5.2.4.1.2 | DE.110: BNC - SmartCo |  | 43d | 2012-10-01 | 2012-11-30 |  |  |  |  | 0d | start no earlier than 2012-10-01 |  |
| 465 | 5.2.4.2 | **Testing** |  | 15d | 2012-12-03 | 2012-12-21 |  | 2012-10-16 | 2012-10-22 | 5d | 0d |  |  |
| 466 | 5.2.4.2.1 | TE.090: Regression Testing |  | 15d | 2012-12-03 | 2012-12-21 |  | 2012-10-16 | 2012-10-22 | 5d | 0d | start no earlier than 2012-12-03 |  |
| 467 | 5.2.4.2.2 | TE: End | milestone | 0d | 2012-12-21 | 2012-12-21 | 466 | 2012-10-22 | 2012-10-22 | 0d | 0d |  |  |
| 468 | 5.2.4.3 | **MEP** |  | 5d | 2013-01-07 | 2013-01-11 |  | 2012-11-02 | 2012-11-05 | 2d | 0d |  |  |
| 469 | 5.2.4.3.1 | MEP.030: Deployement |  | 5d | 2013-01-07 | 2013-01-11 |  | 2012-11-02 | 2012-11-05 | 2d | 0d | start no earlier than 2013-01-07 |  |
| 470 | 5.2.4.3.2 | MEP: End | milestone | 0d | 2013-01-11 | 2013-01-11 | 469 | 2012-11-05 | 2012-11-05 | 0d | 0d |  |  |
| 471 | 5.2.4.4 | Post-MEP Support |  | 6d | 2013-01-14 | 2013-01-21 | 470 | 2012-11-06 | 2012-12-04 | 20d | 0d |  |  |

Notes:
- 449: *Schedule Connect: [28]UID=RNF^@,CD`SW4NX#0&KQ[/<3P[11]PUN=SE-1493[8]TUID=289[27]PUID=inv_investments5000601
- 450: *Schedule Connect: [28]UID=RNF^@,CD`SW4NX#0&KQ[/<3P[11]PUN=SE-1493[8]TUID=289[27]PUID=inv_investments5000601
- 452: *Schedule Connect: [28]UID=RN2WE[;\<]\D^A)="I*IW!3@[11]PUN=SE-1493[8]TUID=296[27]PUID=inv_investments5000601
- 453: *Schedule Connect: [28]UID=RNP%)C`>C\F$:T,ZKW<4N\)`[11]PUN=SE-1493[8]TUID=297[27]PUID=inv_investments5000601
- 463: *Schedule Connect: [28]UID=RNF^@,CD`SW4NX#0&KQ[/<3P[11]PUN=SE-1493[8]TUID=289[27]PUID=inv_investments5000601
- 466: *Schedule Connect: [28]UID=RN2WE[;\<]\D^A)="I*IW!3@[11]PUN=SE-1493[8]TUID=296[27]PUID=inv_investments5000601

| ID | WBS | Task | Type | Duration | Start | Finish | Predecessors | Complete | Remaining | Baseline start | Baseline finish | Baseline duration | Total slack | Constraint |
| --- | --- | --- | --- | --- | --- | --- | --- | --- | --- | --- | --- | --- | --- | --- |
| 472 | 5.3 | **P7: Capital Prototype** |  | 255.8d | 2011-11-01 A | 2012-10-31 |  | 31% | 177.29d | 2011-11-01 | 2012-10-31 | 254d | 0d |  |
| 473 | 5.3.1 | **Detailled Analysis** |  | 138d | 2011-11-01 A | 2012-05-14 A |  | 100% |  | 2011-11-01 | 2012-04-30 | 127d |  |  |
| 474 | 5.3.1.1 | D.An.010: MBA/ SRD |  | 122d | 2011-11-01 A | 2012-04-20 A |  | 100% |  | 2011-11-01 | 2012-04-05 | 112d |  |  |
| 475 | 5.3.1.2 | D.An.015: MBA/ SRD Approval |  | 15d | 2012-04-23 A | 2012-05-14 A | 474FS+1d | 100% |  | 2012-04-10 | 2012-04-20 | 8d |  | start no earlier than 2012-04-23 |
| 476 | 5.3.1.3 | D.An: End | milestone | 0d | 2012-05-14 A | 2012-05-14 A | 475 | 100% |  | 2012-04-23 | 2012-04-30 | 5d |  |  |
| 477 | 5.3.2 | **Development** |  | 114d | 2012-05-01 A | 2012-10-12 |  | 18% | 93.48d | 2012-05-01 | 2012-10-12 | 114d | 0d |  |
| 478 | 5.3.2.1 | DE.090: Prototype Development |  | 114d | 2012-05-01 A | 2012-10-12 |  | 18% | 93.48d | 2012-05-01 | 2012-10-12 | 114d | 0d | start no earlier than 2012-05-01 |
| 479 | 5.3.2.2 | DE: End | milestone | 0d | 2012-10-12 | 2012-10-12 | 478 |  |  | 2012-10-12 | 2012-10-12 | 0d | 0d |  |
| 480 | 5.3.3 | **Testing** |  | 113d | 2012-05-01 A | 2012-10-11 |  | 5% | 106.85d | 2012-05-01 | 2012-10-12 | 113d | 0d |  |
| 481 | 5.3.3.1 | TE.010: Test Strategy |  | 22d | 2012-05-01 A | 2012-05-31 |  | 75% | 5.5d | 2012-05-01 | 2012-06-01 | 22d | 0d | start no earlier than 2012-05-01 |
| 482 | 5.3.3.2 | TE.015: Test Strategy Approval |  | 5d | 2012-06-04 | 2012-06-08 | 481FS+1d |  |  | 2012-06-04 | 2012-06-08 | 4d | 0d |  |
| 483 | 5.3.3.3 | **TE.020: Test Case** |  | 18d | 2012-06-04 | 2012-06-28 |  |  |  | 2012-06-04 | 2012-06-29 | 18d | 0d |  |
| 484 | 5.3.3.3.1 | TE.021: IT Contribution |  | 18d | 2012-06-04 | 2012-06-28 | 482SS |  |  | 2012-06-04 | 2012-06-29 | 18d | 0d |  |
| 485 | 5.3.3.3.2 | TE.022: Business Contribution |  | 18d | 2012-06-04 | 2012-06-28 | 482SS |  |  | 2012-06-04 | 2012-06-29 | 18d | 0d |  |
| 486 | 5.3.3.4 | TE.030: Test Plan |  | 14d | 2012-06-11 | 2012-06-29 | 482 |  |  | 2012-06-08 | 2012-06-29 | 14d | 0d |  |
| 487 | 5.3.3.5 | TE.035: Test Plan Approval |  | 18d | 2012-07-03 | 2012-07-26 | 486, 483FS+1d |  |  | 2012-07-03 | 2012-07-27 | 18d | 0d |  |
| 488 | 5.3.3.6 | **TE.060: Unit Testing** |  | 33d | 2012-07-30 | 2012-09-13 |  |  |  | 2012-07-30 | 2012-09-14 | 33d | 0d |  |
| 489 | 5.3.3.6.1 | TE.061: IT Contribution |  | 33d | 2012-07-30 | 2012-09-13 | 487FS+1d |  |  | 2012-07-30 | 2012-09-14 | 33d | 0d |  |
| 490 | 5.3.3.6.2 | TE.062: Business Contribution |  | 33d | 2012-07-30 | 2012-09-13 | 487FS+1d |  |  | 2012-07-30 | 2012-09-14 | 33d | 0d |  |
| 491 | 5.3.3.7 | **TE.070: Integrated Testing** |  | 9d | 2012-09-17 | 2012-09-27 |  |  |  | 2012-09-17 | 2012-09-28 | 9d | 0d |  |
| 492 | 5.3.3.7.1 | TE.071: IT Contribution |  | 9d | 2012-09-17 | 2012-09-27 | 488FS+1d |  |  | 2012-09-17 | 2012-09-28 | 9d | 0d |  |
| 493 | 5.3.3.7.2 | TE.072: Business Contribution |  | 9d | 2012-09-17 | 2012-09-27 | 488FS+1d |  |  | 2012-09-17 | 2012-09-28 | 9d | 0d |  |
| 494 | 5.3.3.8 | **TE.080: User Acceptance Testing** |  | 33d | 2012-08-13 | 2012-09-27 |  |  |  | 2012-08-13 | 2012-09-28 | 33d | 0d |  |
| 495 | 5.3.3.8.1 | TE.081: IT Contribution |  | 33d | 2012-08-13 | 2012-09-27 | 488SS+10d, 491FF |  |  | 2012-08-13 | 2012-09-28 | 33d | 0d |  |
| 496 | 5.3.3.8.2 | TE.082: Business Contribution |  | 33d | 2012-08-13 | 2012-09-27 | 488SS+10d, 491FF |  |  | 2012-08-13 | 2012-09-28 | 33d | 0d |  |
| 497 | 5.3.3.9 | TE.090: Pre-Production Testing |  | 8d | 2012-10-01 | 2012-10-11 | 494FS+1d |  |  | 2012-10-01 | 2012-10-12 | 8d | 0d |  |
| 498 | 5.3.3.10 | TE.100: Defect Management |  | 50d | 2012-08-01 | 2012-10-11 | 488SS, 497FF |  |  | 2012-08-01 | 2012-10-12 | 50d | 0d |  |
| 499 | 5.3.3.11 | TE: End | milestone | 0d | 2012-10-11 | 2012-10-11 | 498 |  |  | 2012-10-12 | 2012-10-12 | 0d | 0d |  |

Notes:
- 472: *Schedule Connect: [28]UID=RN."PL$QMO3T.^1?_P#7`E7@[11]PUN=SE-1493[8]TUID=359[27]PUID=inv_investments5000601
- 474: *Schedule Connect: [28]UID=RNVGJ%R2W#2$Z)'YV+T#F]:0[11]PUN=SE-1493[8]TUID=272[27]PUID=inv_investments5000601
- 475: *Schedule Connect: [28]UID=RNASJ*DIOIK4R=Q_1;^OL;YP[11]PUN=SE-1493[8]TUID=273[27]PUID=inv_investments5000601
- 477: *Schedule Connect: [28]UID=RNE''*2?9K)4&X2EVL]Q[S=0[11]PUN=SE-1493[8]TUID=287[27]PUID=inv_investments5000601
- 478: *Schedule Connect: [28]UID=RN='1D<5!Y8$&;6U8@>U$M7@[11]PUN=SE-1493[8]TUID=288[27]PUID=inv_investments5000601
- 480: *Schedule Connect: [28]UID=RN(@G.B&C]S4&/O.$JK(HAW0[11]PUN=SE-1493[8]TUID=293[27]PUID=inv_investments5000601
- 484: *Schedule Connect: [28]UID=RNP%)C`>C\F$:T,ZKW<4N\)`[11]PUN=SE-1493[8]TUID=297[27]PUID=inv_investments5000601
- 488: *Schedule Connect: [28]UID=RNG(4"*I?(M4NU?@'FWEJ,/@[11]PUN=SE-1493[8]TUID=295[27]PUID=inv_investments5000601
- 489: *Schedule Connect: [28]UID=RNP%)C`>C\F$:T,ZKW<4N\)`[11]PUN=SE-1493[8]TUID=297[27]PUID=inv_investments5000601
- 491: *Schedule Connect: [28]UID=RN2WE[;\<]\D^A)="I*IW!3@[11]PUN=SE-1493[8]TUID=296[27]PUID=inv_investments5000601
- 492: *Schedule Connect: [28]UID=RNP%)C`>C\F$:T,ZKW<4N\)`[11]PUN=SE-1493[8]TUID=297[27]PUID=inv_investments5000601
- 494: *Schedule Connect: [28]UID=RNP%)C`>C\F$:T,ZKW<4N\)`[11]PUN=SE-1493[8]TUID=297[27]PUID=inv_investments5000601
- 495: *Schedule Connect: [28]UID=RNP%)C`>C\F$:T,ZKW<4N\)`[11]PUN=SE-1493[8]TUID=297[27]PUID=inv_investments5000601
- 497: *Schedule Connect: [28]UID=RN:ME`^><;FT^:@)COTC;ATP[11]PUN=SE-1493[8]TUID=298[27]PUID=inv_investments5000601
- 498: *Schedule Connect: [28]UID=RNPI7YA`HXS4>Z:!QG"#D3!0[11]PUN=SE-1493[8]TUID=294[27]PUID=inv_investments5000601
- 499: *Schedule Connect: [28]UID=RNG(4"*I?(M4NU?@'FWEJ,/@[11]PUN=SE-1493[8]TUID=295[27]PUID=inv_investments5000601

| ID | WBS | Task | Type | Duration | Start | Finish | Predecessors | Complete | Remaining | Baseline start | Baseline finish | Baseline duration | Total slack | Constraint | Work | Actual work |
| --- | --- | --- | --- | --- | --- | --- | --- | --- | --- | --- | --- | --- | --- | --- | --- | --- |
| 500 | 5.3.4 | **MEP** |  | 13d | 2012-10-15 | 2012-10-31 |  |  |  | 2012-10-15 | 2012-10-31 | 12d | 0d |  |  |  |
| 501 | 5.3.4.1 | MEP.010: Deployement |  | 13d | 2012-10-15 | 2012-10-31 | 499FS+1d |  |  | 2012-10-15 | 2012-10-31 | 12d | 0d |  |  |  |
| 502 | 5.3.4.2 | MEP: End | milestone | 0d | 2012-10-31 | 2012-10-31 | 501 |  |  | 2012-10-31 | 2012-10-31 | 0d | 0d |  |  |  |
| 503 | 6 | **P9: CCR Enhancements** |  | 217.8d | 2011-12-23 A | 2012-10-31 |  | 54% | 99.89d | 2011-12-23 | 2012-10-31 | 216.87d | 0d |  | 427.5h | 320.62h |
| 504 | 6.1 | **Detailled Analysis - BUS** |  | 64.87d | 2011-12-23 A | 2012-03-22 A |  | 100% |  | 2011-12-23 | 2012-03-09 | 55.87d |  |  |  |  |
| 505 | 6.1.1 | D.An.BUS.020: CCR- Summary of mandatory elements and identification |  | 41d | 2011-12-23 A | 2012-02-20 A |  | 100% |  | 2011-12-23 | 2012-02-20 | 41d |  | start no earlier than 2011-12-23 |  |  |
| 506 | 6.1.2 | D.An.BUS.030: CCR- Signoff in Principle |  | 57d | 2012-01-04 A | 2012-03-22 A |  | 100% |  | 2012-01-04 | 2012-03-09 | 48d |  | start no earlier than 2012-01-04 |  |  |
| 507 | 6.2 | **Development - BUS** |  | 88.93d | 2012-03-23 A | 2012-07-31 |  | 44% | 50.14d | 2012-03-12 | 2012-07-31 | 97d | 0d |  | 427.5h | 320.62h |
| 508 | 6.2.1 | **DE.BUS.050: Documentation** |  | 88.93d | 2012-03-23 A | 2012-07-31 |  | 44% | 50.14d | 2012-03-12 | 2012-07-31 | 97d | 0d |  | 427.5h | 320.62h |
| 509 | 6.2.1.1 | DE.BUS.051: CCR- Policy modifications |  | 57d | 2012-03-23 A | 2012-06-14 | 506 | 75% | 14.25d | 2012-03-12 | 2012-06-01 | 57d | 0d |  | 427.5h | 320.62h |
| 510 | 6.2.1.2 | DE.BUS.052: CCR- Policy and Implementation Formalization (reports prod) |  | 41d | 2012-06-01 | 2012-07-31 |  |  |  | 2012-06-01 | 2012-07-31 | 41d | 0d | start no earlier than 2012-06-01 |  |  |
| 511 | 6.3 | **MEP - BUS** |  | 64d | 2012-08-01 | 2012-10-31 |  |  |  | 2012-08-01 | 2012-10-31 | 64d | 0d |  |  |  |
| 512 | 6.3.1 | MEP.BUS.020: Final documentation/ Policy Integration/ Approval |  | 64d | 2012-08-01 | 2012-10-31 | 510 |  |  | 2012-08-01 | 2012-10-31 | 64d | 0d |  |  |  |
| 513 | 7 | **P10: OSFI Disclosure New Report** |  | 261.93d | 2012-01-12 A | 2013-01-31 |  | 15% | 223.62d | 2012-01-12 | 2013-01-31 | 261d | 0d |  |  |  |
| 514 | 7.1 | D.An.BUS.010: Comment on new Rules |  | 27d | 2012-01-12 A | 2012-02-17 A |  | 100% |  | 2012-01-12 | 2012-02-17 | 27d |  | start no earlier than 2012-01-12 |  |  |
| 515 | 7.2 | **Appendix 1: Disclosure template** |  | 191.93d | 2012-03-22 A | 2013-01-03 |  | 2% | 189.01d | 2012-04-02 | 2013-01-03 | 184d | 0d |  |  |  |
| 516 | 7.2.1 | **Detailled Analysis - BUS** |  | 89.93d | 2012-03-22 A | 2012-07-31 |  | 3% | 87.3d | 2012-04-02 | 2012-07-31 | 82d | 0d |  |  |  |
| 517 | 7.2.1.1 | **D.An.BUS.020: Impact Analysis** |  | 89.93d | 2012-03-22 A | 2012-07-31 |  | 3% | 87.3d | 2012-04-02 | 2012-07-31 | 82d | 0d |  |  |  |
| 518 | 7.2.1.1.1 | D.An.BUS.021.1: Availability of information |  | 89d | 2012-03-22 A | 2012-07-31 |  | 2% | 87.08d | 2012-04-02 | 2012-05-01 | 20d | 0d | start no earlier than 2012-03-22 |  |  |
| 519 | 7.2.1.1.2 | D.An.BUS.021.2: Impact on Pilier 3 Disclosure |  | 63d | 2012-05-01 A | 2012-07-31 |  | 5% | 59.85d | 2012-05-01 | 2012-07-31 | 63d | 0d |  |  |  |
| 520 | 7.2.1.1.3 | D.An.BUS.021.3: Assesment of gaps to be fixed |  | 21d | 2012-07-03 | 2012-07-31 | 519FF |  |  | 2012-07-03 | 2012-07-31 | 21d | 0d |  |  |  |
| 521 | 7.2.1.1.4 | D.An.: End | milestone | 0d | 2012-07-31 | 2012-07-31 | 520 |  |  | 2012-07-31 | 2012-07-31 | 0d | 0d |  |  |  |
| 522 | 7.2.2 | **Development - BUS** |  | 64d | 2012-08-01 | 2012-10-31 |  |  |  | 2012-08-01 | 2012-10-31 | 64d | 0d |  |  |  |
| 523 | 7.2.2.1 | DE.BUS.011: Appendix 1: Fix gap identified /Fix Impact on Pillier 3 disclosure / Adjust Complimentary data and produce information |  | 64d | 2012-08-01 | 2012-10-31 | 521 |  |  | 2012-08-01 | 2012-10-31 | 64d | 0d |  |  |  |
| 524 | 7.2.2.2 | DE.BUS : End | milestone | 0d | 2012-10-31 | 2012-10-31 | 523 |  |  | 2012-10-31 | 2012-10-31 | 0d | 0d |  |  |  |

Notes:
- 503: *Schedule Connect: [28]UID=RN$(%$PV06%$:U-&\E0QR'@0[11]PUN=SE-1493[8]TUID=360[27]PUID=inv_investments5000601
- 513: *Schedule Connect: [28]UID=RN$(%$PV06%$:U-&\E0QR'@0[11]PUN=SE-1493[8]TUID=360[27]PUID=inv_investments5000601

| ID | WBS | Task | Type | Duration | Start | Finish | Predecessors | Complete | Remaining | Baseline start | Baseline finish | Baseline duration | Total slack | Constraint |
| --- | --- | --- | --- | --- | --- | --- | --- | --- | --- | --- | --- | --- | --- | --- |
| 525 | 7.2.3 | **Testing - BUS** |  | 37d | 2012-11-01 | 2012-12-28 |  |  |  | 2012-11-01 | 2012-12-28 | 37d | 0d |  |
| 526 | 7.2.3.1 | TE.BUS.010: Test Strategy |  | 21d | 2012-11-01 | 2012-11-30 |  |  |  | 2012-11-01 | 2012-11-30 | 21d | 0d | start no earlier than 2012-11-01 |
| 527 | 7.2.3.2 | TE.BUS.080: User Acceptance Testing |  | 37d | 2012-11-01 | 2012-12-28 |  |  |  | 2012-11-01 | 2012-12-28 | 37d | 0d | start no earlier than 2012-11-01 |
| 528 | 7.2.3.3 | TE.BUS.100: Defect Management |  | 37d | 2012-11-01 | 2012-12-28 | 526SS, 527FF |  |  | 2012-11-01 | 2012-12-28 | 37d | 0d |  |
| 529 | 7.2.3.4 | TE.BUS: End | milestone | 0d | 2012-12-28 | 2012-12-28 | 528 |  |  | 2012-12-28 | 2012-12-28 | 0d | 0d |  |
| 530 | 7.2.4 | **MEP - BUS** |  | 1d | 2013-01-03 | 2013-01-03 |  |  |  | 2013-01-03 | 2013-01-03 | 1d | 0d |  |
| 531 | 7.2.4.1 | MEP.BUS.010: Deployement |  | 1d | 2013-01-03 | 2013-01-03 | 529 |  |  | 2013-01-03 | 2013-01-03 | 1d | 0d |  |
| 532 | 7.3 | **Appendix 2: Reconciliation of balance sheet** |  | 219.93d | 2012-03-12 A | 2013-01-31 |  | 8% | 203d | 2012-03-12 | 2013-01-31 | 219d | 0d |  |
| 533 | 7.3.1 | **Detailled Analysis - BUS** |  | 97.93d | 2012-03-12 A | 2012-07-31 |  | 16% | 82.01d | 2012-03-12 | 2012-07-31 | 97d | 0d |  |
| 534 | 7.3.1.1 | **D.An.BUS.020: Impact Analysis** |  | 97.93d | 2012-03-12 A | 2012-07-31 |  | 16% | 82.01d | 2012-03-12 | 2012-07-31 | 97d | 0d |  |
| 535 | 7.3.1.1.1 | D.An.BUS.021.4: Acounting to provide «Niveau de détail et rubriques» linked to identified information |  | 97d | 2012-03-12 A | 2012-07-31 |  | 30% | 67.9d | 2012-03-12 | 2012-05-30 | 55d | 0d | start no earlier than 2012-03-12 |
| 536 | 7.3.1.1.2 | D.An.BUS.021.5: New «Rubriques» identification And gap analysis |  | 82d | 2012-04-02 | 2012-07-31 |  |  |  | 2012-04-02 | 2012-07-31 | 82d | 0d | finish no earlier than 2012-07-31 |
| 537 | 7.3.1.1.3 | D.An.: End | milestone | 0d | 2012-07-31 | 2012-07-31 | 536 |  |  | 2012-07-31 | 2012-07-31 | 0d | 0d |  |
| 538 | 7.3.2 | **Development - BUS** |  | 64d | 2012-08-01 | 2012-10-31 |  |  |  | 2012-08-01 | 2012-10-31 | 64d | 0d |  |
| 539 | 7.3.2.1 | DE.BUS.021: Opening of new Rubriques |  | 19d | 2012-09-04 | 2012-09-28 | 536FS+23d |  |  | 2012-09-04 | 2012-09-28 | 19d | 0d |  |
| 540 | 7.3.2.2 | DE.BUS.022: Produce reconciliation |  | 64d | 2012-08-01 | 2012-10-31 | 536 |  |  | 2012-08-01 | 2012-10-31 | 64d | 0d |  |
| 541 | 7.3.2.3 | DE.BUS : End | milestone | 0d | 2012-10-31 | 2012-10-31 | 540 |  |  | 2012-10-31 | 2012-10-31 | 0d | 0d |  |
| 542 | 7.3.3 | **Testing - BUS** |  | 37d | 2012-11-01 | 2012-12-28 |  |  |  | 2012-11-01 | 2012-12-28 | 37d | 0d |  |
| 543 | 7.3.3.1 | TE.BUS.010: Test Strategy |  | 21d | 2012-11-01 | 2012-11-30 |  |  |  | 2012-11-01 | 2012-11-30 | 21d | 0d | start no earlier than 2012-11-01 |
| 544 | 7.3.3.2 | TE.BUS.080: User Acceptance Testing |  | 37d | 2012-11-01 | 2012-12-28 | 543SS |  |  | 2012-11-01 | 2012-12-28 | 37d | 0d |  |
| 545 | 7.3.3.3 | TE.BUS.100: Defect Management |  | 37d | 2012-11-01 | 2012-12-28 | 543SS, 544FF |  |  | 2012-11-01 | 2012-12-28 | 37d | 0d |  |
| 546 | 7.3.3.4 | TE.BUS: End | milestone | 0d | 2012-12-28 | 2012-12-28 | 545 |  |  | 2012-12-28 | 2012-12-28 | 0d | 0d |  |
| 547 | 7.3.4 | **MEP - BUS** |  | 21d | 2013-01-03 | 2013-01-31 |  |  |  | 2013-01-03 | 2013-01-31 | 21d | 0d |  |
| 548 | 7.3.4.1 | MEP.BUS.010: Deployement |  | 21d | 2013-01-03 | 2013-01-31 | 546 |  |  | 2013-01-03 | 2013-01-31 | 21d | 0d |  |

| ID | WBS | Task | Type | Duration | Start | Finish | Predecessors | Complete | Remaining | Baseline start | Baseline finish | Baseline duration | Total slack | Constraint |
| --- | --- | --- | --- | --- | --- | --- | --- | --- | --- | --- | --- | --- | --- | --- |
| 549 | 7.4 | **Appendix 3: Main feature of capital instruments** |  | 219.93d | 2012-03-12 A | 2013-01-31 |  | 40% | 131.23d | 2012-03-12 | 2013-01-31 | 219d | 0d |  |
| 550 | 7.4.1 | **Detailled Analysis - BUS** |  | 15d | 2012-03-12 A | 2012-03-30 A |  | 100% |  | 2012-03-12 | 2012-03-30 | 15d |  |  |
| 551 | 7.4.1.1 | **D.An.BUS.020: Impact Analysis** |  | 15d | 2012-03-12 A | 2012-03-30 A |  | 100% |  | 2012-03-12 | 2012-03-30 | 15d |  |  |
| 552 | 7.4.1.1.1 | D.An.BUS.023.1: Read Appendix 3 and p.8 of BIS requirements |  | 15d | 2012-03-12 A | 2012-03-30 A |  | 100% |  | 2012-03-12 | 2012-03-30 | 15d |  | start no earlier than 2012-03-12 |
| 553 | 7.4.1.1.2 | D.An.: End | milestone | 0d | 2012-03-30 A | 2012-03-30 A | 552 | 100% |  | 2012-03-30 | 2012-03-30 | 0d |  |  |
| 554 | 7.4.2 | **Development - BUS** |  | 146d | 2012-04-02 A | 2012-10-31 |  | 40% | 87.6d | 2012-04-02 | 2012-10-31 | 146d | 0d |  |
| 555 | 7.4.2.1 | DE.BUS.030: Produce information needed |  | 146d | 2012-04-02 A | 2012-10-31 | 553 | 40% | 87.6d | 2012-04-02 | 2012-10-31 | 146d | 0d |  |
| 556 | 7.4.2.2 | DE.BUS : End | milestone | 0d | 2012-10-31 | 2012-10-31 | 555 |  |  | 2012-10-31 | 2012-10-31 | 0d | 0d |  |
| 557 | 7.4.3 | **MEP - BUS** |  | 21d | 2013-01-03 | 2013-01-31 |  |  |  | 2013-01-03 | 2013-01-31 | 21d | 0d |  |
| 558 | 7.4.3.1 | MEP.BUS.010: Deployement |  | 21d | 2013-01-03 | 2013-01-31 |  |  |  | 2013-01-03 | 2013-01-31 | 21d | 0d | start no earlier than 2013-01-03 |
| 559 | 8 | **Production cycle Impact Analysis** |  | 133d | 2012-04-30 A | 2012-11-07 |  | 25% | 99.75d | 2012-03-19 | 2012-11-07 | 161d | 0d |  |
| 560 | 8.1 | **Impact Analysis P3.1** |  | 5d | 2012-05-18 A | 2012-05-25 A |  | 100% |  | 2012-04-05 | 2012-04-05 | 1d |  |  |
| 561 | 8.1.1 | IA.020: Architecture |  | 5d | 2012-05-18 A | 2012-05-25 A | 582 | 100% |  | 2012-04-05 | 2012-04-05 | 1d |  | start no earlier than 2012-05-18 |
| 562 | 8.2 | **Impact Analysis P11** |  | 5d | 2012-04-30 A | 2012-05-04 A |  | 100% |  | 2012-03-19 | 2012-04-03 | 12d |  |  |
| 563 | 8.2.1 | IA.010: SRD |  | 5d | 2012-04-30 A | 2012-05-04 A | 106FS+12d | 100% |  | 2012-03-28 | 2012-04-03 | 5d |  |  |
| 564 | 8.2.2 | IA.020: Architecture |  | 5d | 2012-04-30 A | 2012-05-04 A |  | 100% |  | 2012-03-19 | 2012-03-23 | 5d |  | start no earlier than 2012-04-13 |
| 565 | 8.3 | **Impact Analysis P3.2** |  | 11d | 2012-06-05 | 2012-06-19 |  |  |  | 2012-04-30 | 2012-05-30 | 22d | 0d |  |
| 566 | 8.3.1 | IA.010: SRD |  | 5d | 2012-06-05 | 2012-06-11 | 132 |  |  | 2012-04-30 | 2012-05-04 | 5d | 0d |  |
| 567 | 8.3.2 | IA.020: Architecture |  | 5d | 2012-06-13 | 2012-06-19 | 137 |  |  | 2012-05-24 | 2012-05-30 | 5d | 0d |  |
| 568 | 8.4 | **Impact P4** |  | 15d | 2012-08-15 | 2012-09-05 |  |  |  | 2012-08-27 | 2012-09-17 | 15d | 0d |  |
| 569 | 8.4.1 | IA.010: SRD |  | 5d | 2012-08-15 | 2012-08-21 | 170 |  |  | 2012-09-11 | 2012-09-17 | 5d | 0d |  |
| 570 | 8.4.2 | IA.020: Architecture |  | 5d | 2012-08-29 | 2012-09-05 | 175 |  |  | 2012-08-27 | 2012-08-31 | 5d | 0d |  |
| 571 | 8.5 | **Impact P5 - P2** |  | 20d | 2012-06-08 | 2012-07-09 |  |  |  | 2012-04-23 | 2012-04-27 | 5d | 0d |  |
| 572 | 8.5.1 | IA.010: SRD V3.5 |  | 5d | 2012-06-08 | 2012-06-14 |  |  |  | 2012-04-23 | 2012-04-27 | 5d | 0d | start no earlier than 2012-06-08 |
| 573 | 8.5.2 | IA.010: SRD V4 |  | 5d | 2012-07-03 | 2012-07-09 |  |  |  |  |  |  | 0d | start no earlier than 2012-07-03 |
| 574 | 8.5.3 | IA.010: SRD V5 |  | 5d | 2012-07-03 | 2012-07-09 | 216 |  |  |  |  |  | 0d |  |

| ID | WBS | Task | Type | Duration | Start | Finish | Predecessors | Complete | Remaining | Baseline start | Baseline finish | Baseline duration | Total slack | Constraint |
| --- | --- | --- | --- | --- | --- | --- | --- | --- | --- | --- | --- | --- | --- | --- |
| 575 | 8.6 | **Impact P7** |  | 5d | 2012-06-08 | 2012-06-14 |  |  |  | 2012-04-30 | 2012-05-07 | 5d | 0d |  |
| 576 | 8.6.1 | IA.010: SRD |  | 5d | 2012-06-08 | 2012-06-14 |  |  |  | 2012-04-30 | 2012-05-07 | 5d | 0d | start no earlier than 2012-06-08 |
| 577 | 8.7 | **Impact P9** |  | 5d | 2012-11-01 | 2012-11-07 |  |  |  | 2012-11-01 | 2012-11-07 | 5d | 0d |  |
| 578 | 8.7.1 | IA.030: CCR - MEP BUS: Policy Integration |  | 5d | 2012-11-01 | 2012-11-07 | 512 |  |  | 2012-11-01 | 2012-11-07 | 5d | 0d |  |
| 579 | 9 | **Inter-Projects** |  | 87.93d | 2012-02-06 A | 2012-06-11 |  | 99% | 0d | 2012-02-20 | 2012-10-04 | 157d | 0d |  |
| 580 | 9.1 | **Scon** |  | 87.93d | 2012-02-06 A | 2012-06-11 |  | 99% | 0d | 2012-02-20 | 2012-06-19 | 83d | 0d |  |
| 581 | 9.1.1 | **Detailled Architecture** |  | 66.93d | 2012-02-06 A | 2012-05-09 A |  | 100% |  |  |  |  |  |  |
| 582 | 9.1.1.1 | D.Ar010: Detailled Architecture |  | 59d | 2012-02-06 A | 2012-04-30 A |  | 100% |  |  |  |  |  | finish no earlier than 2012-04-20 |
| 583 | 9.1.1.2 | D.Ar.020:ARB |  | 1d | 2012-05-09 A | 2012-05-09 A |  | 100% |  |  |  |  |  | start no earlier than 2012-05-09 |
| 584 | 9.1.2 | **Env. Development** |  | 15d | 2012-02-20 A | 2012-03-09 A |  | 100% |  | 2012-02-20 | 2012-03-09 | 15d |  |  |
| 585 | 9.1.2.1 | ED.010: POC ALGO |  | 15d | 2012-02-20 A | 2012-03-09 A |  | 100% |  | 2012-02-20 | 2012-03-09 | 15d |  | start no earlier than 2012-02-20 |
| 586 | 9.1.3 | **Env. Pré-Prod** |  | 0d | 2012-06-06 A | 2012-06-06 |  |  | 0d | 2012-06-06 | 2012-06-06 | 0d | 0d |  |
| 587 | 9.1.3.1 | EPP.010: ALGO Server configured | milestone | 0d | 2012-06-06 A | 2012-06-06 | 94FS-15d | 80% | 0d | 2012-06-06 | 2012-06-06 | 0d | 0d |  |
| 588 | 9.1.4 | **Env. Production** |  | 0d | 2012-06-11 A | 2012-06-11 |  |  | 0d | 2012-06-19 | 2012-06-19 | 0d | 0d |  |
| 589 | 9.1.4.1 | EP.010: ALGO Server configured | milestone | 0d | 2012-06-11 A | 2012-06-11 | 99FS-16d | 80% | 0d | 2012-06-19 | 2012-06-19 | 0d | 0d | start no earlier than 2012-06-11 |
| 590 | 10 | Project : End | milestone | 0d | 2013-01-31 | 2013-01-31 |  |  |  | 2013-01-31 | 2013-01-31 | 0d | 0d | start no earlier than 2013-01-31 |

Notes:
- 579: *Schedule Connect: [28]UID=RN$(%$PV06%$:U-&\E0QR'@0[11]PUN=SE-1493[8]TUID=360[27]PUID=inv_investments5000601
- 580: *Schedule Connect: [28]UID=RNP59E])_-'TJ8P_/^,(V$Q0[11]PUN=SE-1493[8]TUID=327[27]PUID=inv_investments5000601
- 585: *Schedule Connect: [28]UID=RN=%K#7>%K_4>-J62F9M.$^@[11]PUN=SE-1493[8]TUID=329[27]PUID=inv_investments5000601
- 590: *Schedule Connect: [28]UID=RNV,P.-..PJDNP,W2OREYVR@[11]PUN=SE-1493[8]TUID=382[27]PUID=inv_investments5000601
