# MAX_23042013

Schedule from MS Project, 2013-06-03 to 2014-02-11, costs in $, A marks actual dates.
Accenture

## Calendars

- Standard: Mon-Fri 08:00-12:00, 13:00-17:00; Sat-Sun off.

## Resources

| Resource | Rate |
| --- | --- |
| Tolambiya, Shailendra | 1 |
| Prasad Bomburey, Satya | 1 |
| Merwade, Mahesh | 1 |
| Pimpin, Lionel | 1 |
| Mokhchane, Fahde | 1 |
| Kaidali, Adlane | 1 |
| Sivajirao, Ketharnath | 1 |
| Ostwal, Manish (OUT sera remplacé par Anand Tukaram Gawali) | 1 |
| Hartley, David | 1 |
| OUT CRM_SENIOR_1 (dev ACCON1) | 1 |
| Kalivarapu, Sai Krishna | 1 |
| Bhandari, Himanshu | 1 |
| Kumar Sahoo, Saroj | 1 |
| Shafai, Ramin | 1 |
| Sarkar, Javed | 1 |
| ***SERA OUT si coupure demandé par Gina-------CRM_INTERMEDIATE2 (dev ACN_OFF1) | 1 |
| Reddy, Nithin | 1 |
| Halali, Sreekanth | 1 |
| Gaju, Javesh | 1 |
| Vallanda, Rohan Poovaiah | 1 |
| Kumar, Nitin | 1 |
| (CRM_SENIOR_5) ACN_ON1 601a | 1 |
| TINA - pranjal gupta (ACN_OFF1) | 1 |
| Verma, Vinay | 1 |
| Thomas, Jolsna Joy | 1 |
| Sharma, Jayanti | 1 |
| Sriram Sarath, Nandula (termine 22 dec) | 1 |
| Venkata, Raghavendra | 1 |
| Venkata, Malik | 1 |
| Iyengar, Raghunath | 1 |
| Abraham, Jimjees | 1 |
| Nagaraj, Suresh | 1 |
| Ta, Bach Sim | 1 |
| Surtalova, Stanislova | 1 |
| NN, Ramesh | 1 |
| Guthikonda, Madhu |  |
| Translation group SME (conserve banque mais on ne sait pas si cette équipe va charger ou non les hrs dans planview) | 1 |
| BA Translation | 1 |
| Girard, Claude | 1 |
| Burns, Mélanie | 1 |
| Millette, Annie | 1 |
| Beaumier, Caroline | 1 |
| Legault, Chantal | 1 |
| Paulin, Chantal | 1 |
| Generic Business SME (conserve banque mais on ne sait pas si cette équipe va charger ou non les hrs dans planview) | 1 |
| Lariviere, Isabelle | 1 |
| Bergeron, Jean-Philippe | 1 |
| Haziza, Jonathan | 1 |
| Vautour, Liza | 1 |
| Guindon, Marie-Josée | 1 |
| Paradis, Mathieu (OUT) | 1 |
| Piquette, Maxime | 1 |
| Girard, Nathalie | 1 |
| Lapointe, MarieJosee (en remplacement de Archambault, Philippe) | 1 |
| Francoeur, Ruth | 1 |
| Tremblay, Valerie (non créé dans planview mais je crois qu'elle ne va pas charger d'heure au projet via planview donc à voir plus tard si coupe ou non) | 1 |
| EN ATTENTE de création du compte planview Rajani Putha NBC_WORKFLOW_1 (dev ACN_OFF1) | 1 |
| Priyambada, Suprita | 1 |
| Mistri, Harish | 1 |
| Sandra, Prasad | 1 |
| Rahane, Samir | 1 |
| Missy, Vincent | 1 |
| CRM_INTERMEDIATE_5 ACN_OFF1 | 1 |
| Thomassin, Stephane | 1 |
| ***SERA OUT si coupure demandée par Gina-------CRM_INTERMEDIATE_6 ACN_OFF1 | 1 |
| Adobe_junior_3 ACN_OFF1 | 1 |
| Kambeli, Venkat Rao | 1 |
| Kakarla, Kishore OUT |  |
| Polu, Ravi Kiran OUT |  |
| Generic ACCON ACN_ON1 | 1 |
| How-Choong, Bertrand OUT | 1 |
| Morissette, Yves | 1 |
| Miner, Bob |  |
| Shelat, Krishna |  |
| Doré, Jean-Francois | 1 |
| Bradai, Yacine | 1 |
| Trudel, Liette | 1 |
| Henri, Sébastien | 1 |
| Acharya, Chinta | 1 |
| Victor, Soledad | 1 |
| Laperriere, Benoit | 1 |
| Valenciarojas, Edison | 1 |
| Duperron, Gaetan | 1 |
| Leonard, Jean-Rubin OUT | 1 |
| Cella, Maria | 1 |
| Huu Nguyen, Thai-Binh | 1 |
| Kacham, Santosh | 1 |
| Kumar, Abhimanyu | 1 |
| Sreekumar, Sreejith | 1 |
| Tetreault, Edouard | 1 |
| Bogharian, Nora (OUT, est dans Release Mgmt) | 1 |
| Merdinian, Mike (-37,5h car stephane charge à la place) OUT mgmt | 1 |
| Adotevi, Ophelia | 1 |
| Lafrance, Frederic | 1 |
| Martel, Sylvain | 1 |
| Gauthier, Stephane (error past- gauthier charge ici mais pas Mike) | 1 |
| TukaramGawali, Anand (remplace Ostwal, Manish) | 1 |
| Djerfaf, Abdelhamid (Banque de temps) | 1 |

## Schedule

| ID | WBS | Task | Duration | Start | Finish | Predecessors | Complete | Remaining | Baseline start | Baseline finish | Baseline duration | Total slack | Free slack | Constraint | Resources | Work | Actual work | Cost | Actual cost | work_091113 |
| --- | --- | --- | --- | --- | --- | --- | --- | --- | --- | --- | --- | --- | --- | --- | --- | --- | --- | --- | --- | --- |
| 1 | 1 | **R2.1 Build SAP Project** | 182d? | 2013-06-03 A | 2014-02-11 |  | 48% | 94.38d? | 2013-06-03 | 2014-01-17 | 0d | 0d |  |  |  | 62615.2h | 23460.8h | 60,663.75 | 22,291.25 | 7,925.43 days |
| 2 | 1.1 | **Transversal Activities** | 170d | 2013-06-03 A | 2014-01-24 |  | 43% | 97.05d | 2013-06-03 | 2014-01-17 | 0d | 12d |  |  |  | 17799.8h | 8084.75h | 16,749.74 | 7,634.75 | 2,220.34 days |
| 3 | 1.1.1 | **Translation Config/Legacy Error** | 110d | 2013-08-26 A | 2014-01-24 |  | 7% | 102.01d | 2013-06-17 | 2014-01-17 | 0d? | 12d |  |  |  | 465.5h | 45h | 465.5 | 45 | 58.5 days |
| 4 | 1.1.1.1 | **Translation - Config/UI (Translation: regions, state code…)** | 110d | 2013-08-26 | 2014-01-24 |  |  |  |  |  |  | 12d |  |  |  | 264h |  | 264 |  | 33 days |
| 5 | 1.1.1.1.1 | BUD 1 – Dev (SME Translation) | 40d | 2013-08-26 | 2013-12-06 |  |  |  |  |  |  | 12d | 0d | start no earlier than 2013-08-26 | Tetreault, Edouard [12.5%]; Translation group SME (conserve banque mais on ne sait pas si cette équipe va charger ou non les hrs dans planview) [46.2%] | 188h |  | 188 |  | 23.5 days |
| 6 | 1.1.1.1.2 | BUD 1 – FUT/IT (SME Translation) | 35d | 2013-12-09 | 2014-01-24 | 5 |  |  |  |  |  | 12d |  | finish no earlier than 2014-01-24 | Tetreault, Edouard [11.4%]; Translation group SME (conserve banque mais on ne sait pas si cette équipe va charger ou non les hrs dans planview) [15.7%] | 76h |  | 76 |  | 9.5 days |
| 7 | 1.1.1.2 | **Translation - Legacy Error Messages** | 60d | 2013-09-23 A | 2013-12-13 |  | 15% | 51.05d | 2013-07-01 | 2013-09-20 | 0d? | 30d |  | start no earlier than 2013-07-15 |  | 201.5h | 45h | 201.5 | 45 | 25.5 days |
| 8 | 1.1.1.2.1 | Translation - Legacy Error Messages - Enhancement (Need to be clarified ) | 21.25d | 2013-09-23 A | 2013-10-31 |  | 26% | 15.62d | 2013-08-05 | 2013-08-23 | 0d? | 61d |  | start no earlier than 2013-10-01 | Thomassin, Stephane [26.9%] | 40h | 7.5h | 40 | 7.5 | 5 days |
| 9 | 1.1.1.2.2 | Translation - Legacy Error Messages - Text translation | 50d | 2013-09-23 A | 2013-12-13 |  | 10% | 45d | 2013-07-01 | 2013-09-20 | 0d? | 30d |  | start no earlier than 2013-08-19 | BA Translation [150%]; Tetreault, Edouard [1.1%]; Translation group SME (conserve banque mais on ne sait pas si cette équipe va charger ou non les hrs dans planview) [12.5%]; Girard, Claude [14.3%]; Duperron, Gaetan [500%]; Burns, Mélanie [11.1%]; Merdinian, Mike (-37,5h car stephane charge à la place) OUT mgmt [0.6%]; Gauthier, Stephane (error past- gauthier charge ici mais pas Mike) [93.8%] | 161.5h | 37.5h | 161.5 | 37.5 | 20.5 days |
| 10 | 1.1.2 | **BA/SME Support** | 115d | 2013-08-19 A | 2014-01-24 |  | 39% | 70.01d | 2013-08-12 | 2014-01-17 | 0d? | 12d |  |  |  | 6096.5h | 1746.5h | 6,096.5 | 1,746.5 | 750.88 days |
| 11 | 1.1.2.1 | BA | 130.37d | 2013-08-19 A | 2014-01-24 |  | 43% | 74.37d | 2013-08-12 | 2014-01-24 | 0d? | 12.63d |  | start no earlier than 2013-08-19 | Girard, Claude [106.7%]; Burns, Mélanie [109.8%]; Duperron, Gaetan [108.4%] | 2457.5h | 602.5h | 2,457.5 | 602.5 | 327.56 days |
| 12 | 1.1.2.2 | SME | 115d | 2013-08-19 A | 2014-01-24 |  | 35% | 75d | 2013-08-12 | 2014-01-24 | 0d? | 12d |  | finish no earlier than 2014-01-24 | Millette, Annie [8.1%]; Beaumier, Caroline [53.5%]; Legault, Chantal [107.5%]; Paulin, Chantal [80%]; Generic Business SME (conserve banque mais on ne sait pas si cette équipe va charger ou non les hrs dans planview) [32.4%]; Lariviere, Isabelle [8.1%]; Bergeron, Jean-Philippe [57.5%]; Haziza, Jonathan [31.9%]; Vautour, Liza [55%]; Guindon, Marie-Josée [22.1%]; Paradis, Mathieu (OUT) [37.5%]; Piquette, Maxime [32.4%]; Girard, Nathalie [90%]; Lapointe, MarieJosee (en remplacement de Archambault, Philippe) [93.8%]; Francoeur, Ruth [112.5%]; Tremblay, Valerie (non créé dans planview mais je crois qu'elle ne va pas charger d'heure au projet via planview donc à voir plus tard si coupe ou non) [4.1%]; Bogharian, Nora (OUT, est dans Release Mgmt) [93.8%]; Adotevi, Ophelia [93.8%]; Lafrance, Frederic [30%] | 3639h | 1144h | 3,639 | 1,144 | 423.31 days |
| 13 | 1.1.3 | **Configuration Transversal Activities** | 140d | 2013-07-08 A | 2014-01-17 |  | 34% | 92.98d | 2013-06-17 | 2013-11-29 | 0d | 17d |  |  |  | 2327h | 756h | 1,367 | 396 | 285 days |
| 14 | 1.1.3.1 | **2.1 Org Structure** | 113.4d | 2013-07-08 A | 2013-12-12 |  | 37% | 71.95d | 2013-06-17 | 2013-08-23 | 0d | 43.6d |  |  |  | 410h | 147h | 410 | 147 | 50 days |
| 15 | 1.1.3.1.1 | Org Build/Changes | 68.4d | 2013-07-08 A | 2013-12-12 |  | 37% | 43.4d | 2013-06-17 | 2013-08-23 | 0d | 43.6d |  |  | Venkata, Malik | 410h | 147h | 410 | 147 | 50 days |
| 16 | 1.1.3.2 | **UI Translation** | 135d | 2013-07-15 A | 2014-01-17 |  | 22% | 104.66d | 2013-06-17 | 2013-10-18 | 0d | 17d |  | start no earlier than 2013-07-15 |  | 720h | 146h | 720 | 146 | 90 days |
| 17 | 1.1.3.2.1 | Translation Activity/Technical (new fields, new screens, domain values, messages, customizing) - FUT1- | 41d | 2013-07-15 A | 2013-11-11 |  | 49% | 21d |  |  |  | 18d | 0d | finish no earlier than 2013-10-04 | Surtalova, Stanislova [103.6%] | 320h | 146h | 320 | 146 | 40 days |
| 18 | 1.1.3.2.2 | Translation Activity/Technical (new fields, new screens, domain values, messages, customizing) - FUT2- | 29d | 2013-11-12 | 2013-12-20 | 17 |  |  |  |  |  | 18d | 1d | finish no earlier than 2013-12-06 | Surtalova, Stanislova [103.4%] | 240h |  | 240 |  | 30 days |
| 19 | 1.1.3.2.3 | Translation Activity/Technical (new fields, new screens, domain values, messages, customizing) -IT- | 19d | 2013-12-24 | 2014-01-17 | 18 |  |  |  |  |  | 17d |  | finish no earlier than 2014-01-17 | Surtalova, Stanislova [105.3%] | 160h |  | 160 |  | 20 days |
| 20 | 1.1.3.3 | **Security** | 135d | 2013-07-15 A | 2014-01-17 |  | 39% | 82.17d | 2013-06-17 | 2013-11-29 | 0d | 17d |  | start no earlier than 2013-07-15 |  | 960h | 360h |  |  | 120 days |
| 21 | 1.1.3.3.1 | Completed--------Consolidate Security Requirements from all FS incl Extended scope | 15d | 2013-07-15 A | 2013-08-30 A |  | 100% |  | 2013-06-17 | 2013-07-05 | 0d |  |  |  | Guthikonda, Madhu | 120h | 120h |  |  | 15 days |
| 22 | 1.1.3.3.2 | Completed--------Security TS For Auth Objects | 15d | 2013-09-02 A | 2013-09-20 A | 21 | 100% |  | 2013-07-08 | 2013-07-26 | 0d |  |  |  | Guthikonda, Madhu | 120h | 120h |  |  | 15 days |
| 23 | 1.1.3.3.3 | Security BUD1 | 60d | 2013-09-23 A | 2013-12-13 | 22 | 25% | 45d | 2013-07-29 | 2013-10-18 | 0d | 17d | 0d |  | Guthikonda, Madhu | 480h | 120h |  |  | 60 days |
| 24 | 1.1.3.3.4 | Alignment of all roles to include Auth objects | 25d | 2013-12-16 | 2014-01-17 | 23 |  |  | 2013-10-21 | 2013-11-29 | 0d | 17d |  |  | Guthikonda, Madhu [120%] | 240h |  |  |  | 30 days |

Notes:
- 2: ? For PM: Si question, voir Daniel
- 3: ? For PM: under the baseline car nous avons réduit de -156h suite au leveling de la ressource M Tetreault
- 4: ? For PM: Nous conservons les generics car nous ne savons toujours pas si elles vont utiliser planview pour saisir leurs feuilles de temps ou non (proviennemt d'un autre departement)
- 8: ? For PM: Changement de dates, maintenant du 1er au 31 octobre
- 9: ? For PM: Nouvelle date de fin: 13 decembre //Nous conservons les generics car nous ne savons toujours pas si elles vont utiliser planview pour saisir leurs feuilles de temps ou non (proviennemt d'un autre departement)
- 10: ? For PM: Si question, voir Daniel
- 13: ? For PM: Si question, voir Chris
- 15: ? For PM: Nouvelle date de fin: 13 Decembre
- 16: ? For PM: TO DO: valider si le FUT 1 est terminé… en attende de la réponse, laisser glisser les dates en respectant le 104% env de la ressource

| ID | WBS | Task | Type | Duration | Start | Finish | Predecessors | Complete | Remaining | Baseline start | Baseline finish | Baseline duration | Total slack | Constraint | Resources | Work | Actual work | Cost | Actual cost | work_091113 | type of Deliverable |
| --- | --- | --- | --- | --- | --- | --- | --- | --- | --- | --- | --- | --- | --- | --- | --- | --- | --- | --- | --- | --- | --- |
| 25 | 1.1.3.4 | **PI - Configuration** |  | 110d | 2013-07-15 A | 2013-12-13 |  | 36% | 70.71d | 2013-07-15 | 2013-08-16 | 0d | 42d |  |  | 237h | 103h | 237 | 103 | 25 days |  |
| 26 | 1.1.3.4.1 | Domain Value Mapping |  | 70d | 2013-07-15 A | 2013-12-13 |  | 36% | 45d | 2013-07-15 | 2013-08-16 | 0d | 42d | start no earlier than 2013-07-15 | Merwade, Mahesh [18.6%]; Kalivarapu, Sai Krishna [20.9%]; Missy, Vincent [54.4%] | 237h | 103h | 237 | 103 | 25 days |  |
| 27 | 1.1.4 | **Resources Ramp-Up** |  | 112.62d | 2013-06-03 A | 2013-11-06 |  | 86% | 15.47d | 2013-06-03 | 2013-08-15 | 0d | 57.38d |  |  | 2559h | 2391h | 2,469 | 2,301 | 331.25 days |  |
| 28 | 1.1.4.1 | Completed--------Deep Dive Walkthrough |  | 11.25d | 2013-07-01 A | 2013-07-18 A |  | 100% |  | 2013-06-27 | 2013-07-12 | 0d |  | finish no earlier than 2013-07-12 | Kaidali, Adlane [60%]; Gaju, Javesh [60%]; Merwade, Mahesh [30%]; Prasad Bomburey, Satya; Tolambiya, Shailendra [27.5%]; Shafai, Ramin [80%]; Kalivarapu, Sai Krishna [30%]; Cella, Maria [40%]; Sharma, Jayanti [30%]; Hartley, David [128.6%] | 180h | 180h | 180 | 180 | 22.5 days |  |
| 29 | 1.1.4.2 | Completed--------Ramp-Up_June |  | 33.75d | 2013-06-03 A | 2013-07-15 A |  | 100% |  | 2013-06-17 | 2013-07-03 | 0d |  | start no earlier than 2013-06-17 | Reddy, Nithin; Sarkar, Javed; ***SERA OUT si coupure demandé par Gina-------CRM_INTERMEDIATE2 (dev ACN_OFF1); Merwade, Mahesh; Kumar Sahoo, Saroj; Halali, Sreekanth; Shafai, Ramin [80%]; Kakarla, Kishore OUT [112.5%]; Kambeli, Venkat Rao; Kumar, Nitin [88.9%]; Verma, Vinay; Cella, Maria [40%]; Huu Nguyen, Thai-Binh [30%] | 752h | 752h | 662 | 662 | 94 days |  |
| 30 | 1.1.4.3 | Completed--------Ramp-Up_July |  | 27d | 2013-07-01 A | 2013-08-02 A |  | 100% |  | 2013-07-01 | 2013-07-10 | 0d |  | start no earlier than 2013-07-01 | Vallanda, Rohan Poovaiah; Merwade, Mahesh [87.5%]; Rahane, Samir [133.3%]; How-Choong, Bertrand OUT [20%]; Mistri, Harish [80%]; Prasad Bomburey, Satya [0.6%]; Venkata, Raghavendra; Sharma, Jayanti [141.7%]; Verma, Vinay; Kambeli, Venkat Rao; Sarkar, Javed [34.4%] | 471h | 471h | 471 | 471 | 58.88 days |  |
| 31 | 1.1.4.4 | Completed--------Ramp-Up_August |  | 30.12d | 2013-08-01 A | 2013-09-09 A |  | 100% |  | 2013-08-01 | 2013-08-15 | 0d |  | start no earlier than 2013-08-01 | OUT CRM_SENIOR_1 (dev ACCON1) [44.9%]; Kumar Sahoo, Saroj [281.2%]; Sriram Sarath, Nandula (termine 22 dec) [120%]; Sandra, Prasad [86.7%]; TINA - pranjal gupta (ACN_OFF1) [1499.9%]; Vallanda, Rohan Poovaiah [86.7%]; Kambeli, Venkat Rao; Verma, Vinay; Venkata, Raghavendra; Prasad Bomburey, Satya [125%]; Priyambada, Suprita [450%]; Kacham, Santosh [112.5%]; Kumar, Abhimanyu [112.5%]; Sreekumar, Sreejith [112.5%] | 783h | 783h | 783 | 783 | 115.88 days |  |
| 32 | 1.1.4.5 | Ramp-Up_September-Oct |  | 41.62d | 2013-09-09 A | 2013-11-06 |  | 53% | 19.75d |  |  |  | 57.38d | start no earlier than 2013-09-02 | Cella, Maria [45%]; Sharma, Jayanti [637.5%]; Thomas, Jolsna Joy; CRM_INTERMEDIATE_5 ACN_OFF1 [1000%]; EN ATTENTE de création du compte planview Rajani Putha NBC_WORKFLOW_1 (dev ACN_OFF1) [57%] | 373h | 205h | 373 | 205 | 40 days |  |
| 33 | 1.1.5 | ABUI Assembly |  | 21d | 2013-09-23 A | 2013-12-11 | 109, 110, 111 | 54% | 9.75d | 2013-11-29 | 2013-12-11 | 0d | 32.25d | start no earlier than 2013-11-25 | Bhandari, Himanshu [43.6%]; Venkata, Raghavendra [82.2%] | 80h | 46h | 80 | 46 | 10 days |  |
| 34 | 1.1.6 | Completed--------Extended Scope Reviews |  | 31.12d | 2013-08-12 A | 2013-09-02 A |  | 100% |  | 2013-07-08 | 2013-07-31 | 0d |  | start no earlier than 2013-08-12 | (CRM_SENIOR_5) ACN_ON1 601a [346.4%]; Bhandari, Himanshu; Venkata, Raghavendra | 158h | 158h | 158 | 158 | 19.75 days |  |
| 35 | 1.1.7 | Data PI Stubbing |  | 44.88d | 2013-09-06 A | 2013-11-29 |  | 13% | 39.25d | 2013-08-12 | 2013-12-13 | 0d | 40d | start no earlier than 2013-09-06 | Priyambada, Suprita | 320h | 45h | 320 | 45 | 40 days |  |
| 36 | 1.1.8 | Deployment Activities (Isolated R2.1) |  | 24d | 2013-11-25 | 2013-12-24 |  |  |  | 2013-12-03 | 2013-12-20 | 0d | 761.01d | start no earlier than 2013-11-25 | Kumar, Nitin [62.5%] | 120h |  | 120 |  | 15 days |  |
| 37 | 1.1.9 | SAP PSO Leadership |  | 179d | 2013-06-17 A | 2014-01-24 |  | 53% | 83.62d | 2013-06-17 | 2014-01-24 | 0d | 12.62d | finish no earlier than 2014-01-24 | Mokhchane, Fahde [107.6%]; Ostwal, Manish (OUT sera remplacé par Anand Tukaram Gawali) [125%]; Pimpin, Lionel [30%]; Sivajirao, Ketharnath [75%]; Thomassin, Stephane [99%]; Iyengar, Raghunath [120%]; Nagaraj, Suresh [95%]; TukaramGawali, Anand (remplace Ostwal, Manish) [113.4%] | 4493.75h | 2293.25h | 4,493.75 | 2,293.25 | 549.97 days |  |
| 38 | 1.1.10 | Functional / Technical Lead (Quality Assurance) |  | 159.81d | 2013-06-17 A | 2014-01-24 |  | 53% | 74.81d | 2013-06-17 | 2014-01-17 | 0d | 737.58d |  | NN, Ramesh [107.5%] | 1180h | 604h | 1,180 | 604 | 160 days |  |
| 39 | 1.2 | **Completed--------Pre-Build Unit Delivery** |  | 60d | 2013-06-10 A | 2013-09-01 A |  | 100% |  | 2013-06-14 | 2013-08-20 | 0d |  |  |  | 2401h | 2401h | 2,214.5 | 2,214.5 | 300.13 days |  |
| 40 | 1.2.1 | Completed--------Pre-Build Support (QA, Prioritization, Triage, Technical Expertise) |  | 76d | 2013-06-17 A | 2013-09-01 A |  | 100% |  | 2013-06-17 | 2013-08-14 | 0d |  |  | CRM_INTERMEDIATE_5 ACN_OFF1 [107.8%]; ***SERA OUT si coupure demandé par Gina-------CRM_INTERMEDIATE2 (dev ACN_OFF1) [82.1%]; Halali, Sreekanth [125%]; Kumar Sahoo, Saroj [77.5%]; Sarkar, Javed; Kumar, Nitin [125%]; (CRM_SENIOR_5) ACN_ON1 601a [188.2%]; Kakarla, Kishore OUT [112.5%]; Reddy, Nithin [125%]; Verma, Vinay [125%]; Kambeli, Venkat Rao [125%]; Merwade, Mahesh [70%]; Polu, Ravi Kiran OUT [14.1%]; Rahane, Samir; Venkata, Raghavendra [12.5%]; Kacham, Santosh [112.5%]; Kumar, Abhimanyu [112.5%]; Sreekumar, Sreejith [112.5%]; Bhandari, Himanshu [44.4%] | 1999.5h | 1999.5h | 1,813 | 1,813 | 249.94 days |  |
| 41 | 1.2.2 | **Completed--------Pre-Build CRM - AP355 Enhancement** |  | 56d | 2013-06-10 A | 2013-08-26 A |  | 100% |  | 2013-06-14 | 2013-08-20 | 0d |  |  |  | 248h | 248h | 248 | 248 | 31 days |  |
| 42 | 1.2.2.1 | **Completed--------Pre-Build CRM - Enhancement - FOUNDATION** |  | 56d | 2013-06-10 A | 2013-08-26 A |  | 100% |  | 2013-06-14 | 2013-08-20 | 0d |  |  |  | 248h | 248h | 248 | 248 | 31 days |  |
| 43 | 1.2.2.1.1 | **Completed--------FS-ENH-AO-0014-Foundn_PSO_MATRIX-R2.1** |  | 56d | 2013-06-10 A | 2013-08-26 A |  | 100% |  | 2013-06-14 | 2013-08-20 | 0d |  |  |  | 248h | 248h | 248 | 248 | 31 days | AP355 |
| 44 | 1.2.2.1.1.1 | Completed-------- TS-ENH-AO-0014-Foundn_PSO_MATRIX-R2.1 |  | 20d | 2013-06-10 A | 2013-07-15 A |  | 100% |  | 2013-06-14 | 2013-06-21 | 0d |  | start no earlier than 2013-06-14 | Hartley, David; Tolambiya, Shailendra | 101h | 101h | 101 | 101 | 12.63 days |  |
| 45 | 1.2.2.1.1.2 | Completed--------RTS-ENH-AO-0014-Foundn_PSO_MATRIX-R2.1 | milestone | 0d | 2013-07-17 A | 2013-07-17 A | 44FS+3d | 100% |  | 2013-06-26 | 2013-06-26 | 0d |  |  |  |  |  |  |  | 0 days |  |
| 46 | 1.2.2.1.1.3 | Completed--------BUILD-ENH-AO-0014-Foundn_PSO_MATRIX-R2.1 |  | 25d | 2013-06-24 A | 2013-08-02 A | 44 | 100% |  | 2013-07-09 | 2013-07-31 | 0d |  |  | Hartley, David; Tolambiya, Shailendra [60%] | 113h | 113h | 113 | 113 | 14.13 days |  |
| 47 | 1.2.2.1.1.4 | Completed-------- UT-ENH-AO-0014-Foundn_PSO_MATRIX-R2.1 |  | 10d | 2013-07-29 A | 2013-08-16 A | 46 | 100% |  | 2013-07-31 | 2013-08-12 | 0d |  |  | Hartley, David [60%]; Tolambiya, Shailendra [60%] | 34h | 34h | 34 | 34 | 4.25 days |  |
| 48 | 1.2.2.1.1.5 | Completed--------RB-ENH-AO-0014-Foundn_PSO_MATRIX-R2.1 | milestone | 0d | 2013-08-26 A | 2013-08-26 A | 47FS+6d | 100% |  | 2013-08-20 | 2013-08-20 | 0d |  |  |  |  |  |  |  | 0 days |  |

Notes:
- 25: ? For PM: Nouvelle date de fin: 13 Decembre
- 27: ? For PM: Si question, voir Javesh
- 32: ? For PM: 10 oct: sharma et thomas devrait en etre à leur derniere semaine donc à deleter après avoir valider avec javesh//Onboarding non complété encore (en attente de création planview pour certaines ressources)
- 38: ? For PM: 26 sept: : j'ai reduis de -100h pour levelling

| ID | WBS | Task | Type | Duration | Start | Finish | Predecessors | Complete | Remaining | Baseline start | Baseline finish | Baseline duration | Total slack | Constraint | Resources | Work | Actual work | Cost | Actual cost | work_091113 | ? For PM |
| --- | --- | --- | --- | --- | --- | --- | --- | --- | --- | --- | --- | --- | --- | --- | --- | --- | --- | --- | --- | --- | --- |
| 49 | 1.2.3 | **Completed--------Pre-Build PI - AP310 Interface** |  | 28d | 2013-06-17 A | 2013-07-24 A |  | 100% |  | 2013-06-17 | 2013-07-03 | 0d |  |  |  | 153.5h | 153.5h | 153.5 | 153.5 | 19.19 days |  |
| 50 | 1.2.3.1 | **Completed-------- Pre-Build PI - Interface - SALES** |  | 27d | 2013-06-17 A | 2013-07-23 A |  | 100% |  | 2013-06-17 | 2013-07-01 | 0d |  |  |  | 33.5h | 33.5h | 33.5 | 33.5 | 4.19 days |  |
| 51 | 1.2.3.1.1 | **Completed--------FS-INT-AO-0002-GET_LOAN-R2.1(Pre-Build)** |  | 27d | 2013-06-17 A | 2013-07-23 A |  | 100% |  | 2013-06-17 | 2013-07-01 | 0d |  |  |  | 33.5h | 33.5h | 33.5 | 33.5 | 4.19 days |  |
| 52 | 1.2.3.1.1.1 | Completed--------TS-INT-AO-0002-GET_LOAN-R2.1 |  | 5d | 2013-06-17 A | 2013-07-12 A |  | 100% |  | 2013-06-17 | 2013-06-24 | 0d |  | finish no earlier than 2013-07-16 | Kalivarapu, Sai Krishna [83.8%] | 33.5h | 33.5h | 33.5 | 33.5 | 4.19 da ys |  |
| 53 | 1.2.3.1.1.2 | Completed--------RTS-INT-AO-0002-GET_LOAN-R2.1 | milestone | 0d | 2013-07-23 A | 2013-07-23 A | 52FS+5d | 100% |  | 2013-07-01 | 2013-07-01 | 0d |  | start no earlier than 2013-06-20 |  |  |  |  |  | 0 days |  |
| 54 | 1.2.3.2 | **Completed--------Pre-Build PI - Interface - FULFILLMENT** |  | 28d | 2013-06-17 A | 2013-07-24 A |  | 100% |  | 2013-06-17 | 2013-07-03 | 0d |  |  |  | 120h | 120h | 120 | 120 | 15 days |  |
| 55 | 1.2.3.2.1 | **Completed--------FS-INT-AO-0018-HOME_EQUITY-R2.1** |  | 28d | 2013-06-17 A | 2013-07-24 A |  | 100% |  | 2013-06-17 | 2013-07-03 | 0d |  |  |  | 120h | 120h | 120 | 120 | 15 days |  |
| 56 | 1.2.3.2.1.1 | Completed-------- TS-INT-AO-0018-HOME_EQUITY-R2.1 |  | 20d | 2013-06-17 A | 2013-07-12 A |  | 100% |  | 2013-06-17 | 2013-06-21 | 0d |  |  | Missy, Vincent | 120h | 120h | 120 | 120 | 15 days |  |
| 57 | 1.2.3.2.1.2 | Completed--------RTS-INT-AO-0018-HOME_EQUITY-R2.1 | milestone | 0d | 2013-07-19 A | 2013-07-19 A | 56FS+5d | 100% |  | 2013-06-28 | 2013-06-28 | 0d |  |  |  |  |  |  |  | 0 days |  |
| 58 | 1.2.3.2.1.3 | Completed--------RTS-INT-AO-0018-HOME_EQUITY-R2.1-Gate2 | milestone | 0d | 2013-07-24 A | 2013-07-24 A | 57FS+3d | 100% |  | 2013-07-03 | 2013-07-03 | 0d |  |  |  |  |  |  |  | 0 days |  |
| 59 | 1.3 | **Configuration** |  | 154d | 2013-06-17 A | 2014-01-16 |  | 57% | 66.98d | 2013-06-17 | 2013-12-16 | 0d | 6d |  |  | 2560h | 1158h | 2,560 | 1,158 | 309.13 days | Si question, voir Chris |
| 60 | 1.3.1 | **Baseline Configuration** |  | 124d | 2013-06-17 A | 2013-12-05 |  | 70% | 36.62d | 2013-06-17 | 2013-09-04 | 0d | 36d |  |  | 544h | 384h | 544 | 384 | 67.63 days |  |
| 61 | 1.3.1.1 | **Completed-------- R2.1 System setup** |  | 15d | 2013-06-17 A | 2013-07-05 A |  | 100% |  | 2013-06-17 | 2013-06-17 | 0d |  |  |  | 25h | 25h | 25 | 25 | 3.13 days |  |
| 62 | 1.3.1.1.1 | Completed--------R2.1 Basic settings |  | 15d | 2013-06-17 A | 2013-07-05 A |  | 100% |  | 2013-06-17 | 2013-06-17 | 0d |  | start no earlier than 2013-05-27 | Venkata, Malik [22.5%] | 25h | 25h | 25 | 25 | 3.13 days |  |
| 63 | 1.3.1.2 | **R2.1 Product and pricing** |  | 104d | 2013-07-15 A | 2013-12-05 |  | 47% | 54.81d | 2013-06-18 | 2013-09-04 | 0d | 36d |  |  | 217h | 102h | 217 | 102 | 28.75 days |  |
| 64 | 1.3.1.2.1 | **R2.1 - PP - Config** |  | 104d | 2013-07-15 A | 2013-12-05 |  | 47% | 54.81d | 2013-06-18 | 2013-09-04 | 0d | 36d |  |  | 217h | 102h | 217 | 102 | 28.75 days |  |
| 65 | 1.3.1.2.1.1 | Completed--------R2.1 - PP - Config - Products & Pricing Config work / Unit Testing - Refi Scenarios (RRC) |  | 35d | 2013-07-15 A | 2013-09-20 A | 62 | 100% |  | 2013-06-18 | 2013-07-08 | 0d |  | start no earlier than 2013-07-15 | Venkata, Malik [80%] | 102h | 102h | 102 | 102 | 14.38 days |  |
| 66 | 1.3.1.2.1.2 | R2.1 - PP - Config - Products & Pricing Config work / Unit Testing - Ongoing Pricing Scenario config |  | 39d | 2013-10-07 | 2013-12-05 | 65 |  |  | 2013-08-15 | 2013-09-04 | 0d | 48d | start no earlier than 2013-08-15 | Iyengar, Raghunath [39.1%]; Venkata, Malik [14.7%] | 115h |  | 115 |  | 14.38 days |  |
| 67 | 1.3.1.3 | **Completed--------R2.1 Transaction config** |  | 40d | 2013-07-22 A | 2013-09-13 A |  | 100% |  | 2013-06-17 | 2013-07-12 | 0d |  |  |  | 160h | 160h | 160 | 160 | 20 days |  |
| 68 | 1.3.1.3.1 | Completed--------R2.1 TC - Baseline Config / Unit Testing |  | 25d | 2013-07-22 A | 2013-09-13 A |  | 100% |  | 2013-06-17 | 2013-07-12 | 0d |  | start no earlier than 2013-07-15 | Surtalova, Stanislova; Venkata, Malik [20%] | 160h | 160h | 160 | 160 | 20 days |  |
| 69 | 1.3.1.4 | **R2.1 Org Structure** |  | 65d | 2013-07-22 A | 2013-10-18 |  | 86% | 9.29d | 2013-07-15 | 2013-08-02 | 0d | 70d |  |  | 142h | 97h | 142 | 97 | 15.75 days |  |
| 70 | 1.3.1.4.1 | R2.1 MD - OS - Config- General Settings for Org. Units |  | 35d | 2013-07-22 A | 2013-10-18 | 68 | 86% | 5d | 2013-07-15 | 2013-08-02 | 0d | 70d | start no earlier than 2013-07-08 | Surtalova, Stanislova [112.5%]; Venkata, Malik [80%] | 142h | 97h | 142 | 97 | 15.75 days | on track for 18 octobre |
| 71 | 1.3.2 | **BUD1 - Configuration** |  | 96d | 2013-07-29 A | 2013-12-09 |  | 68% | 30.96d | 2013-06-17 | 2013-12-16 | 0d | 34d |  |  | 1364h | 774h | 1,364 | 774 | 163.13 days |  |
| 72 | 1.3.2.1 | **Completed--------R2.1 BP** |  | 40d | 2013-07-29 A | 2013-09-20 A |  | 100% |  | 2013-08-28 | 2013-09-11 | 0d |  |  |  | 123h | 123h | 123 | 123 | 9.38 days |  |
| 73 | 1.3.2.1.1 | Completed--------R2.1 BP - Config - ABUI config |  | 23d | 2013-07-29 A | 2013-09-20 A |  | 100% |  | 2013-08-28 | 2013-09-11 | 0d |  | start no earlier than 2013-08-28 | Iyengar, Raghunath [133.3%] | 123h | 123h | 123 | 123 | 9.38 days |  |

| ID | WBS | Task | Type | Duration | Start | Finish | Predecessors | Complete | Remaining | Baseline start | Baseline finish | Baseline duration | Total slack | Free slack | Constraint | Resources | Work | Actual work | Cost | Actual cost | work_091113 |
| --- | --- | --- | --- | --- | --- | --- | --- | --- | --- | --- | --- | --- | --- | --- | --- | --- | --- | --- | --- | --- | --- |
| 74 | 1.3.2.2 | **Completed--------R2.1 Sales 1** |  | 55d | 2013-07-29 A | 2013-10-14 A |  | 100% |  | 2013-09-12 | 2013-10-02 | 0d |  |  |  |  | 89h | 89h | 89 | 89 | 15 days |
| 75 | 1.3.2.2.1 | Completed--------R2.1 Sales 1 - DU 1 Functional Unit Testing 2.1 scenarios |  | 30d | 2013-07-29 A | 2013-10-14 A | 73 | 100% |  | 2013-09-12 | 2013-10-02 | 0d |  |  |  | Iyengar, Raghunath | 89h | 89h | 89 | 89 | 15 days |
| 76 | 1.3.2.3 | **R2.1 Campaigns** |  | 96d | 2013-07-29 A | 2013-12-09 |  | 57% | 41d | 2013-08-13 | 2013-12-16 | 0d | 34d |  |  |  | 672h | 216h | 672 | 216 | 88.75 days |
| 77 | 1.3.2.3.1 | Completed--------R2.1 BP - Campaign I |  | 55d | 2013-07-29 A | 2013-10-11 A |  | 100% |  | 2013-08-13 | 2013-10-14 | 0d |  |  | start no earlier than 2013-08-13 | Abraham, Jimjees [80%] | 216h | 216h | 216 | 216 | 43.75 days |
| 78 | 1.3.2.3.2 | R2.1 BP - Campaign II |  | 41d | 2013-10-14 | 2013-12-09 | 77 |  |  | 2013-10-15 | 2013-12-16 | 0d | 34d |  |  | Abraham, Jimjees [139%] | 456h |  | 456 |  | 45 days |
| 79 | 1.3.2.4 | **Completed--------R2.1 Decisioning** |  | 45.33d | 2013-08-05 A | 2013-10-07 A |  | 100% |  | 2013-08-13 | 2013-08-26 | 0d |  |  |  |  | 144h | 144h | 144 | 144 | 10 days |
| 80 | 1.3.2.4.1 | Completed--------R2.1 Decisioning - Config - ABUI config work |  | 25.33d | 2013-08-05 A | 2013-10-07 A |  | 100% |  | 2013-08-13 | 2013-08-26 | 0d |  |  | start no earlier than 2013-08-13 | Nagaraj, Suresh [900%] | 144h | 144h | 144 | 144 | 10 days |
| 81 | 1.3.2.5 | **R2.1 Document Collection** |  | 16d | 2013-09-23 A | 2013-10-15 |  | 91% | 1.45d | 2013-09-17 | 2013-09-30 | 0d | 74d |  |  |  | 80h | 40h | 80 | 40 | 10 days |
| 82 | 1.3.2.5.1 | R2.1 DC - Config - ABUI config work |  | 11d | 2013-09-23 A | 2013-10-15 | 75 | 91% | 1d | 2013-09-17 | 2013-09-30 | 0d | 74d |  |  | Iyengar, Raghunath [500%] | 80h | 40h | 80 | 40 | 10 days |
| 83 | 1.3.2.6 | **Completed--------R2.1 In Flight** |  | 26d | 2013-08-05 A | 2013-09-09 A |  | 100% |  | 2013-08-15 | 2013-09-04 | 0d |  |  |  |  | 156h | 156h | 156 | 156 | 15 days |
| 84 | 1.3.2.6.1 | Completed--------R2.1 CS - Config - ABUI config Work |  | 26d | 2013-08-05 A | 2013-09-09 A |  | 100% |  | 2013-08-15 | 2013-09-04 | 0d |  |  | start no earlier than 2013-08-15 | Nagaraj, Suresh [550%] | 156h | 156h | 156 | 156 | 15 days |
| 85 | 1.3.2.7 | **R2.1 Activation** |  | 85d | 2013-08-05 A | 2013-11-29 |  | 13% | 74.38d | 2013-11-15 | 2013-11-29 | 0d | 40d |  |  |  | 60h | 6h | 60 | 6 | 10 days |
| 86 | 1.3.2.7.1 | R2.1 Activation - Config - Config work |  | 40d | 2013-08-05 A | 2013-11-29 | 80 | 13% | 35d | 2013-11-15 | 2013-11-29 | 0d | 40d |  | start no earlier than 2013-11-15 | Nagaraj, Suresh [19.3%] | 60h | 6h | 60 | 6 | 10 days |
| 87 | 1.3.2.8 | **R2.1 Title Search & disbursement** |  | 6d | 2013-11-18 | 2013-11-25 |  |  |  | 2013-09-10 | 2013-11-25 | 0d | 44d |  |  |  | 40h |  | 40 |  | 5 days |
| 88 | 1.3.2.8.1 | R2.1 TSnD - Config - ABUI config work |  | 6d | 2013-11-18 | 2013-11-25 |  |  |  | 2013-09-10 | 2013-11-25 | 0d | 44d |  | start no earlier than 2013-11-18 | Nagaraj, Suresh [83.3%] | 40h |  | 40 |  | 5 days |
| 89 | 1.3.3 | **R2.1 Extended Scope Configuration** |  | 30d | 2013-10-28 | 2013-12-06 |  |  |  | 2013-10-28 | 2013-12-06 | 0d | 35d |  |  |  | 250h |  | 250 |  | 28.13 days |
| 90 | 1.3.3.1 | R2.1 extended scope - Config - Config work part 1 |  | 15d | 2013-10-28 | 2013-11-15 |  |  |  | 2013-10-28 | 2013-11-15 | 0d | 787.38d |  | start no earlier than 2013-10-28 | Iyengar, Raghunath [52.5%]; Abraham, Jimjees [31.7%]; Venkata, Malik; Nagaraj, Suresh [30.8%] | 138h |  | 138 |  | 14.13 days |
| 91 | 1.3.3.2 | R2.1 extended scope - Config - Config work part 2 |  | 4d | 2013-12-03 | 2013-12-06 |  |  |  | 2013-12-03 | 2013-12-06 | 0d | 772.38d |  | start no earlier than 2013-12-03 | Iyengar, Raghunath [87.5%]; Abraham, Jimjees [87.5%]; Venkata, Malik [87.5%]; Nagaraj, Suresh [87.5%] | 112h |  | 112 |  | 14 days |
| 92 | 1.3.4 | **R2.1 - Support - Config Rationale Documents** |  | 73d | 2013-10-08 | 2014-01-16 |  |  |  | 2013-10-08 | 2013-11-14 | 0d | 6d |  |  |  | 402h |  | 402 |  | 50.25 days |
| 93 | 1.3.4.1 | R2.1 - Config Rationale Doc - Prod&Price |  | 69d | 2013-10-08 | 2014-01-16 |  |  |  | 2013-10-08 | 2013-11-14 | 0d | 6d |  | start no earlier than 2013-10-08 | Iyengar, Raghunath [8.2%]; Ta, Bach Sim [8.2%]; Nagaraj, Suresh [8.2%]; Venkata, Malik [40.2%]; Surtalova, Stanislova [8.2%] | 402h |  | 402 |  | 50.25 days |
| 94 | 1.4 | **Ongoing Configuration Support Activities** |  | 113.96d | 2013-07-15 A | 2013-12-19 |  | 51% | 56.39d | 2013-08-06 | 2013-10-18 | 0d | 38.04d |  |  |  | 1576h | 293h | 1,576 | 293 | 188.13 days |
| 95 | 1.4.1 | SAP Lead Support, Confing, Development Support & Testing |  | 98.96d | 2013-07-15 A | 2013-12-19 |  | 51% | 48.96d | 2013-08-06 | 2013-10-18 | 0d | 38.04d |  | start no earlier than 2013-08-06 | Venkata, Malik [35.6%]; Nagaraj, Suresh [133%]; Abraham, Jimjees [42.6%]; Iyengar, Raghunath [137.5%]; How-Choong, Bertrand OUT [96.8%]; Ta, Bach Sim [52.7%] | 1576h | 293h | 1,576 | 293 | 188.13 days |
| 96 | 1.5 | **Build Unit Delivery** |  | 160d? | 2013-06-17 A | 2014-01-24 |  | 44% | 89.13d? | 2013-06-14 | 2014-01-17 | 0d | 12d |  |  |  | 35672.5h | 10042h | 35,537.5 | 9,907 | 4,541.34 days |
| 97 | 1.5.1 | **Build Unit Delivery 1** |  | 160d? | 2013-06-17 A | 2014-01-24 |  | 44% | 89.13d? | 2013-06-14 | 2014-01-17 | 0d | 12d |  |  |  | 35672.5h | 10042h | 35,537.5 | 9,907 | 4,541.34 days |
| 98 | 1.5.1.1 | **Inputs** |  | 119d | 2013-06-17 | 2013-11-29 |  |  |  | 2013-06-14 | 2013-11-29 | 0d | 41d |  |  |  |  |  |  |  | 0 days |
| 99 | 1.5.1.1.1 | **CDP** |  | 119d | 2013-06-17 | 2013-11-29 |  |  |  | 2013-06-14 | 2013-11-29 | 0d | 41d |  |  |  |  |  |  |  | 0 days |
| 100 | 1.5.1.1.1.1 | TS_CD_MD_180: Configuration - Build Matrix Drivers - BUILD | milestone | 0d | 2013-07-09 | 2013-07-09 |  |  |  | 2013-07-09 | 2013-07-09 | 0d | 290.52d |  | start no earlier than 2013-07-09 |  |  |  |  |  | 0 days |
| 101 | 1.5.1.1.1.2 | FS_ENH_AO_180_CDP_MATRIX_DRIVER-R2.1 | milestone | 0d | 2013-08-15 | 2013-08-15 |  |  |  | 2013-08-15 | 2013-08-15 | 0d | 195.02d | 12d | start no earlier than 2013-08-15 |  |  |  |  |  | 0 days |
| 102 | 1.5.1.1.1.3 | PSO - BUD 1 APZZZ Cross packages (Internal Refi, Creditor insurance, cross sell, NBVIEW) | milestone | 0d | 2013-11-05 | 2013-11-05 |  |  |  | 2013-11-05 | 2013-11-05 | 0d | 175.06d | 17.84d | start no earlier than 2013-11-05 |  |  |  |  |  | 0 days |
| 103 | 1.5.1.1.1.4 | Data Model Assumption, Renewal and Renegotiation - Part 1- | milestone | 0d | 2013-07-04 | 2013-07-04 |  |  |  | 2013-07-04 | 2013-07-04 | 0d | 187.69d | 32.84d | start no earlier than 2013-07-04 |  |  |  |  |  | 0 days |
| 104 | 1.5.1.1.1.5 | Data Model Tax Management | milestone | 0d | 2013-09-02 | 2013-09-02 |  |  |  | 2013-09-02 | 2013-09-02 | 0d | 191.98d | 20d | start no earlier than 2013-09-02 |  |  |  |  |  | 0 days |
| 105 | 1.5.1.1.1.6 | Data Model Creditor Insurance (14 juin mais change date pour baseline) | milestone | 0d | 2013-06-17 | 2013-06-17 |  |  |  | 2013-06-14 | 2013-06-14 | 0d | 246.98d | 75d | start no earlier than 2013-06-17 |  |  |  |  |  | 0 days |
| 106 | 1.5.1.1.1.7 | Data Model Assumption, Renewal and Renegotiation - Part 2- | milestone | 0d | 2013-10-02 | 2013-10-02 |  |  |  | 2013-10-02 | 2013-10-02 | 0d | 165.98d | 0d | start no earlier than 2013-10-02 |  |  |  |  |  | 0 days |
| 107 | 1.5.1.1.1.8 | Data Model Amortization | milestone | 0d | 2013-10-02 | 2013-10-02 |  |  |  | 2013-10-02 | 2013-10-02 | 0d | 175.39d | 10d | start no earlier than 2013-10-02 |  |  |  |  |  | 0 days |
| 108 | 1.5.1.1.1.9 | Editing Amortization - Build - | milestone | 0d | 2013-11-21 | 2013-11-21 |  |  |  | 2013-11-21 | 2013-11-21 | 0d | 163.89d | 2d | start no earlier than 2013-11-21 |  |  |  |  |  | 0 days |
| 109 | 1.5.1.1.1.10 | CDP - ABUI Assembly (Amortization) - Config/Integration - | milestone | 0d | 2013-11-21 | 2013-11-21 |  |  |  | 2013-11-21 | 2013-11-21 | 0d | 183.77d | 0d | start no earlier than 2013-11-21 |  |  |  |  |  | 0 days |
| 110 | 1.5.1.1.1.11 | CDP - ABUI Assembly (RRC) - Config/Integration - | milestone | 0d | 2013-11-29 | 2013-11-29 |  |  |  | 2013-11-29 | 2013-11-29 | 0d | 177.77d | 0d | start no earlier than 2013-11-29 |  |  |  |  |  | 0 days |
| 111 | 1.5.1.1.1.12 | CDP - ABUI Assembly (Cross-Package) - Config/Integration - | milestone | 0d | 2013-11-05 | 2013-11-05 |  |  |  | 2013-11-05 | 2013-11-05 | 0d | 195.77d | 0d | start no earlier than 2013-11-05 |  |  |  |  |  | 0 days |

Notes:
- 75: ? For PM: Completed
- 77: ? For PM: Completed
- 78: ? For PM: j'ai commencé à transférer 96h over de Campaign I ici pour assurer le levelling
- 80: ? For PM: Completed
- 82: ? For PM: TO DO: valider si bien termine le oct 18
- 92: ? For PM: Start Oct 28 - To be Confirmed
- 94: ? For PM: Si question, voir Chris
- 95: ? For PM: 26 sept: pour assurer le levelling suresh +60h / jimjees +40h
- 96: ? For PM: Javesh pour questions
- 98: ? For PM: eventuellement, sera a deleter dans le plan car sert à rien et non mis à jour

| ID | WBS | Task | Type | Duration | Start | Finish | Predecessors | Complete | Remaining | Baseline start | Baseline finish | Baseline duration | Total slack | Free slack | Constraint | Resources | Work | Actual work | Cost | Actual cost | work_091113 | type of Deliverable |
| --- | --- | --- | --- | --- | --- | --- | --- | --- | --- | --- | --- | --- | --- | --- | --- | --- | --- | --- | --- | --- | --- | --- |
| 112 | 1.5.1.2 | **Support (QA, Prioritization, Triage, Technical Expertise)** |  | 160d | 2013-06-17 A | 2014-01-24 |  | 54% | 73.62d | 2013-06-17 | 2014-01-17 | 0d | 12d |  |  |  | 4590h | 2196h | 4,455 | 2,061 | 582.56 days |  |
| 113 | 1.5.1.2.1 | Offshore Team Support (Leads) |  | 182.88d | 2013-06-17 A | 2014-01-24 |  | 54% | 83.87d | 2013-06-17 | 2014-01-24 | 0d | 12.25d |  | finish no earlier than 2014-01-24 | Prasad Bomburey, Satya; Venkata, Raghavendra [125%]; Bhandari, Himanshu; Polu, Ravi Kiran OUT [112.5%]; Mistri, Harish [112.5%]; Kumar, Nitin [26.7%] | 2097h | 982h | 1,962 | 847 | 260.94 days |  |
| 114 | 1.5.1.2.2 | Onshore Team Support (Leads) |  | 151.6d | 2013-06-17 A | 2014-01-24 |  | 54% | 70.03d | 2013-06-17 | 2014-01-24 | 0d | 12d |  | finish no earlier than 2014-01-24 | Kaidali, Adlane [107.1%]; Merwade, Mahesh [256%]; Gaju, Javesh [256%] | 2493h | 1214h | 2,493 | 1,214 | 321.63 days |  |
| 115 | 1.5.1.3 | **CRM - AP355 Enhancement** |  | 139d? | 2013-06-17 A | 2013-12-26 |  | 42% | 80.33d? | 2013-06-17 | 2013-12-23 | 0d | 17.88d | 5.88d |  |  | 13478h | 3895.5h | 13,478 | 3,895.5 | 1,738.25 days |  |
| 116 | 1.5.1.3.1 | **CRM - Enhancement - SALES/BP** |  | 99d | 2013-06-17 A | 2013-10-31 |  | 92% | 7.48d | 2013-06-17 | 2013-09-27 | 0d | 45.88d |  |  |  | 801h | 727h | 801 | 727 | 76.75 days |  |
| 117 | 1.5.1.3.1.1 | **FS-ENH-AO-0001-BP-R2.1 *CRM - Enhancement - SALES/BP*** |  | 99d | 2013-06-17 A | 2013-10-31 |  | 86% | 14.32d | 2013-06-17 | 2013-09-27 | 0d | 45.88d |  |  |  | 531h | 457h | 531 | 457 | 45 days | AP355 |
| 118 | 1.5.1.3.1.1.1 | Completed-------- TS-ENH-AO-0001-BP-R2.1 *CRM - Enhancement - SALES/BP* |  | 22.5d | 2013-06-17 A | 2013-07-12 A |  | 100% |  | 2013-06-17 | 2013-07-02 | 0d |  |  |  | Bhandari, Himanshu; Ta, Bach Sim [15%] | 186h | 186h | 186 | 186 | 23.25 days |  |
| 119 | 1.5.1.3.1.1.2 | Completed--------RTS-ENH-AO-0001-BP-R2.1 *CRM - Enhancement - SALES/BP* | milestone | 0d | 2013-07-17 A | 2013-07-17 A |  | 100% |  | 2013-07-05 | 2013-07-05 | 0d |  |  |  |  |  |  |  |  | 0 days |  |
| 120 | 1.5.1.3.1.1.3 | Completed--------RTS-ENH-AO-0001-BP-R2.1-Gate2 *CRM - Enhancement - SALES/BP* | milestone | 0d | 2013-07-22 A | 2013-07-22 A |  | 100% |  | 2013-07-10 | 2013-07-10 | 0d |  |  |  |  |  |  |  |  | 0 days |  |
| 121 | 1.5.1.3.1.1.4 | ON HOLD--------BUILD-ENH-AO-0001-BP-R2.1 *CRM - Enhancement - SALES/BP* |  | 41.73d | 2013-08-05 A | 2013-10-17 |  | 92% | 3.48d | 2013-08-14 | 2013-09-11 | 0d | 191.54d | 0d | start no earlier than 2013-08-14 | Bhandari, Himanshu [125%]; Reddy, Nithin; Halali, Sreekanth [22.9%] | 273h | 261h | 273 | 261 | 12.75 days |  |
| 122 | 1.5.1.3.1.1.5 | ON HOLD--------UT-ENH-AO-0001-BP-R2.1 *CRM - Enhancement - SALES/BP* |  | 13.38d | 2013-09-23 A | 2013-10-25 | 121 | 42% | 7.75d | 2013-09-11 | 2013-09-23 | 0d | 45.88d | 0d |  | Bhandari, Himanshu | 72h | 10h | 72 | 10 | 9 days |  |
| 123 | 1.5.1.3.1.1.6 | RB-ENH-AO-0001-BP-R2.1 *CRM - Enhancement - SALES/BP* | milestone | 0d | 2013-10-31 | 2013-10-31 | 122FS+4d |  |  | 2013-09-27 | 2013-09-27 | 0d | 192.39d |  |  |  |  |  |  |  | 0 days |  |
| 124 | 1.5.1.3.1.2 | **Completed--------FS-ENH-AO-0009-GET_LOAN-R2.1 *CRM - Enhancement - SALES/BP*** |  | 60d | 2013-06-24 A | 2013-09-13 A |  | 100% |  | 2013-06-25 | 2013-07-29 | 0d |  |  |  |  | 159h | 159h | 159 | 159 | 17.88 days | AP355 |
| 125 | 1.5.1.3.1.2.1 | Completed--------TS-ENH-AO-0009-GET_LOAN-R2.1 *CRM - Enhancement - SALES/BP* |  | 15d | 2013-06-24 A | 2013-07-19 A |  | 100% |  | 2013-06-25 | 2013-07-03 | 0d |  |  | start no earlier than 2013-06-24 | Shafai, Ramin [87.5%] | 66h | 66h | 66 | 66 | 8.25 days |  |
| 126 | 1.5.1.3.1.2.2 | Completed--------RTS-ENH-AO-0009-GET_LOAN-R2.1 *CRM - Enhancement - SALES/BP* | milestone | 0d | 2013-07-22 A | 2013-07-22 A |  | 100% |  | 2013-07-10 | 2013-07-10 | 0d |  |  | start no earlier than 2013-07-22 |  |  |  |  |  | 0 days |  |
| 127 | 1.5.1.3.1.2.3 | Completed--------BUILD-ENH-AO-0009-GET_LOAN-R2.1 *CRM - Enhancement - SALES/BP* |  | 15d | 2013-07-15 A | 2013-08-02 A |  | 100% |  | 2013-07-04 | 2013-07-17 | 0d |  |  |  | Shafai, Ramin [87.5%] | 56h | 56h | 56 | 56 | 7 days |  |
| 128 | 1.5.1.3.1.2.4 | Completed--------UT-ENH-AO-0009-GET_LOAN-R2.1 *CRM - Enhancement - SALES/BP* |  | 15d | 2013-07-22 A | 2013-09-13 A |  | 100% |  | 2013-07-18 | 2013-07-23 | 0d |  |  |  | Shafai, Ramin [40%] | 37h | 37h | 37 | 37 | 2.63 days |  |
| 129 | 1.5.1.3.1.2.5 | Completed--------RB-ENH-AO-0009-GET_LOAN-R2.1 *CRM - Enhancement - SALES/BP* | milestone | 0d | 2013-08-22 A | 2013-08-22 A |  | 100% |  | 2013-07-29 | 2013-07-29 | 0d |  |  | start no earlier than 2013-08-14 |  |  |  |  |  | 0 days |  |
| 130 | 1.5.1.3.1.3 | **Completed--------FS-ENH-AO-0028-HOME_EQUITY-R2.1 *CRM - Enhancement - SALES/BP*** |  | 65d | 2013-06-17 A | 2013-09-13 A |  | 100% |  | 2013-06-17 | 2013-07-30 | 0d |  |  |  |  | 111h | 111h | 111 | 111 | 13.88 days | AP355 |
| 131 | 1.5.1.3.1.3.1 | Completed--------TS-ENH-AO-028-HOME_EQUITY-R2.1 *CRM - Enhancement - SALES/BP* |  | 6d | 2013-06-17 A | 2013-08-19 A |  | 100% |  | 2013-06-17 | 2013-06-27 | 0d |  |  |  | Thomassin, Stephane [334.4%] | 58.5h | 58.5h | 58.5 | 58.5 | 7.31 days |  |
| 132 | 1.5.1.3.1.3.2 | Completed--------RTS-ENH-AO-0028-HOME_EQUITY-R2.1 *CRM - Enhancement - SALES/BP* | milestone | 0d | 2013-09-02 A | 2013-09-02 A | 131FS+10d | 100% |  | 2013-07-11 | 2013-07-11 | 0d |  |  |  |  |  |  |  |  | 0 days |  |
| 133 | 1.5.1.3.1.3.3 | Completed--------BUILD-ENH-AO-0028-HOME_EQUITY-R2.1 *CRM - Enhancement - SALES/BP* |  | 15d | 2013-07-15 A | 2013-08-02 A |  | 100% |  | 2013-06-28 | 2013-07-19 | 0d |  |  |  | Thomassin, Stephane [73.1%] | 51.5h | 51.5h | 51.5 | 51.5 | 6.44 days |  |
| 134 | 1.5.1.3.1.3.4 | Completed--------UT-ENH-AO-0028-HOME_EQUITY-R2.1 *CRM - Enhancement - SALES/BP* |  | 5d | 2013-07-22 A | 2013-09-06 A |  | 100% |  | 2013-07-22 | 2013-07-23 | 0d |  |  |  | Thomassin, Stephane [2.5%] | 1h | 1h | 1 | 1 | 0.13 days |  |
| 135 | 1.5.1.3.1.3.5 | Completed--------RB-ENH-AO-0028-HOME_EQUITY-R2.1 *CRM - Enhancement - SALES/BP* | milestone | 0d | 2013-09-13 A | 2013-09-13 A |  | 100% |  | 2013-07-30 | 2013-07-30 | 0d |  |  |  |  |  |  |  |  | 0 days |  |

Notes:
- 116: ? For PM: S'assurer de respecter date de baseline de la fin dans planview

| ID | WBS | Task | Type | Duration | Start | Finish | Predecessors | Complete | Remaining | Baseline start | Baseline finish | Baseline duration | Total slack | Free slack | Constraint | Resources | Work | Actual work | Cost | Actual cost | work_091113 | type of Deliverable |
| --- | --- | --- | --- | --- | --- | --- | --- | --- | --- | --- | --- | --- | --- | --- | --- | --- | --- | --- | --- | --- | --- | --- |
| 136 | 1.5.1.3.2 | **CRM - Enhancement - DECISIONING** |  | 99d | 2013-08-12 A | 2013-12-26 |  | 51% | 48.06d | 2013-08-15 | 2013-12-17 | 0d | 5.88d |  |  |  | 2791h | 1269h | 2,791 | 1,269 | 361.88 days |  |
| 137 | 1.5.1.3.2.1 | **FS-ENH-AO-0017-CDA_DECISION-R2.1 *CRM - Enhancement - Decisionning*** |  | 71.8d | 2013-08-19 A | 2013-11-26 |  | 52% | 34.16d | 2013-08-20 | 2013-10-01 | 0d | 28.07d |  |  |  | 364h | 130h | 364 | 130 | 45 days | AP355 |
| 138 | 1.5.1.3.2.1.1 | Completed--------TS-ENH-AO-0017-CDA_DECISION-R2.1 *CRM - Enhancement - Decisionning* |  | 25d | 2013-08-19 A | 2013-10-11 A |  | 100% |  | 2013-08-20 | 2013-08-29 | 0d |  |  | start no earlier than 2013-08-15 | Kumar, Abhimanyu [62.5%]; Shafai, Ramin [80%] | 112h | 112h | 112 | 112 | 13.5 days |  |
| 139 | 1.5.1.3.2.1.2 | Completed--------RTS-ENH-AO-0017-CDA_DECISION-R2.1 *CRM - Enhancement - Decisionning* | milestone | 0d | 2013-10-11 A | 2013-10-11 A | 138FS+5d | 100% |  | 2013-09-05 | 2013-09-05 | 0d |  |  |  |  |  |  |  |  | 0 days |  |
| 140 | 1.5.1.3.2.1.3 | Completed--------RTS-ENH-AO-0017-CDA_DECISION-R2.1-Gate2 *CRM - Enhancement - Decisionning* | milestone | 0d | 2013-10-16 A | 2013-10-16 A | 139FS+3d | 100% |  | 2013-09-10 | 2013-09-10 | 0d |  |  |  |  |  |  |  |  | 0 days |  |
| 141 | 1.5.1.3.2.1.4 | BUILD-ENH-AO-0017-CDA_DECISION-R2.1 *CRM - Enhancement - Decisionning* |  | 25.43d | 2013-09-02 A | 2013-11-06 | 138, 101, 103 | 22% | 19.8d | 2013-08-29 | 2013-09-13 | 0d | 28.07d | 0d |  | Kacham, Santosh [102.3%] | 180h | 18h | 180 | 18 | 22.5 days |  |
| 142 | 1.5.1.3.2.1.5 | UT-ENH-AO-0017-CDA_DECISION-R2.1 *CRM - Enhancement - Decisionning* |  | 8d | 2013-11-06 | 2013-11-15 | 141 |  |  | 2013-09-13 | 2013-09-20 | 0d | 28.07d | 0d |  | Kacham, Santosh [112.5%] | 72h |  | 72 |  | 9 days |  |
| 143 | 1.5.1.3.2.1.6 | RB-ENH-AO-0017-CDA_DECISION-R2.1 *CRM - Enhancement - Decisionning* | milestone | 0d | 2013-11-26 | 2013-11-26 | 142FS+7d |  |  | 2013-10-01 | 2013-10-01 | 0d | 28.07d |  |  |  |  |  |  |  | 0 days |  |
| 144 | 1.5.1.3.2.2 | **FS-ENH-AO-0023-Cross_Sell-R2.1 *CRM - Enhancement - Decisionning*** |  | 94d | 2013-08-19 A | 2013-12-26 |  | 21% | 74.16d | 2013-08-19 | 2013-12-09 | 0d | 5.88d |  |  |  | 635h | 181h | 635 | 181 | 65.5 days | AP355 |
| 145 | 1.5.1.3.2.2.1 | TS-ENH-AO-0023-Cross_Sell-R2.1 *CRM - Enhancement - Decisionning* |  | 20.42d | 2013-08-19 A | 2013-10-07 A |  | 100% |  | 2013-08-20 | 2013-09-20 | 0d |  |  | start no earlier than 2013-08-19 | Ta, Bach Sim [1200%]; Tolambiya, Shailendra [30%] | 181h | 181h | 181 | 181 | 7.5 days |  |
| 146 | 1.5.1.3.2.2.2 | RTS-ENH-AO-0023-Cross_Sell-R2.1 *CRM - Enhancement - Decisionning* | milestone | 0d | 2013-10-14 | 2013-10-14 | 145FS+5d |  |  | 2013-09-27 | 2013-09-27 | 0d | 56.46d | 0d |  |  |  |  |  |  | 0 days |  |
| 147 | 1.5.1.3.2.2.3 | RTS-ENH-AO-0023-Cross_Sell-R2.1-Gate2 *CRM - Enhancement - Decisionning* | milestone | 0d | 2013-10-17 | 2013-10-17 | 146FS+3d |  |  | 2013-10-02 | 2013-10-02 | 0d | 56.46d |  |  |  |  |  |  |  | 0 days |  |
| 148 | 1.5.1.3.2.2.4 | BUILD-ENH-AO-0023-Cross_Sell-R2.1-CR *CRM - Enhancement - Decisionning* |  | 55d | 2013-09-23 A | 2013-12-26 |  |  | 55d | 2013-08-19 | 2013-09-27 | 0d | 5.88d |  | start no earlier than 2013-08-19 | Ta, Bach Sim [9.2%]; Kumar Sahoo, Saroj [1.9%]; Halali, Sreekanth [7.5%]; Kumar, Abhimanyu [20.9%]; (CRM_SENIOR_5) ACN_ON1 601a [32.7%]; Tolambiya, Shailendra [25%] | 310h |  | 310 |  | 40 days |  |
| 149 | 1.5.1.3.2.2.5 | BUILD-ENH-AO-0023-Cross_Sell-R2.1 *CRM - Enhancement - Decisionning* |  | 13d | 2013-10-08 | 2013-11-06 | 145, 101, 103, 105 |  |  | 2013-09-20 | 2013-10-09 | 0d | 26.54d | 15.84d | start no earlier than 2013-09-19 | Ta, Bach Sim | 104h |  | 104 |  | 13 days |  |
| 150 | 1.5.1.3.2.2.6 | UT-ENH-AO-0023-Cross_Sell-R2.1 *CRM - Enhancement - Decisionning* |  | 8.33d | 2013-11-28 | 2013-12-11 | 149, 102 |  |  | 2013-11-21 | 2013-11-28 | 0d | 10.7d | 0d | start no earlier than 2013-11-28 | Ta, Bach Sim [60%] | 40h |  | 40 |  | 5 days |  |
| 151 | 1.5.1.3.2.2.7 | RB-ENH-AO-0023-Cross_Sell-R2.1 *CRM - Enhancement - Decisionning* | milestone | 0d | 2013-12-20 | 2013-12-20 | 150FS+7d |  |  | 2013-12-09 | 2013-12-09 | 0d | 10.7d |  |  |  |  |  |  |  | 0 days |  |
| 152 | 1.5.1.3.2.3 | **FS-ENH-AO-0016-RATE_GUARANTEE-R2.1 *CRM - Enhancement - Decisionning*** |  | 68.88d | 2013-09-13 A | 2013-12-19 |  | 33% | 46d | 2013-09-04 | 2013-10-21 | 0d | 11.5d |  |  |  | 307h | 60h | 307 | 60 | 44.13 days | AP355 |
| 153 | 1.5.1.3.2.3.1 | Completed--------TS-ENH-AO-0016-RATE_GUARANTEE-R2.1 *CRM - Enhancement - Decisionning* |  | 11.88d | 2013-09-13 A | 2013-10-04 A |  | 100% |  | 2013-09-04 | 2013-09-16 | 0d |  |  | start no earlier than 2013-09-04 | Kambeli, Venkat Rao [620%] | 60h | 60h | 60 | 60 | 13.25 days |  |
| 154 | 1.5.1.3.2.3.2 | Completed--------RTS-ENH-AO-0016-RATE_GUARANTEE-R2.1 *CRM - Enhancement - Decisionning* | milestone | 0d | 2013-10-11 A | 2013-10-11 A | 153FS+5d | 100% |  | 2013-09-23 | 2013-09-23 | 0d |  |  |  |  |  |  |  |  | 0 days |  |
| 155 | 1.5.1.3.2.3.3 | BUILD-ENH-AO-0016-RATE_GUARANTEE-R2.1 *CRM - Enhancement - Decisionning* |  | 15d | 2013-10-07 | 2013-11-28 | 153, 101, 103 |  |  | 2013-09-16 | 2013-10-03 | 0d | 11.5d | 0d | start no earlier than 2013-09-11 | Kambeli, Venkat Rao [146.7%] | 176h |  | 176 |  | 22 days |  |
| 156 | 1.5.1.3.2.3.4 | UT-ENH-AO-0016-RATE_GUARANTEE-R2.1 *CRM - Enhancement - Decisionning* |  | 8.88d | 2013-11-28 | 2013-12-10 | 155 |  |  | 2013-10-03 | 2013-10-10 | 0d | 11.5d | 0d | start no earlier than 2013-09-26 | Kambeli, Venkat Rao | 71h |  | 71 |  | 8.88 days |  |
| 157 | 1.5.1.3.2.3.5 | RB-ENH-AO-0016-RATE_GUARANTEE-R2.1 *CRM - Enhancement - Decisionning* | milestone | 0d | 2013-12-19 | 2013-12-19 | 156FS+7d |  |  | 2013-10-21 | 2013-10-21 | 0d | 158.02d |  |  |  |  |  |  |  | 0 days |  |
| 158 | 1.5.1.3.2.4 | **FS-ENH-AO-0020-Decision_CrossPackage-R2.1 *CRM - Enhancement - Decisionning*** |  | 57d | 2013-08-12 A | 2013-10-29 A |  | 100% |  | 2013-08-20 | 2013-10-11 | 0d |  |  |  |  | 381h | 381h | 381 | 381 | 52.75 days | AP355 |
| 159 | 1.5.1.3.2.4.1 | Completed--------TS-ENH-AO-0020-Decision_CrossPackage-R2.1-ENH *CRM - Enhancement - Decisionning* |  | 17.83d | 2013-08-12 A | 2013-10-04 A |  | 100% |  | 2013-08-20 | 2013-08-30 | 0d |  |  | start no earlier than 2013-09-03 | Kumar, Nitin [150.2%] | 133h | 133h | 133 | 133 | 16.75 days |  |
| 160 | 1.5.1.3.2.4.2 | Completed--------TS-ENH-AO-0020-Decision_CrossPackage-R2.1-BUD1-BRF *CRM - Enhancement - Decisionning* |  | 10.12d | 2013-09-09 A | 2013-10-11 A | 48 | 100% |  | 2013-08-20 | 2013-08-26 | 0d |  |  | start no earlier than 2013-10-01 | ***SERA OUT si coupure demandé par Gina-------CRM_INTERMEDIATE2 (dev ACN_OFF1); Kumar, Nitin | 54h | 54h | 54 | 54 | 4.5 days |  |
| 161 | 1.5.1.3.2.4.3 | Completed--------RTS-ENH-AO-0020-Decision_CrossPackage-R2.1-ENH *CRM - Enhancement - Decisionning* | milestone | 0d | 2013-10-11 A | 2013-10-11 A | 159FS+5d | 100% |  | 2013-09-06 | 2013-09-06 | 0d |  |  |  |  |  |  |  |  | 0 days |  |
| 162 | 1.5.1.3.2.4.4 | Completed--------RTS-ENH-AO-0020-Decision_CrossPackage-R2.1-BUD1-BRF *CRM - Enhancement - Decisionning* | milestone | 0d | 2013-10-17 A | 2013-10-17 A | 160FS+5d | 100% |  | 2013-09-02 | 2013-09-02 | 0d |  |  |  |  |  |  |  |  | 0 days |  |
| 163 | 1.5.1.3.2.4.5 | Completed--------BUILD-ENH-AO-0020-Decision_CrossPackage-R2.1-ENH *CRM - Enhancement - Decisionning* |  | 28.12d | 2013-09-09 A | 2013-10-11 A | 159, 101, 103 | 100% |  | 2013-08-30 | 2013-09-20 | 0d |  |  |  | Kumar, Nitin; Vallanda, Rohan Poovaiah [17.8%]; Sharma, Jayanti [80%] | 194h | 194h | 194 | 194 | 17 days |  |
| 164 | 1.5.1.3.2.4.6 | Completed--------BUILD-ENH-AO-0020-Decision_CrossPackage-R2.1-BRF *CRM - Enhancement - Decisionning* | milestone | 0d | 2013-10-11 A | 2013-10-18 A | 160, 270, 101, 103 | 100% |  | 2013-08-26 | 2013-09-02 | 0d |  |  | start no earlier than 2013-08-23 | ***SERA OUT si coupure demandé par Gina-------CRM_INTERMEDIATE2 (dev ACN_OFF1) |  |  |  |  | 5.5 days |  |
| 165 | 1.5.1.3.2.4.7 | Completed--------UT-ENH-AO-0020-Decision_CrossPackage-R2.1 *CRM - Enhancement - Decisionning* | milestone | 0d | 2013-10-18 A | 2013-10-18 A | 163, 164 | 100% |  | 2013-09-20 | 2013-10-02 | 0d |  |  |  | Kumar, Nitin |  |  |  |  | 9 days |  |
| 166 | 1.5.1.3.2.4.8 | Completed--------RB-ENH-AO-0020-Decision_CrossPackage-R2.1 *CRM - Enhancement - Decisionning* | milestone | 0d | 2013-10-29 A | 2013-10-29 A | 165FS+7d | 100% |  | 2013-10-11 | 2013-10-11 | 0d |  |  |  |  |  |  |  |  | 0 days |  |

Notes:
- 136: ? For PM: S'assurer de respecter date de baseline de la fin dans planview

| ID | WBS | Task | Type | Duration | Start | Finish | Predecessors | Complete | Remaining | Baseline start | Baseline finish | Baseline duration | Total slack | Free slack | Constraint | Resources | Work | Actual work | Cost | Actual cost | type of Deliverable | work_091113 | ? For PM |
| --- | --- | --- | --- | --- | --- | --- | --- | --- | --- | --- | --- | --- | --- | --- | --- | --- | --- | --- | --- | --- | --- | --- | --- |
| 167 | 1.5.1.3.2.5 | **FS-ENH-AO-0015-Cross_Sell_Renewal_Rego-R2.1 *CRM - Enhancement - Decisionning*** |  | 54.52d | 2013-10-07 | 2013-12-20 |  |  |  | 2013-09-26 | 2013-12-13 | 0d | 10.18d |  |  |  | 480h |  | 480 |  | AP355 | 60 days |  |
| 168 | 1.5.1.3.2.5.1 | TS-ENH-AO-0015-Cross_Sell_Renewal_Rego-R2.1-CR *CRM - Enhancement - Decisionning* |  | 11.5d | 2013-10-07 | 2013-11-04 |  |  |  | 2013-09-26 | 2013-10-10 | 0d | 39.88d | 0d | start no earlier than 2013-09-26 | CRM_INTERMEDIATE_5 ACN_OFF1 [19.6%]; ***SERA OUT si coupure demandée par Gina-------CRM_INTERMEDIATE_6 ACN_OFF1 [53.6%] | 36h |  | 36 |  |  | 4.5 days |  |
| 169 | 1.5.1.3.2.5.2 | BUILD-ENH-AO-0015-Cross_Sell_Renewal_Rego-R2.1-CR *CRM - Enhancement - Decisionning* |  | 3.75d | 2013-11-04 | 2013-11-07 | 168 |  |  | 2013-10-10 | 2013-10-16 | 0d | 39.88d | 0d |  | CRM_INTERMEDIATE_5 ACN_OFF1; ***SERA OUT si coupure demandée par Gina-------CRM_INTERMEDIATE_6 ACN_OFF1 | 60h |  | 60 |  |  | 7.5 days |  |
| 170 | 1.5.1.3.2.5.3 | UT-ENH-AO-0015-Cross_Sell_Renewal_Rego-R2.1-CR *CRM - Enhancement - Decisionning* |  | 1.5d | 2013-11-07 | 2013-11-08 | 169 |  |  | 2013-10-16 | 2013-10-17 | 0d | 39.88d |  |  | CRM_INTERMEDIATE_5 ACN_OFF1; ***SERA OUT si coupure demandée par Gina-------CRM_INTERMEDIATE_6 ACN_OFF1 [120%] | 24h |  | 24 |  |  | 3 days |  |
| 171 | 1.5.1.3.2.5.4 | TS-ENH-AO-0015-Cross_Sell_Renewal_Rego-R2.1 *CRM - Enhancement - Decisionning* |  | 13d | 2013-11-04 | 2013-11-20 | 405, 103, 48 |  |  | 2013-09-26 | 2013-10-15 | 0d | 10.18d | 0d | start no earlier than 2013-11-04 | Shafai, Ramin [103.8%] | 108h |  | 108 |  |  | 13.5 days |  |
| 172 | 1.5.1.3.2.5.5 | RTS-ENH-AO-0015-Cross_Sell_Renewal_Rego-R2.1 *CRM - Enhancement - Decisionning* | milestone | 0d | 2013-11-27 | 2013-11-27 | 171FS+5d |  |  | 2013-10-22 | 2013-10-22 | 0d | 26.88d |  |  |  |  |  |  |  |  | 0 days |  |
| 173 | 1.5.1.3.2.5.6 | BUILD-ENH-AO-0015-Cross_Sell_Renewal_Rego-R2.1 *CRM - Enhancement - Decisionning* |  | 11.25d | 2013-11-21 | 2013-12-06 | 171, 101, 105 |  |  | 2013-10-15 | 2013-11-14 | 0d | 10.18d | 0d |  | Shafai, Ramin; Tolambiya, Shailendra | 180h |  | 180 |  |  | 22.5 days |  |
| 174 | 1.5.1.3.2.5.7 | UT-ENH-AO-0015-Cross_Sell_Renewal_Rego-R2.1 *CRM - Enhancement - Decisionning* |  | 4.44d | 2013-12-06 | 2013-12-12 | 173, 102, 145 |  |  | 2013-11-15 | 2013-12-04 | 0d | 10.18d | 0d |  | Shafai, Ramin [112.5%]; Tolambiya, Shailendra | 72h |  | 72 |  |  | 9 days |  |
| 175 | 1.5.1.3.2.5.8 | RB-ENH-AO-0015-Cross_Sell_Renewal_Rego-R2.1 *CRM - Enhancement - Decisionning* | milestone | 0d | 2013-12-20 | 2013-12-20 | 174FS+6d |  |  | 2013-12-13 | 2013-12-13 | 0d | 10.18d |  |  |  |  |  |  |  |  | 0 days |  |
| 176 | 1.5.1.3.2.6 | **Completed--------FS-WFL-AO-0001-Adjudicator-R2.1 *CRM - Enhancement - Decisionning*** |  | 49.12d | 2013-08-12 A | 2013-10-18 A |  | 100% |  | 2013-08-15 | 2013-10-14 | 0d |  |  |  |  | 337h | 337h | 337 | 337 | AP355 | 40.5 days |  |
| 177 | 1.5.1.3.2.6.1 | Completed--------TS-WFL-AO-0001-Adjudicator-R2.1 *CRM - Enhancement - Decisionning* |  | 15.75d | 2013-08-12 A | 2013-09-27 A |  | 100% |  | 2013-08-15 | 2013-08-29 | 0d |  |  | start no earlier than 2013-08-20 | Kambeli, Venkat Rao | 92h | 92h | 92 | 92 |  | 12.13 days |  |
| 178 | 1.5.1.3.2.6.2 | Completed--------RTS-WFL-AO-0001-Adjudicator-R2.1 *CRM - Enhancement - Decisionning* | milestone | 0d | 2013-10-04 A | 2013-10-04 A | 177FS+5d | 100% |  | 2013-09-05 | 2013-09-05 | 0d |  |  |  |  |  |  |  |  |  | 0 days |  |
| 179 | 1.5.1.3.2.6.3 | Completed-------BUILD-WFL-AO-0001-Adjudicator-R2.1 *CRM - Enhancement - Decisionning* |  | 28.12d | 2013-08-26 A | 2013-10-04 A | 177 | 100% |  | 2013-08-29 | 2013-09-24 | 0d |  |  | start no earlier than 2013-08-28 | Kambeli, Venkat Rao; Venkata, Raghavendra [17.8%] | 150h | 150h | 150 | 150 |  | 20.25 days |  |
| 180 | 1.5.1.3.2.6.4 | Completed--------UT-WFL-AO-0001-Adjudicator-R2.1 *CRM - Enhancement - Decisionning* |  | 13.62d | 2013-09-23 A | 2013-10-09 A | 179 | 100% |  | 2013-09-24 | 2013-10-03 | 0d |  |  | start no earlier than 2013-09-23 | Kambeli, Venkat Rao [236.8%]; Kacham, Santosh [40%] | 95h | 95h | 95 | 95 |  | 8.13 days |  |
| 181 | 1.5.1.3.2.6.5 | Completed--------RB-WFL-AO-0001-Adjudicator-R2.1 *CRM - Enhancement - Decisionning* | milestone | 0d | 2013-10-18 A | 2013-10-18 A | 180FS+7d | 100% |  | 2013-10-14 | 2013-10-14 | 0d |  |  |  |  |  |  |  |  |  | 0 days |  |
| 182 | 1.5.1.3.2.7 | **FS-ENH-AO-0019-Purchase_Decision-R2.1 *CRM - Enhancement - Decisionning*** |  | 41.85d | 2013-09-09 A | 2013-11-05 |  | 59% | 17.26d | 2013-09-02 | 2013-12-17 | 0d | 43.03d |  |  |  | 287h | 180h | 287 | 180 | AP355 | 45 days |  |
| 183 | 1.5.1.3.2.7.1 | TS-ENH-AO-0019-Purchase_Decision-R2.1-ENH *CRM - Enhancement - Decisionning* |  | 23.12d | 2013-09-09 A | 2013-10-07 A |  | 100% |  | 2013-10-16 | 2013-11-04 | 0d |  |  | start no earlier than 2013-10-02 | Reddy, Nithin [30%]; Halali, Sreekanth; Kacham, Santosh; Vallanda, Rohan Poovaiah [540%] | 179h | 179h | 179 | 179 |  | 9 days | Gate 1 |
| 184 | 1.5.1.3.2.7.2 | TS-ENH-AO-0019-Purchase_Decision-R2.1-BRF *CRM - Enhancement - Decisionning* |  | 7.5d | 2013-09-09 | 2013-10-22 |  |  |  | 2013-09-02 | 2013-09-11 | 0d | 53d |  | start no earlier than 2013-09-09 | ***SERA OUT si coupure demandé par Gina-------CRM_INTERMEDIATE2 (dev ACN_OFF1) [60%] | 36h |  | 36 |  |  | 4.5 days |  |
| 185 | 1.5.1.3.2.7.3 | RTS-ENH-AO-0019-Purchase_Decision-R2.1-ENH *CRM - Enhancement - Decisionning* | milestone | 0d | 2013-10-14 A | 2013-10-14 A | 183FS+5d | 100% |  | 2013-11-11 | 2013-11-11 | 0d |  |  |  |  |  |  |  |  |  | 0 days |  |
| 186 | 1.5.1.3.2.7.4 | RTS-ENH-AO-0019-Purchase_Decision-R2.1-BRF *CRM - Enhancement - Decisionning* | milestone | 0d | 2013-10-22 A | 2013-10-22 A | 184FS+5d | 100% |  | 2013-09-18 | 2013-09-18 | 0d |  |  |  |  |  |  |  |  |  | 0 days |  |
| 187 | 1.5.1.3.2.7.5 | Completed--------BUILD-ENH-AO-0019-Purchase_Decision-R2.1-ENH *CRM - Enhancement - Decisionning* | milestone | 0d | 2013-10-04 A | 2013-10-04 A | 183 | 100% |  | 2013-11-04 | 2013-11-25 | 0d |  |  |  | Reddy, Nithin |  |  |  |  |  | 17 days |  |
| 188 | 1.5.1.3.2.7.6 | Completed--------BUILD-ENH-AO-0019-Purchase_Decision-R2.1-BRF *CRM - Enhancement - Decisionning* | milestone | 0d | 2013-10-15 A | 2013-10-15 A | 184, 270 | 100% |  | 2013-09-11 | 2013-09-18 | 0d |  |  |  | ***SERA OUT si coupure demandé par Gina-------CRM_INTERMEDIATE2 (dev ACN_OFF1) |  |  |  |  |  | 5.5 days |  |
| 189 | 1.5.1.3.2.7.7 | UT-ENH-AO-0019-Purchase_Decision-R2.1 *CRM - Enhancement - Decisionning* |  | 18.3d | 2013-09-30 A | 2013-10-30 | 187, 188 | 31% | 12.68d | 2013-11-25 | 2013-12-11 | 0d | 43.03d | 0d |  | Reddy, Nithin [70%] | 72h | 1h | 72 | 1 |  | 9 days |  |
| 190 | 1.5.1.3.2.7.8 | RB-ENH-AO-0019-Purchase_Decision-R2.1 *CRM - Enhancement - Decisionning* | milestone | 0d | 2013-11-05 | 2013-11-05 | 189FS+4d |  |  | 2013-12-17 | 2013-12-17 | 0d | 43.03d |  |  |  |  |  |  |  |  | 0 days |  |

| ID | WBS | Task | Type | Duration | Start | Finish | Predecessors | Complete | Remaining | Baseline start | Baseline finish | Baseline duration | Total slack | Free slack | Constraint | Resources | Work | Actual work | Cost | Actual cost | work_091113 | type of Deliverable |
| --- | --- | --- | --- | --- | --- | --- | --- | --- | --- | --- | --- | --- | --- | --- | --- | --- | --- | --- | --- | --- | --- | --- |
| 191 | 1.5.1.3.3 | **CRM - Enhancement - FULFILLMENT** |  | 93d? | 2013-08-12 A | 2013-12-18 |  | 34% | 60.99d? | 2013-08-15 | 2013-12-17 | 0d | 23.88d |  |  |  | 2968h | 620h | 2,968 | 620 | 360.75 days |  |
| 192 | 1.5.1.3.3.1 | **FS-ENH-AO-0038-Refi_Renewal_Rego_Fulfillment-R2.1 *CRM - Enhancement - Fulfillment*** |  | 88.5d | 2013-08-12 A | 2013-12-12 |  | 45% | 48.51d | 2013-08-26 | 2013-11-19 | 0d | 28.38d |  |  |  | 861h | 253h | 861 | 253 | 108.5 days | AP355 |
| 193 | 1.5.1.3.3.1.1 | Completed--------TS-ENH-AO-0038-Refi_Renewal_Rego_Fulfillment-R2.1-CR *CRM - Enhancement - Fulfillment* |  | 11.25d | 2013-09-09 A | 2013-10-04 A |  | 100% |  | 2013-09-04 | 2013-10-18 | 0d |  |  | start no earlier than 2013-10-03 | Sarkar, Javed; ***SERA OUT si coupure demandée par Gina-------CRM_INTERMEDIATE_6 ACN_OFF1 [27.1%] | 63h | 63h | 63 | 63 | 19 days |  |
| 194 | 1.5.1.3.3.1.2 | BUILD-ENH-AO-0038-Refi_Renewal_Rego_Fulfillment-R2.1-CR *CRM - Enhancement - Fulfillment* |  | 23.62d | 2013-09-30 A | 2013-11-11 | 193 | 24% | 18d | 2013-10-18 | 2013-11-11 | 0d | 33.25d | 0d |  | CRM_INTERMEDIATE_5 ACN_OFF1 [88.9%]; ***SERA OUT si coupure demandée par Gina-------CRM_INTERMEDIATE_6 ACN_OFF1 [90.8%]; Sarkar, Javed [20%] | 265h | 9h | 265 | 9 | 32 days |  |
| 195 | 1.5.1.3.3.1.3 | UT-ENH-AO-0038-Refi_Renewal_Rego_Fulfillment-R2.1-CR *CRM - Enhancement - Fulfillment* |  | 6.25d | 2013-11-12 | 2013-11-19 | 194 |  |  | 2013-11-11 | 2013-11-19 | 0d | 33.25d |  |  | CRM_INTERMEDIATE_5 ACN_OFF1; ***SERA OUT si coupure demandée par Gina-------CRM_INTERMEDIATE_6 ACN_OFF1 [104.2%] | 100h |  | 100 |  | 12.5 days |  |
| 196 | 1.5.1.3.3.1.4 | Completed--------TS-ENH-AO-0038-Refi_Renewal_Rego_Fulfillment-R2.1 *CRM - Enhancement - Fulfillment* |  | 29.08d | 2013-08-12 A | 2013-09-27 A |  | 100% |  | 2013-08-26 | 2013-09-12 | 0d |  |  | start no earlier than 2013-08-26 | Hartley, David [122.4%] | 181h | 181h | 181 | 181 | 13.5 days |  |
| 197 | 1.5.1.3.3.1.5 | Completed--------RTS-ENH-AO-0038-Refi_Renewal_Rego_Fulfillment-R2.1 *CRM - Enhancement - Fulfillment* | milestone | 0d | 2013-10-04 A | 2013-10-04 A | 196FS+5d | 100% |  | 2013-09-19 | 2013-09-19 | 0d |  |  |  |  |  |  |  |  | 0 days |  |
| 198 | 1.5.1.3.3.1.6 | BUILD-ENH-AO-0038-Refi_Renewal_Rego_Fulfillment-R2.1 *CRM - Enhancement - Fulfillment* |  | 22.5d | 2013-10-04 | 2013-11-20 | 196, 101, 103, 104, 105 |  |  | 2013-09-12 | 2013-10-14 | 0d | 28.38d | 0d |  | Shafai, Ramin | 180h |  | 180 |  | 22.5 days |  |
| 199 | 1.5.1.3.3.1.7 | UT-ENH-AO-0038-Refi_Renewal_Rego_Fulfillment-R2.1 *CRM - Enhancement - Fulfillment* |  | 9d | 2013-11-20 | 2013-12-03 | 198 |  |  | 2013-10-15 | 2013-11-04 | 0d | 16.38d | 0d |  | Shafai, Ramin | 72h |  | 72 |  | 9 days |  |
| 200 | 1.5.1.3.3.1.8 | RB-ENH-AO-0038-Refi_Renewal_Rego_Fulfillment-R2.1 *CRM - Enhancement - Fulfillment* | milestone | 0d | 2013-12-12 | 2013-12-12 | 199FS+7d |  |  | 2013-11-13 | 2013-11-13 | 0d | 16.38d |  |  |  |  |  |  |  | 0 days |  |
| 201 | 1.5.1.3.3.2 | **FS-ENH-AO-0040-Conversion_Fulfillment-R2.1 *CRM - Enhancement - Fulfillment*** |  | 15d | 2013-11-15 | 2013-12-06 |  |  |  | 2013-11-04 | 2013-11-22 | 0d | 20.29d |  |  |  | 72h |  | 72 |  | 9 days | AP355 |
| 202 | 1.5.1.3.3.2.1 | TS-ENH-AO-0040-Conversion_Fulfillment-R2.1 *CRM - Enhancement - Fulfillment* |  | 2.5d | 2013-11-15 | 2013-11-19 | 48 |  |  | 2013-11-04 | 2013-11-06 | 0d | 166.81d | 0d | start no earlier than 2013-11-15 | Vallanda, Rohan Poovaiah | 20h |  | 20 |  | 2.5 days |  |
| 203 | 1.5.1.3.3.2.2 | RTS-ENH-AO-0040-Conversion_Fulfillment-R2.1 *CRM - Enhancement - Fulfillment* | milestone | 0d | 2013-11-26 | 2013-11-26 | 202FS+5d |  |  | 2013-11-13 | 2013-11-13 | 0d | 174.56d |  |  |  |  |  |  |  | 0 days |  |
| 204 | 1.5.1.3.3.2.3 | BUILD-ENH-AO-0040-Conversion_Fulfillment-R2.1 *CRM - Enhancement - Fulfillment* |  | 4.5d | 2013-11-19 | 2013-11-25 | 202, 101, 103, 104, 105 |  |  | 2013-11-06 | 2013-11-12 | 0d | 166.81d | 0d | start no earlier than 2013-11-04 | Vallanda, Rohan Poovaiah | 36h |  | 36 |  | 4.5 days |  |
| 205 | 1.5.1.3.3.2.4 | UT-ENH-AO-0040-Conversion_Fulfillment-R2.1 *CRM - Enhancement - Fulfillment* |  | 2d | 2013-11-25 | 2013-11-27 | 204 |  |  | 2013-11-12 | 2013-11-13 | 0d | 166.81d | 0d | start no earlier than 2013-11-12 | Vallanda, Rohan Poovaiah | 16h |  | 16 |  | 2 days |  |
| 206 | 1.5.1.3.3.2.5 | RB-ENH-AO-0040-Conversion_Fulfillment-R2.1 *CRM - Enhancement - Fulfillment* | milestone | 0d | 2013-12-06 | 2013-12-06 | 205FS+7d |  |  | 2013-11-22 | 2013-11-22 | 0d | 166.81d |  |  |  |  |  |  |  | 0 days |  |
| 207 | 1.5.1.3.3.3 | **FS-ENH-AO-0018-PH_CO_Fulfillment-R2.1 *CRM - Enhancement - Fulfillment*** |  | 81d | 2013-08-26 A | 2013-12-16 |  | 20% | 64.86d | 2013-08-26 | 2013-11-06 | 0d | 13.88d |  |  |  | 1169h | 102h | 1,169 | 102 | 148.25 days | AP355 |
| 208 | 1.5.1.3.3.3.1 | TS-ENH-AO-0018-PH_CO_Fulfillment-R2.1-CR *CRM - Enhancement - Fulfillment* |  | 39.26d | 2013-08-26 A | 2013-11-14 |  | 51% | 19.26d | 2013-09-04 | 2013-10-10 | 0d | 35.99d |  | start no earlier than 2013-10-01 | Sarkar, Javed [40%]; ***SERA OUT si coupure demandée par Gina-------CRM_INTERMEDIATE_6 ACN_OFF1 [103.4%]; Hartley, David [197.4%]; (CRM_SENIOR_5) ACN_ON1 601a [110.4%] | 311h | 101h | 311 | 101 | 41 days |  |
| 209 | 1.5.1.3.3.3.2 | BUILD-ENH-AO-0018-PH_CO_Fulfillment-R2.1-CR *CRM - Enhancement - Fulfillment* |  | 43.93d | 2013-10-07 A | 2013-11-29 |  | 13% | 38.3d | 2013-10-10 | 2013-10-17 | 0d | 16.95d | 0d | start no earlier than 2013-11-04 | CRM_INTERMEDIATE_5 ACN_OFF1 [88%]; ***SERA OUT si coupure demandée par Gina-------CRM_INTERMEDIATE_6 ACN_OFF1 [105%] | 356h | 1h | 356 | 1 | 44.5 days |  |
| 210 | 1.5.1.3.3.3.3 | UT-ENH-AO-0018-PH_CO_Fulfillment-R2.1-CR *CRM - Enhancement - Fulfillment* |  | 10d | 2013-11-29 | 2013-12-11 | 209 |  |  | 2013-10-17 | 2013-10-21 | 0d | -3.2d | 0d |  | CRM_INTERMEDIATE_5 ACN_OFF1 [88.8%]; ***SERA OUT si coupure demandée par Gina-------CRM_INTERMEDIATE_6 ACN_OFF1 [88.8%] | 142h |  | 142 |  | 17.75 days |  |
| 211 | 1.5.1.3.3.3.4 | TS-ENH-AO-0018-PH_CO_Fulfillment-R2.1 *CRM - Enhancement - Fulfillment* |  | 13.5d | 2013-09-25 | 2013-11-07 | 48 |  |  | 2013-08-26 | 2013-09-10 | 0d | 13.88d | 0d | start no earlier than 2013-09-18 | Hartley, David | 108h |  | 108 |  | 13.5 days |  |
| 212 | 1.5.1.3.3.3.5 | RTS-ENH-AO-0018-PH_CO_Fulfillment-R2.1 *CRM - Enhancement - Fulfillment* | milestone | 0d | 2013-11-14 | 2013-11-14 | 211FS+5d |  |  | 2013-09-17 | 2013-09-17 | 0d | 33.38d | 0d |  |  |  |  |  |  | 0 days |  |
| 213 | 1.5.1.3.3.3.6 | RTS-ENH-AO-0018-PH_CO_Fulfillment-R2.1-Gate2 *CRM - Enhancement - Fulfillment* | milestone | 0d | 2013-11-19 | 2013-11-19 | 212FS+3d |  |  | 2013-09-20 | 2013-09-20 | 0d | 33.38d |  |  |  |  |  |  |  | 0 days |  |
| 214 | 1.5.1.3.3.3.7 | BUILD-ENH-AO-0018-PH_CO_Fulfillment-R2.1 *CRM - Enhancement - Fulfillment* |  | 12.88d | 2013-11-07 | 2013-11-22 | 211, 101, 103, 104, 105 |  |  | 2013-09-11 | 2013-10-08 | 0d | 13.88d | 0d |  | Hartley, David; (CRM_SENIOR_5) ACN_ON1 601a [87.4%] | 180h |  | 180 |  | 22.5 days |  |
| 215 | 1.5.1.3.3.3.8 | UT-ENH-AO-0018-PH_CO_Fulfillment-R2.1 *CRM - Enhancement - Fulfillment* |  | 9d | 2013-11-25 | 2013-12-05 | 214 |  |  | 2013-10-09 | 2013-10-28 | 0d | 13.88d | 0d | start no earlier than 2013-11-04 | Hartley, David | 72h |  | 72 |  | 9 days |  |
| 216 | 1.5.1.3.3.3.9 | RB-ENH-AO-0018-PH_CO_Fulfillment-R2.1 *CRM - Enhancement - Fulfillment* | milestone | 0d | 2013-12-16 | 2013-12-16 | 215FS+7d |  |  | 2013-11-06 | 2013-11-06 | 0d | 13.88d |  |  |  |  |  |  |  | 0 days |  |

Notes:
- 191: ? For PM: S'assurer de respecter date de baseline de la fin dans planview

| ID | WBS | Task | Type | Duration | Start | Finish | Predecessors | Complete | Remaining | Baseline start | Baseline finish | Baseline duration | Total slack | Free slack | Constraint | Resources | Work | Actual work | Cost | Actual cost | type of Deliverable | work_091113 |
| --- | --- | --- | --- | --- | --- | --- | --- | --- | --- | --- | --- | --- | --- | --- | --- | --- | --- | --- | --- | --- | --- | --- |
| 217 | 1.5.1.3.3.4 | **FS-ENH-AO-0012-RRC_Cancellation-R2.1 *CRM - Enhancement - Fulfillment*** |  | 29.75d | 2013-11-06 | 2013-12-18 |  |  |  | 2013-11-05 | 2013-12-17 | 0d | 12.33d |  |  |  | 204h |  | 204 |  | AP355 | 25.5 days |
| 218 | 1.5.1.3.3.4.1 | TS-ENH-AO-0012-RRC_Cancellation-R2.1 *CRM - Enhancement - Fulfillment* |  | 7.5d | 2013-11-06 | 2013-11-15 |  |  |  | 2013-11-05 | 2013-11-13 | 0d | 158.98d | 0d | start no earlier than 2013-11-06 | ***SERA OUT si coupure demandé par Gina-------CRM_INTERMEDIATE2 (dev ACN_OFF1) | 60h |  | 60 |  |  | 7.5 days |
| 219 | 1.5.1.3.3.4.2 | RTS-ENH-AO-0012-RRC_Cancellation-R2.1 *CRM - Enhancement - Fulfillment* | milestone | 0d | 2013-11-22 | 2013-11-22 | 218FS+5d |  |  | 2013-11-20 | 2013-11-20 | 0d | 174.1d | 0d |  |  |  |  |  |  |  | 0 days |
| 220 | 1.5.1.3.3.4.3 | RTS-ENH-AO-0012-RRC_Cancellation-R2.1-Gate2 *CRM - Enhancement - Fulfillment* | milestone | 0d | 2013-11-27 | 2013-11-27 | 219FS+3d |  |  | 2013-11-25 | 2013-11-25 | 0d | 174.1d |  |  |  |  |  |  |  |  | 0 days |
| 221 | 1.5.1.3.3.4.4 | BUILD-ENH-AO-0012-RRC_Cancellation-R2.1 *CRM - Enhancement - Fulfillment* |  | 13d | 2013-11-15 | 2013-12-02 | 218 |  |  | 2013-11-13 | 2013-11-29 | 0d | 158.98d | 0d | start no earlier than 2013-11-04 | ***SERA OUT si coupure demandé par Gina-------CRM_INTERMEDIATE2 (dev ACN_OFF1) | 104h |  | 104 |  |  | 13 days |
| 222 | 1.5.1.3.3.4.5 | UT-ENH-AO-0012-RRC_Cancellation-R2.1 *CRM - Enhancement - Fulfillment* |  | 6.25d | 2013-12-02 | 2013-12-10 | 221 |  |  | 2013-11-29 | 2013-12-09 | 0d | 158.98d | 0d | start no earlier than 2013-11-25 | ***SERA OUT si coupure demandé par Gina-------CRM_INTERMEDIATE2 (dev ACN_OFF1) [80%] | 40h |  | 40 |  |  | 5 days |
| 223 | 1.5.1.3.3.4.6 | RB-ENH-AO-0012-RRC_Cancellation-R2.1 *CRM - Enhancement - Fulfillment* | milestone | 0d | 2013-12-18 | 2013-12-18 | 222FS+6d |  |  | 2013-12-17 | 2013-12-17 | 0d | 158.98d |  |  |  |  |  |  |  |  | 0 days |
| 224 | 1.5.1.3.3.5 | **On hold--------FS-ENH-AO-0011-RRC_PDC-R2.1 *CRM - Enhancement - Fulfillment*** |  | 48.83d | 2013-09-16 A | 2013-11-21 |  | 44% | 27.17d | 2013-10-07 | 2013-11-22 | 0d | 31.04d |  |  |  | 257h | 122h | 257 | 122 | AP355 | 27.5 days |
| 225 | 1.5.1.3.3.5.1 | Completed--------TS-ENH-AO-0011-RRC_PDC-R2.1 *CRM - Enhancement - Fulfillment* |  | 8.25d | 2013-09-16 A | 2013-09-25 A |  | 100% |  | 2013-10-07 | 2013-10-17 | 0d |  |  | start no earlier than 2013-09-26 | Kumar, Abhimanyu [123.8%] | 71h | 71h | 71 | 71 |  | 8.25 days |
| 226 | 1.5.1.3.3.5.2 | Completed--------RTS-ENH-AO-0011-RRC_PDC-R2.1 *CRM - Enhancement - Fulfillment* | milestone | 0d | 2013-10-02 A | 2013-10-02 A | 225FS+5d | 100% |  | 2013-10-24 | 2013-10-24 | 0d |  |  |  |  |  |  |  |  |  | 0 days |
| 227 | 1.5.1.3.3.5.3 | On hold--------BUILD-ENH-AO-0011-RRC_PDC-R2.1 *CRM - Enhancement - Fulfillment* |  | 30.21d | 2013-09-25 A | 2013-11-05 | 225 | 37% | 18.96d | 2013-10-17 | 2013-11-06 | 0d | 31.04d | 0d |  | Sarkar, Javed [60%]; Kumar, Abhimanyu [71.1%] | 142h | 51h | 142 | 51 |  | 13.75 days |
| 228 | 1.5.1.3.3.5.4 | UT-ENH-AO-0011-RRC_PDC-R2.1 *CRM - Enhancement - Fulfillment* |  | 5.5d | 2013-11-05 | 2013-11-12 | 227 |  |  | 2013-11-06 | 2013-11-13 | 0d | 31.04d | 0d | start no earlier than 2013-11-04 | Sarkar, Javed | 44h |  | 44 |  |  | 5.5 days |
| 229 | 1.5.1.3.3.5.5 | RB-ENH-AO-0011-RRC_PDC-R2.1 *CRM - Enhancement - Fulfillment* | milestone | 0d | 2013-11-21 | 2013-11-21 | 228FS+7d |  |  | 2013-11-22 | 2013-11-22 | 0d | 31.04d |  |  |  |  |  |  |  |  | 0 days |
| 230 | 1.5.1.3.3.6 | **FS-WFL-AO-0004-Disb_error-R2.1 *CRM - Enhancement - Fulfillment*** |  | 32.88d | 2013-10-07 | 2013-11-20 |  |  |  | 2013-08-15 | 2013-09-16 | 0d | 32d |  |  |  | 142h |  | 142 |  | AP355 | 17.75 days |
| 231 | 1.5.1.3.3.6.1 | TS-WFL-AO-0004-Disb_error-R2.1 *CRM - Enhancement - Fulfillment* |  | 5.25d | 2013-10-07 | 2013-10-25 |  |  |  | 2013-08-15 | 2013-08-21 | 0d | 32d | 0d | start no earlier than 2013-09-30 | Kambeli, Venkat Rao | 42h |  | 42 |  |  | 5.25 days |
| 232 | 1.5.1.3.3.6.2 | RTS-WFL-AO-0004-Disb_error-R2.1 *CRM - Enhancement - Fulfillment* | milestone | 0d | 2013-11-01 | 2013-11-01 | 231FS+5d |  |  | 2013-08-28 | 2013-08-28 | 0d | 42.12d | 0d |  |  |  |  |  |  |  | 0 days |
| 233 | 1.5.1.3.3.6.3 | RTS-WFL-AO-0004-Disb_error-R2.1-Gate2 *CRM - Enhancement - Fulfillment* | milestone | 0d | 2013-11-06 | 2013-11-06 | 232FS+3d |  |  | 2013-09-02 | 2013-09-02 | 0d | 42.12d |  |  |  |  |  |  |  |  | 0 days |
| 234 | 1.5.1.3.3.6.4 | BUILD-WFL-AO-0004-Disb_error-R2.1 *CRM - Enhancement - Fulfillment* |  | 9d | 2013-10-25 | 2013-11-06 | 231 |  |  | 2013-08-21 | 2013-09-02 | 0d | 32d | 0d | start no earlier than 2013-10-08 | Kambeli, Venkat Rao | 72h |  | 72 |  |  | 9 days |
| 235 | 1.5.1.3.3.6.5 | UT-WFL-AO-0004-Disb_error-R2.1 *CRM - Enhancement - Fulfillment* |  | 3.5d | 2013-11-06 | 2013-11-11 | 234 |  |  | 2013-09-02 | 2013-09-05 | 0d | 32d | 0d | start no earlier than 2013-10-16 | Kambeli, Venkat Rao | 28h |  | 28 |  |  | 3.5 days |
| 236 | 1.5.1.3.3.6.6 | RB-WFL-AO-0004-Disb_error-R2.1 *CRM - Enhancement - Fulfillment* | milestone | 0d | 2013-11-20 | 2013-11-20 | 235FS+7d |  |  | 2013-09-16 | 2013-09-16 | 0d | 32d |  |  |  |  |  |  |  |  | 0 days |
| 237 | 1.5.1.3.3.7 | **Completed--------FS-ENH-AO-0037-Assumption_Fulfillment-R2.1 *CRM - Enhancement - Fulfillment*** |  | 33d? | 2013-09-09 A | 2013-10-23 A |  | 100% |  |  |  |  |  |  |  |  | 143h | 143h | 143 | 143 | AP355 | 9.25 days |
| 238 | 1.5.1.3.3.7.1 | Completed--------TS-ENH-AO-0037-Assumption_Fulfillment-R2.1 *CRM - Enhancement - Fulfillment* |  | 11.25d | 2013-09-09 A | 2013-09-27 A |  | 100% |  |  |  |  |  |  | start no earlier than 2013-09-16 | Sarkar, Javed | 63h | 63h | 63 | 63 |  | 2.75 days |
| 239 | 1.5.1.3.3.7.2 | Completed--------RTS-ENH-AO-0037-Assumption_Fulfillment-R2.1 *CRM - Enhancement - Fulfillment* |  | 1d? | 2013-10-07 A | 2013-10-07 A | 238FS+5d | 100% |  |  |  |  |  |  |  |  |  |  |  |  |  | 0 days |
| 240 | 1.5.1.3.3.7.3 | Completed--------BUILD-ENH-AO-0037-Assumption_Fulfillment-R2.1 *CRM - Enhancement - Fulfillment* |  | 16.88d | 2013-09-09 A | 2013-10-11 A | 238 | 100% |  |  |  |  |  |  |  | Sarkar, Javed [64.4%]; Kumar Sahoo, Saroj [40%] | 65h | 65h | 65 | 65 |  | 4.63 days |
| 241 | 1.5.1.3.3.7.4 | Completed--------UT-ENH-AO-0037-Assumption_Fulfillment-R2.1 *CRM - Enhancement - Fulfillment* |  | 11.25d? | 2013-09-30 A | 2013-10-11 A | 240 | 100% |  |  |  |  |  |  |  | Sarkar, Javed [20%] | 15h | 15h | 15 | 15 |  | 1.88 days |
| 242 | 1.5.1.3.3.7.5 | Completed--------RB-ENH-AO-0037-Assumption_Fulfillment-R2.1 *CRM - Enhancement - Fulfillment* |  | 1d? | 2013-10-23 A | 2013-10-23 A | 241FS+7d | 100% |  |  |  |  |  |  |  |  |  |  |  |  |  | 0 days |

| ID | WBS | Task | Type | Duration | Start | Finish | Predecessors | Complete | Remaining | Baseline start | Baseline finish | Baseline duration | Total slack | Free slack | Constraint | Resources | Work | Actual work | Cost | Actual cost | type of Deliverable | work_091113 |
| --- | --- | --- | --- | --- | --- | --- | --- | --- | --- | --- | --- | --- | --- | --- | --- | --- | --- | --- | --- | --- | --- | --- |
| 243 | 1.5.1.3.3.8 | **FS-ENH-AO-0085_Quote_Search_Enh-R2.1 *CRM - Enhancement - Fulfillment*** |  | 18.71d? | 2013-11-22 | 2013-12-18 |  |  |  |  |  |  | 11.84d |  |  |  | 120h |  | 120 |  | AP355 | 15 days |
| 244 | 1.5.1.3.3.8.1 | TS-ENH-AO-0085_Quote_Search_Enh-R2.1 *CRM - Enhancement - Fulfillment* |  | 4.5d? | 2013-11-22 | 2013-11-28 |  |  |  |  |  |  | 158.48d | 0d | start no earlier than 2013-11-22 | Kacham, Santosh | 36h |  | 36 |  |  | 4.5 days |
| 245 | 1.5.1.3.3.8.2 | RTS-ENH-AO-0085_Quote_Search_Enh-R2.1 *CRM - Enhancement - Fulfillment* |  | 1d? | 2013-12-05 | 2013-12-06 | 244FS+5d |  |  |  |  |  | 167.1d |  |  |  |  |  |  |  |  | 0 days |
| 246 | 1.5.1.3.3.8.3 | BUILD-ENH-AO-0085_Quote_Search_Enh-R2.1 *CRM - Enhancement - Fulfillment* |  | 7.5d? | 2013-11-28 | 2013-12-06 | 244 |  |  |  |  |  | 158.39d | 0d |  | Kacham, Santosh | 60h |  | 60 |  |  | 7.5 days |
| 247 | 1.5.1.3.3.8.4 | UT-ENH-AO-0085_Quote_Search_Enh-R2.1 *CRM - Enhancement - Fulfillment* |  | 1.75d? | 2013-12-06 | 2013-12-10 | 246 |  |  |  |  |  | 164.85d |  |  | Kacham, Santosh [82%]; Sarkar, Javed | 24h |  | 24 |  |  | 3 days |
| 248 | 1.5.1.3.3.8.5 | RB-ENH-AO-0085_Quote_Search_Enh-R2.1 *CRM - Enhancement - Fulfillment* |  | 1d? | 2013-12-18 | 2013-12-18 | 246FS+7d |  |  |  |  |  | 158.39d |  |  |  |  |  |  |  |  | 0 days |
| 249 | 1.5.1.3.4 | **CRM - Enhancement - FOUNDATION** |  | 109d | 2013-07-15 A | 2013-12-13 |  | 65% | 38.19d | 2013-07-18 | 2013-10-01 | 0d | 15.88d |  |  |  | 875h | 469h | 875 | 469 |  | 101.38 days |
| 250 | 1.5.1.3.4.1 | **FS-ENH-AO-0048-FOUNDN_UI_FRMWRK-R2.1 *CRM - Enhancement - Foundation*** |  | 97d | 2013-07-15 A | 2013-11-26 |  | 58% | 40.41d | 2013-07-18 | 2013-08-30 | 0d | 27.88d |  |  |  | 442h | 155h | 442 | 155 | AP355 | 56.75 days |
| 251 | 1.5.1.3.4.1.1 | Completed--------TS-ENH-AO-0048-FOUNDN_UI_FRMWRK-R2.1 *CRM - Enhancement - Foundation* |  | 22.5d | 2013-07-15 A | 2013-09-27 A |  | 100% |  | 2013-07-18 | 2013-07-29 | 0d |  |  | start no earlier than 2013-07-22 | Bhandari, Himanshu; Kumar, Nitin | 134h | 134h | 134 | 134 |  | 18.25 days |
| 252 | 1.5.1.3.4.1.2 | Completed--------RTS-ENH-AO-0048-FOUNDN_UI_FRMWRK-R2.1 *CRM - Enhancement - Foundation* | milestone | 0d | 2013-11-08 A | 2013-11-08 A | 251FS+30d | 100% |  | 2013-08-01 | 2013-08-01 | 0d |  |  |  |  |  |  |  |  |  | 0 days |
| 253 | 1.5.1.3.4.1.3 | Completed-------- RTS-ENH-AO-0048-FOUNDN_UI_FRMWRK-R2.1-Gate2 *CRM - Enhancement - Foundation* | milestone | 0d | 2013-11-13 A | 2013-11-13 A | 252FS+3d | 100% |  | 2013-08-06 | 2013-08-06 | 0d |  |  |  |  |  |  |  |  |  | 0 days |
| 254 | 1.5.1.3.4.1.4 | BUILD-ENH-AO-0048-FOUNDN_UI_FRMWRK-R2.1 *CRM - Enhancement - Foundation* |  | 25d | 2013-07-29 A | 2013-11-06 | 251 | 23% | 19.38d | 2013-07-29 | 2013-08-14 | 0d | 26.88d | 0d | start no earlier than 2013-07-19 | Bhandari, Himanshu [81.4%]; Kumar, Nitin | 220h | 18h | 220 | 18 |  | 27.5 days |
| 255 | 1.5.1.3.4.1.5 | UT-ENH-AO-0048-FOUNDN_UI_FRMWRK-R2.1 *CRM - Enhancement - Foundation* |  | 20d | 2013-07-29 A | 2013-11-15 | 254 | 56% | 8.75d | 2013-08-14 | 2013-08-21 | 0d | 27.88d | 0d | start no earlier than 2013-08-07 | Bhandari, Himanshu [60%]; Kumar, Nitin [61.4%] | 88h | 3h | 88 | 3 |  | 11 days |
| 256 | 1.5.1.3.4.1.6 | RB-ENH-AO-0048-FOUNDN_UI_FRMWRK-R2.1 *CRM - Enhancement - Foundation* | milestone | 0d | 2013-11-26 | 2013-11-26 | 255FS+7d |  |  | 2013-08-30 | 2013-08-30 | 0d | -266.94d | 0d | finish no earlier than 2013-10-04 |  |  |  |  |  |  | 0 days |
| 257 | 1.5.1.3.4.2 | **Completed--------FS-ENH-AO-0045-FOUNDN_INFLIGHT-R2.1 *CRM - Enhancement - Foundation*** |  | 57d | 2013-07-29 A | 2013-10-15 A |  | 100% |  | 2013-08-15 | 2013-10-01 | 0d |  |  |  |  | 144h | 144h | 144 | 144 | AP355 | 22.88 days |
| 258 | 1.5.1.3.4.2.1 | Completed--------TS-ENH-AO-0045-FOUNDN_INFLIGHT-R2.1 *CRM - Enhancement - Foundation* |  | 15d | 2013-07-29 A | 2013-08-16 A |  | 100% |  | 2013-08-15 | 2013-08-27 | 0d |  |  |  | Shafai, Ramin [80%] | 71h | 71h | 71 | 71 |  | 8.88 days |
| 259 | 1.5.1.3.4.2.2 | Completed--------RTS-ENH-AO-0045-FOUNDN_INFLIGHT-R2.1 *CRM - Enhancement - Foundation* | milestone | 0d | 2013-08-23 A | 2013-08-23 A | 258FS+5d | 100% |  | 2013-09-03 | 2013-09-03 | 0d |  |  |  |  |  |  |  |  |  | 0 days |
| 260 | 1.5.1.3.4.2.3 | Completed--------BUILD-ENH-AO-0045-FOUNDN_INFLIGHT-R2.1 *CRM - Enhancement - Foundation* |  | 15d | 2013-08-12 A | 2013-09-06 A |  | 100% |  | 2013-08-28 | 2013-09-17 | 0d |  |  |  | Shafai, Ramin [80%] | 64h | 64h | 64 | 64 |  | 8 days |
| 261 | 1.5.1.3.4.2.4 | Completed--------UT-ENH-AO-0045-FOUNDN_INFLIGHT-R2.1 *CRM - Enhancement - Foundation* |  | 15d | 2013-09-02 A | 2013-09-20 A |  | 100% |  | 2013-09-18 | 2013-09-25 | 0d |  |  |  | Shafai, Ramin [10%] | 9h | 9h | 9 | 9 |  | 6 days |
| 262 | 1.5.1.3.4.2.5 | Completed--------RB-ENH-AO-0045-FOUNDN_INFLIGHT-R2.1 *CRM - Enhancement - Foundation* | milestone | 0d | 2013-10-15 A | 2013-10-15 A |  | 100% |  | 2013-10-01 | 2013-10-01 | 0d |  |  | finish no earlier than 2013-10-15 |  |  |  |  |  |  | 0 days |
| 263 | 1.5.1.3.4.3 | **FS-ENH-AO-0049-FORM_TRIGGER-R2.1 *CRM - Enhancement - Foundation*** |  | 84d | 2013-08-19 A | 2013-12-13 |  | 13% | 73.24d | 2013-08-19 | 2013-09-27 | 0d | 15.88d |  |  |  | 120h | 1h | 120 | 1 | AP355 | 0 days |
| 264 | 1.5.1.3.4.3.1 | TS-ENH-AO-0049-FORM_TRIGGER-R2.1 *CRM - Enhancement - Foundation* |  | 32.53d | 2013-08-19 A | 2013-11-27 |  | 15% | 27.53d | 2013-08-19 | 2013-08-28 | 0d | 20.83d | 0d | start no earlier than 2013-08-19 | Generic ACCON ACN_ON1 [26.8%] | 60h | 1h | 60 | 1 |  | 0 days |
| 265 | 1.5.1.3.4.3.2 | RTS-ENH-AO-0049-FORM_TRIGGER-R2.1 *CRM - Enhancement - Foundation* | milestone | 0d | 2013-09-04 A | 2013-09-04 A | 264FS+3d | 100% |  | 2013-09-02 | 2013-09-02 | 0d |  |  |  |  |  |  |  |  |  | 0 days |
| 266 | 1.5.1.3.4.3.3 | BUILD-ENH-AO-0049-FORM_TRIGGER-R2.1 *CRM - Enhancement - Foundation* |  | 4.51d | 2013-11-27 | 2013-12-04 | 264 |  |  | 2013-08-28 | 2013-09-16 | 0d | 20.83d | 0d |  | Generic ACCON ACN_ON1 [138.5%] | 50h |  | 50 |  |  | 0 days |
| 267 | 1.5.1.3.4.3.4 | UT-ENH-AO-0049-FORM_TRIGGER-R2.1 *CRM - Enhancement - Foundation* |  | 2d | 2013-10-30 A | 2013-12-06 | 266 |  | 2d | 2013-09-16 | 2013-09-23 | 0d | 20.83d |  |  | Generic ACCON ACN_ON1 [62.5%] | 10h |  | 10 |  |  | 0 days |
| 268 | 1.5.1.3.4.3.5 | RB-ENH-AO-0049-FORM_TRIGGER-R2.1 *CRM - Enhancement - Foundation* | milestone | 0d | 2013-12-13 | 2013-12-13 |  |  |  | 2013-09-27 | 2013-09-27 | 0d | 15.88d |  | start no earlier than 2013-12-13 |  |  |  |  |  |  | 0 days |

Notes:
- 249: ? For PM: S'assurer de respecter date de baseline de la fin dans planview
- 263: ? For PM: Nous conservons cette generic car seront plusieurs ressources à travailler sur ce FS. Nous ajusteront donc le remaining au fur et à mesure de la consommation à la baisse

| ID | WBS | Task | Type | Duration | Start | Finish | Predecessors | Complete | Remaining | Baseline start | Baseline finish | Baseline duration | Total slack | Free slack | Constraint | Resources | Work | Actual work | Cost | Actual cost | type of Deliverable | work_091113 |
| --- | --- | --- | --- | --- | --- | --- | --- | --- | --- | --- | --- | --- | --- | --- | --- | --- | --- | --- | --- | --- | --- | --- |
| 269 | 1.5.1.3.4.4 | **Completed--------FS-ENH-AO-0052-FOUNDN_PSO_BRF-R2.1 *CRM - Enhancement - Foundation*** |  | 47d | 2013-08-05 A | 2013-10-08 A |  | 100% |  | 2013-08-15 | 2013-09-13 | 0d |  |  |  |  | 169h | 169h | 169 | 169 | AP355 | 21.75 days |
| 270 | 1.5.1.3.4.4.1 | Completed--------TS-ENH-AO-0052-FOUNDN_PSO_BRF-R2.1 *CRM - Enhancement - Foundation* |  | 4.5d | 2013-08-05 A | 2013-08-08 A |  | 100% |  | 2013-08-15 | 2013-08-20 | 0d |  |  | start no earlier than 2013-08-15 | Sarkar, Javed [125%] | 45h | 45h | 45 | 45 |  | 5.63 days |
| 271 | 1.5.1.3.4.4.2 | Completed--------RTS-ENH-AO-0052-FOUNDN_PSO_BRF-R2.1 *CRM - Enhancement - Foundation* | milestone | 0d | 2013-08-15 A | 2013-08-15 A | 270FS+5d | 100% |  | 2013-08-27 | 2013-08-27 | 0d |  |  |  |  |  |  |  |  |  | 0 days |
| 272 | 1.5.1.3.4.4.3 | Completed--------BUILD-ENH-AO-0052-FOUNDN_PSO_BRF-R2.1 *CRM - Enhancement - Foundation* |  | 15.75d | 2013-08-12 A | 2013-08-30 A |  | 100% |  | 2013-08-21 | 2013-08-30 | 0d |  |  | start no earlier than 2013-08-21 | Sarkar, Javed | 79h | 79h | 79 | 79 |  | 9.88 days |
| 273 | 1.5.1.3.4.4.4 | Completed--------UT-ENH-AO-0052-FOUNDN_PSO_BRF-R2.1 *CRM - Enhancement - Foundation* |  | 5.62d | 2013-08-26 A | 2013-09-27 A |  | 100% |  | 2013-09-02 | 2013-09-04 | 0d |  |  | start no earlier than 2013-09-02 | Sarkar, Javed | 45h | 45h | 45 | 45 |  | 6.25 days |
| 274 | 1.5.1.3.4.4.5 | Completed--------RB-ENH-AO-0052-FOUNDN_PSO_BRF-R2.1 *CRM - Enhancement - Foundation* | milestone | 0d | 2013-10-08 A | 2013-10-08 A | 273FS+7d | 100% |  | 2013-09-13 | 2013-09-13 | 0d |  |  |  |  |  |  |  |  |  | 0 days |
| 275 | 1.5.1.3.5 | **CRM - Enhancement - Extended Scope** |  | 93.3d? | 2013-08-12 A | 2013-12-19 |  | 26% | 69.32d? | 2013-07-15 | 2013-12-23 | 0d | 23.57d |  |  |  | 6043h | 810.5h | 6,043 | 810.5 |  | 837.5 days |
| 276 | 1.5.1.3.5.1 | **FS-ENH-AO-0105-CAMP_ACTIVATION *CRM - Enhancement - ExtScope*** |  | 81.06d | 2013-08-26 A | 2013-12-17 |  | 21% | 64.35d | 2013-08-26 | 2013-12-23 | 0d | 13.81d |  |  |  | 361.5h | 15h | 361.5 | 15 | AP355 | 45.19 days |
| 277 | 1.5.1.3.5.1.1 | TS-ENH-AO-0105-CAMP_ACTIVATION *CRM - Enhancement - ExtScope* |  | 22.88d | 2013-08-26 A | 2013-10-28 |  | 49% | 11.62d | 2013-08-26 | 2013-09-12 | 0d | 13.81d | 0d | start no earlier than 2013-08-26 | Halali, Sreekanth | 108h | 15h | 108 | 15 |  | 13.5 days |
| 278 | 1.5.1.3.5.1.2 | RTS-ENH-AO-0105-CAMP_ACTIVATION *CRM - Enhancement - ExtScope* | milestone | 0d | 2013-11-04 | 2013-11-04 | 277FS+5d |  |  | 2013-09-19 | 2013-09-19 | 0d | 44.5d |  | start no earlier than 2013-07-23 |  |  |  |  |  |  | 0 days |
| 279 | 1.5.1.3.5.1.3 | BUILD-ENH-AO-0105-CAMP_ACTIVATION *CRM - Enhancement - ExtScope* |  | 22.62d | 2013-10-28 | 2013-11-27 | 277 |  |  | 2013-11-04 | 2013-12-04 | 0d | 13.81d | 0d |  | Tolambiya, Shailendra | 181h |  | 181 |  |  | 22.63 days |
| 280 | 1.5.1.3.5.1.4 | UT-ENH-AO-0105-CAMP_ACTIVATION *CRM - Enhancement - ExtScope* |  | 9.06d | 2013-11-28 | 2013-12-11 | 279 |  |  | 2013-12-04 | 2013-12-17 | 0d | 13.81d | 0d |  | Tolambiya, Shailendra | 72.5h |  | 72.5 |  |  | 9.06 days |
| 281 | 1.5.1.3.5.1.5 | RB-ENH-AO-0105-CAMP_ACTIVATION *CRM - Enhancement - ExtScope* | milestone | 0d | 2013-12-17 | 2013-12-17 | 280FS+4d |  |  | 2013-12-23 | 2013-12-23 | 0d | 13.81d |  | start no earlier than 2013-09-06 |  |  |  |  |  |  | 0 days |
| 282 | 1.5.1.3.5.2 | **Completed--------FS-ENH-AO-0106-CAMP_BP *CRM - Enhancement - ExtScope*** |  | 45d | 2013-08-12 A | 2013-10-11 A |  | 100% |  | 2013-08-15 | 2013-09-26 | 0d |  |  |  |  | 194h | 194h | 194 | 194 | AP355 | 32 days |
| 283 | 1.5.1.3.5.2.1 | Completed--------TS-ENH-AO-0106-CAMP_BP *CRM - Enhancement - ExtScope* |  | 11.25d | 2013-08-12 A | 2013-08-27 A |  | 100% |  | 2013-08-15 | 2013-08-27 | 0d |  |  | start no earlier than 2013-08-22 | Halali, Sreekanth [276.7%] | 88h | 88h | 88 | 88 |  | 11 days |
| 284 | 1.5.1.3.5.2.2 | Completed--------RTS-ENH-AO-0106-CAMP_BP *CRM - Enhancement - ExtScope* | milestone | 0d | 2013-08-30 A | 2013-08-30 A |  | 100% |  | 2013-08-30 | 2013-08-30 | 0d |  |  | start no earlier than 2013-07-17 |  |  |  |  |  |  | 0 days |
| 285 | 1.5.1.3.5.2.3 | Completed--------BUILD-ENH-AO-0106-CAMP_BP *CRM - Enhancement - ExtScope* |  | 11.25d | 2013-08-26 A | 2013-09-20 A |  | 100% |  | 2013-08-27 | 2013-09-13 | 0d |  |  | start no earlier than 2013-07-12 | Halali, Sreekanth [44.4%] | 35h | 35h | 35 | 35 |  | 15 days |
| 286 | 1.5.1.3.5.2.4 | Completed--------UT-ENH-AO-0106-CAMP_BP *CRM - Enhancement - ExtScope* |  | 22.5d | 2013-09-02 A | 2013-10-11 A |  | 100% |  | 2013-09-13 | 2013-09-20 | 0d |  |  | start no earlier than 2013-08-02 | Halali, Sreekanth [33.3%]; Kambeli, Venkat Rao [31.1%]; Kacham, Santosh [80%] | 71h | 71h | 71 | 71 |  | 6 days |
| 287 | 1.5.1.3.5.2.5 | Completed--------RB-ENH-AO-0106-CAMP_BP *CRM - Enhancement - ExtScope* | milestone | 0d | 2013-09-12 A | 2013-09-12 A |  | 100% |  | 2013-09-26 | 2013-09-26 | 0d |  |  | start no earlier than 2013-08-16 |  |  |  |  |  |  | 0 days |
| 288 | 1.5.1.3.5.3 | **Completed--------FS-ENH-AO-0107-CAMP_CDA *CRM - Enhancement - ExtScope*** |  | 47d | 2013-08-19 A | 2013-10-22 |  | 99% | 0d | 2013-08-15 | 2013-10-01 | 0d | 52.88d |  |  |  | 247h | 247h | 247 | 247 | AP355 | 30 days |
| 289 | 1.5.1.3.5.3.1 | Completed--------TS-ENH-AO-0107-CAMP_CDA *CRM - Enhancement - ExtScope* |  | 16.25d | 2013-08-19 A | 2013-10-04 A |  | 100% |  | 2013-08-15 | 2013-08-27 | 0d |  |  | start no earlier than 2013-08-29 | Sarkar, Javed [4.4%]; Kumar, Abhimanyu [112.5%] | 79h | 79h | 79 | 79 |  | 9 days |
| 290 | 1.5.1.3.5.3.2 | Completed--------RTS-ENH-AO-0107-CAMP_CDA *CRM - Enhancement - ExtScope* | milestone | 0d | 2013-10-11 A | 2013-10-11 A | 289FS+5d | 100% |  | 2013-09-03 | 2013-09-03 | 0d |  |  | start no earlier than 2013-07-17 |  |  |  |  |  |  | 0 days |
| 291 | 1.5.1.3.5.3.3 | Completed--------BUILD-ENH-AO-0107-CAMP_CDA *CRM - Enhancement - ExtScope* |  | 22.5d | 2013-09-09 A | 2013-10-11 A | 289 | 100% |  | 2013-08-27 | 2013-09-13 | 0d |  |  | start no earlier than 2013-07-12 | Kumar, Abhimanyu [37.8%]; Kacham, Santosh | 135h | 135h | 135 | 135 |  | 15 days |
| 292 | 1.5.1.3.5.3.4 | Completed--------UT-ENH-AO-0107-CAMP_CDA *CRM - Enhancement - ExtScope* |  | 16.88d | 2013-09-23 A | 2013-10-11 A | 291 | 100% |  | 2013-09-13 | 2013-09-20 | 0d |  |  | start no earlier than 2013-08-02 | Kumar, Abhimanyu [40%] | 33h | 33h | 33 | 33 |  | 6 days |
| 293 | 1.5.1.3.5.3.5 | Completed--------RB-ENH-AO-0107-CAMP_CDA *CRM - Enhancement - ExtScope* | milestone | 0d | 2013-10-22 | 2013-10-22 | 292FS+7d |  |  | 2013-10-01 | 2013-10-01 | 0d | 199.39d |  | start no earlier than 2013-08-16 |  |  |  |  |  |  | 0 days |

Notes:
- 275: ? For PM: S'assurer de respecter date de baseline de la fin dans planview

| ID | WBS | Task | Type | Duration | Start | Finish | Predecessors | Complete | Remaining | Baseline start | Baseline finish | Baseline duration | Total slack | Free slack | Constraint | Resources | Work | Actual work | Cost | Actual cost | type of Deliverable | work_091113 | ? For PM |
| --- | --- | --- | --- | --- | --- | --- | --- | --- | --- | --- | --- | --- | --- | --- | --- | --- | --- | --- | --- | --- | --- | --- | --- |
| 294 | 1.5.1.3.5.4 | **FS-ENH-AO-0108-CAMP_CROSSSELL *CRM - Enhancement - ExtScope*** |  | 51.94d | 2013-09-30 A | 2013-12-10 |  | 19% | 42.03d | 2013-09-16 | 2013-12-02 | 0d | 17.94d |  |  |  | 554h | 19h | 554 | 19 | AP355 | 69.25 days |  |
| 295 | 1.5.1.3.5.4.1 | TS-ENH-AO-0108-CAMP_CROSSSELL *CRM - Enhancement - ExtScope* |  | 30.93d | 2013-09-30 A | 2013-11-06 |  | 36% | 19.68d | 2013-09-16 | 2013-10-03 | 0d | -7.55d | 0d | start no earlier than 2013-09-30 | Ta, Bach Sim; Kumar Sahoo, Saroj [46.4%]; Sarkar, Javed [22.2%] | 166h | 19h | 166 | 19 |  | 20.75 days |  |
| 296 | 1.5.1.3.5.4.2 | RTS-ENH-AO-0108-CAMP_CROSSSELL *CRM - Enhancement - ExtScope* | milestone | 0d | 2013-11-13 | 2013-11-13 | 295FS+5d |  |  | 2013-10-10 | 2013-10-10 | 0d | 37.32d |  | start no earlier than 2013-07-23 |  |  |  |  |  |  | 0 days |  |
| 297 | 1.5.1.3.5.4.3 | BUILD-ENH-AO-0108-CAMP_CROSSSELL *CRM - Enhancement - ExtScope* |  | 20.25d | 2013-10-25 | 2013-11-20 | 295 |  |  | 2013-10-08 | 2013-11-08 | 0d | -7.55d | 0d | finish no later than 2013-11-20 | Ta, Bach Sim; CRM_INTERMEDIATE_5 ACN_OFF1 [85.5%] | 277h |  | 277 |  |  | 34.63 days |  |
| 298 | 1.5.1.3.5.4.4 | UT-ENH-AO-0108-CAMP_CROSSSELL *CRM - Enhancement - ExtScope* |  | 7.81d | 2013-11-20 | 2013-11-29 | 297 |  |  | 2013-11-08 | 2013-11-21 | 0d | 17.94d | 0d | start no earlier than 2013-11-08 | Ta, Bach Sim; ***SERA OUT si coupure demandée par Gina-------CRM_INTERMEDIATE_6 ACN_OFF1 | 111h |  | 111 |  |  | 13.88 days |  |
| 299 | 1.5.1.3.5.4.5 | RB-ENH-AO-0108-CAMP_CROSSSELL *CRM - Enhancement - ExtScope* | milestone | 0d | 2013-12-10 | 2013-12-10 | 298FS+7d |  |  | 2013-12-02 | 2013-12-02 | 0d | 17.94d |  | start no earlier than 2013-09-06 |  |  |  |  |  |  | 0 days |  |
| 300 | 1.5.1.3.5.5 | **FS-ENH-AO-0112-CAMP_SETUP *CRM - Enhancement - ExtScope*** |  | 74.5d | 2013-08-12 A | 2013-11-22 |  | 53% | 35.26d | 2013-08-19 | 2013-10-28 | 0d | 30.38d |  |  |  | 481h | 197h | 481 | 197 | AP355 | 60.56 days |  |
| 301 | 1.5.1.3.5.5.1 | Completed--------TS-ENH-AO-0112-CAMP_SETUP *CRM - Enhancement - ExtScope* |  | 15.75d | 2013-08-12 A | 2013-08-30 A |  | 100% |  | 2013-08-19 | 2013-09-11 | 0d |  |  | finish no earlier than 2013-09-11 | Reddy, Nithin | 96h | 96h | 96 | 96 |  | 12 days |  |
| 302 | 1.5.1.3.5.5.2 | Completed--------RTS-ENH-AO-0112-CAMP_SETUP *CRM - Enhancement - ExtScope* | milestone | 0d | 2013-10-02 A | 2013-10-02 A | 301FS+3d | 100% |  | 2013-09-16 | 2013-09-16 | 0d |  |  | start no earlier than 2013-10-02 |  |  |  |  |  |  | 0 days |  |
| 303 | 1.5.1.3.5.5.3 | Completed--------RTS-ENH-AO-0112-CAMP_SETUP-Gate2 *CRM - Enhancement - ExtScope* | milestone | 0d | 2013-10-04 A | 2013-10-04 A | 302FS+3d | 100% |  | 2013-09-19 | 2013-09-19 | 0d |  |  |  |  |  |  |  |  |  | 0 days |  |
| 304 | 1.5.1.3.5.5.4 | BUILD-ENH-AO-0112-CAMP_SETUP *CRM - Enhancement - ExtScope* |  | 28.25d | 2013-08-26 A | 2013-10-21 | 301 | 80% | 5.75d | 2013-09-11 | 2013-10-02 | 0d | 39.88d | 9.62d |  | Reddy, Nithin; Kacham, Santosh [33.3%] | 147h | 101h | 147 | 101 |  | 18.81 days |  |
| 305 | 1.5.1.3.5.5.5 | BUILD-ENH-AO-0112-CAMP_SETUP_2_CR *CRM - Enhancement - ExtScope* |  | 16.5d | 2013-09-25 | 2013-11-01 | 301 |  |  | 2013-09-18 | 2013-10-08 | 0d | 30.25d | 0d | start no earlier than 2013-09-25 | ***SERA OUT si coupure demandé par Gina-------CRM_INTERMEDIATE2 (dev ACN_OFF1) | 132h |  | 132 |  |  | 16.5 days |  |
| 306 | 1.5.1.3.5.5.6 | UT-ENH-AO-0112-CAMP_SETUP *CRM - Enhancement - ExtScope* |  | 12.12d | 2013-11-01 | 2013-11-18 | 304, 305 |  |  | 2013-10-08 | 2013-10-22 | 0d | 30.25d | 0d |  | ***SERA OUT si coupure demandé par Gina-------CRM_INTERMEDIATE2 (dev ACN_OFF1) [54.6%]; Reddy, Nithin [57.8%] | 106h |  | 106 |  |  | 13.25 days |  |
| 307 | 1.5.1.3.5.5.7 | RB-ENH-AO-0112-CAMP_SETUP *CRM - Enhancement - ExtScope* | milestone | 0d | 2013-11-22 | 2013-11-22 | 306FS+4d |  |  | 2013-10-28 | 2013-10-28 | 0d | 30.38d |  |  |  |  |  |  |  |  | 0 days |  |
| 308 | 1.5.1.3.5.6 | **FS-ENH-AO-0125-ORG *CRM - Enhancement - ExtScope*** |  | 33d | 2013-11-04 A | 2013-12-19 |  |  | 33d | 2013-10-28 | 2013-12-11 | 0d | 11.88d |  |  |  | 204h |  | 204 |  | AP355 | 25.5 days |  |
| 309 | 1.5.1.3.5.6.1 | TS-ENH-AO-0125-ORG *CRM - Enhancement - ExtScope* |  | 10.17d | 2013-11-04 A | 2013-11-15 |  |  | 10.17d | 2013-10-28 | 2013-11-08 | 0d | 182.35d |  | start no earlier than 2013-11-04 | Sarkar, Javed [75%] | 61h |  | 61 |  |  | 7.63 days |  |
| 310 | 1.5.1.3.5.6.2 | RTS-ENH-AO-0125-ORG *CRM - Enhancement - ExtScope* | milestone | 0d | 2013-11-22 | 2013-11-22 |  |  |  | 2013-11-15 | 2013-11-15 | 0d | 177.39d |  | start no earlier than 2013-11-22 |  |  |  |  |  |  | 0 days |  |
| 311 | 1.5.1.3.5.6.3 | RTS-ENH-AO-0125-ORG-Gate2 *CRM - Enhancement - ExtScope* | milestone | 0d | 2013-11-27 | 2013-11-27 |  |  |  | 2013-11-20 | 2013-11-20 | 0d | 174.39d |  | start no earlier than 2013-11-27 |  |  |  |  |  |  | 0 days |  |
| 312 | 1.5.1.3.5.6.4 | BUILD-ENH-AO-0125-ORG *CRM - Enhancement - ExtScope* |  | 12.75d | 2013-11-18 A | 2013-12-03 |  |  | 12.75d | 2013-11-08 | 2013-11-25 | 0d | 170.02d |  | start no earlier than 2013-11-18 | Sarkar, Javed | 102h |  | 102 |  |  | 12.75 days |  |
| 313 | 1.5.1.3.5.6.5 | UT-ENH-AO-0125-ORG *CRM - Enhancement - ExtScope* |  | 7d | 2013-12-02 A | 2013-12-10 |  |  | 7d | 2013-11-25 | 2013-12-02 | 0d | 165.14d |  | start no earlier than 2013-12-02 | Sarkar, Javed [73.2%] | 41h |  | 41 |  |  | 5.13 days |  |
| 314 | 1.5.1.3.5.6.6 | RB-ENH-AO-0125-ORG *CRM - Enhancement - ExtScope* | milestone | 0d | 2013-12-19 | 2013-12-19 |  |  |  | 2013-12-11 | 2013-12-11 | 0d | 158.39d |  | start no earlier than 2013-12-19 |  |  |  |  |  |  | 0 days |  |
| 315 | 1.5.1.3.5.7 | **On Hold--------FS-ENH-AO-0126-SECURITY *CRM - Enhancement - ExtScope*** |  | 80.3d | 2013-08-29 A | 2013-12-19 |  | 19% | 64.73d | 2013-07-15 | 2013-12-10 | 0d | 11.57d |  |  |  | 961.5h | 127.5h | 961.5 | 127.5 | AP355 | 116.13 days |  |
| 316 | 1.5.1.3.5.7.1 | HOLD--------TS-ENH-AO-0126-SECURITY *CRM - Enhancement - ExtScope* |  | 24.67d | 2013-08-29 A | 2013-10-22 |  | 68% | 7.8d | 2013-09-17 | 2013-10-08 | 0d | 11.49d | 0d | start no earlier than 2013-08-29 | Kumar Sahoo, Saroj [83.3%]; Vallanda, Rohan Poovaiah | 152.5h | 127.5h | 152.5 | 127.5 |  | 15 days | FS sur le HOLD! |
| 317 | 1.5.1.3.5.7.2 | TS-ENH-AO-0126-SECURITY_2_CR *CRM - Enhancement - ExtScope* |  | 11.25d | 2013-10-16 | 2013-10-29 |  |  |  | 2013-07-15 | 2013-07-25 | 0d | 38.81d | 0d | start no earlier than 2013-10-16 | Verma, Vinay [97.8%]; Bhandari, Himanshu | 175h |  | 175 |  |  | 21.88 days |  |
| 318 | 1.5.1.3.5.7.3 | RTS-ENH-AO-0126-SECURITY *CRM - Enhancement - ExtScope* | milestone | 0d | 2013-10-29 | 2013-10-29 | 316FS+5d |  |  | 2013-10-15 | 2013-10-15 | 0d | 44.88d | 0d |  |  |  |  |  |  |  | 0 days |  |
| 319 | 1.5.1.3.5.7.4 | RTS-ENH-AO-0126-SECURITY-Gate2 *CRM - Enhancement - ExtScope* | milestone | 0d | 2013-11-01 | 2013-11-01 | 318FS+3d |  |  | 2013-10-18 | 2013-10-18 | 0d | 44.88d |  |  |  |  |  |  |  |  | 0 days |  |
| 320 | 1.5.1.3.5.7.5 | BUILD-ENH-AO-0126-SECURITY *CRM - Enhancement - ExtScope* |  | 25.88d | 2013-10-22 | 2013-11-29 | 316 |  |  | 2013-10-08 | 2013-11-13 | 0d | 11.49d | 0d |  | Vallanda, Rohan Poovaiah [85%] | 176h |  | 176 |  |  | 22 days |  |
| 321 | 1.5.1.3.5.7.6 | BUILD-ENH-AO-0126-SECURITY_2_CR *CRM - Enhancement - ExtScope* |  | 10.19d | 2013-10-29 | 2013-11-12 | 317 |  |  | 2013-07-29 | 2013-08-23 | 0d | 38.81d |  | start no earlier than 2013-07-29 | Vallanda, Rohan Poovaiah; Bhandari, Himanshu; Sharma, Jayanti; Sandra, Prasad; Sriram Sarath, Nandula (termine 22 dec) [49.1%]; TINA - pranjal gupta (ACN_OFF1) [49.1%] | 320h |  | 320 |  |  | 40 days |  |
| 322 | 1.5.1.3.5.7.7 | UT-ENH-AO-0126-SECURITY *CRM - Enhancement - ExtScope* |  | 15d | 2013-11-29 | 2013-12-19 | 320 |  |  | 2013-11-13 | 2013-11-29 | 0d | 11.5d | 0d | start no earlier than 2013-10-24 | Vallanda, Rohan Poovaiah [115%] | 138h |  | 138 |  |  | 17.25 days |  |
| 323 | 1.5.1.3.5.7.8 | RB-ENH-AO-0126-SECURITY *CRM - Enhancement - ExtScope* | milestone | 0d | 2013-12-19 | 2013-12-19 | 322 |  |  | 2013-12-10 | 2013-12-10 | 0d | 11.57d |  |  |  |  |  |  |  |  | 0 days |  |

| ID | WBS | Task | Type | Duration | Start | Finish | Predecessors | Complete | Remaining | Baseline start | Baseline finish | Baseline duration | Total slack | Free slack | Constraint | Resources | Work | Actual work | Cost | Actual cost | type of Deliverable | work_091113 |
| --- | --- | --- | --- | --- | --- | --- | --- | --- | --- | --- | --- | --- | --- | --- | --- | --- | --- | --- | --- | --- | --- | --- |
| 324 | 1.5.1.3.5.8 | **FS-ENH-AO-027-ESCOPE_WORKFLOW-R2.1 *CRM - Enhancement - ExtScope*** |  | 75d | 2013-08-21 A | 2013-12-03 |  | 7% | 70.06d | 2013-09-02 | 2013-11-14 | 0d | 22.88d |  |  |  | 708h | 1h | 708 | 1 | AP355 | 88.5 days |
| 325 | 1.5.1.3.5.8.1 | TS-ENH-AO-0127-ESCOPE_WORKFLOW-R2.1-CR *CRM - Enhancement - ExtScope* |  | 35.5d | 2013-10-07 A | 2013-11-29 |  | 16% | 29.88d | 2013-09-04 | 2013-09-23 | 0d | 24.88d |  | finish no earlier than 2013-11-29 | Reddy, Nithin; Kumar Sahoo, Saroj | 240h | 1h | 240 | 1 |  | 30 days |
| 326 | 1.5.1.3.5.8.2 | TS-ENH-AO-0127-ESCOPE_WORKFLOW-R2.1 *CRM - Enhancement - ExtScope* |  | 13.5d | 2013-08-21 | 2013-10-29 |  |  |  | 2013-09-02 | 2013-09-19 | 0d | 22.88d | 0d | start no earlier than 2013-08-21 | EN ATTENTE de création du compte planview Rajani Putha NBC_WORKFLOW_1 (dev ACN_OFF1) | 108h |  | 108 |  |  | 13.5 days |
| 327 | 1.5.1.3.5.8.3 | TS-WFL-AO-0105-ESCOPE_WORKFLOW-R2.1 *CRM - Enhancement - ExtScope* |  | 6.67d | 2013-10-08 | 2013-10-21 |  |  |  | 2013-10-16 | 2013-10-24 | 0d | 38.33d | 0d | start no earlier than 2013-10-08 | Kambeli, Venkat Rao [60%] | 32h |  | 32 |  |  | 4 days |
| 328 | 1.5.1.3.5.8.4 | RTS-ENH-AO-0127-ESCOPE_WORKFLOW-R2.1 *CRM - Enhancement - ExtScope* | milestone | 0d | 2013-11-05 | 2013-11-05 | 326FS+5d |  |  | 2013-09-26 | 2013-09-26 | 0d | 42.88d |  | start no earlier than 2013-07-24 |  |  |  |  |  |  | 0 days |
| 329 | 1.5.1.3.5.8.5 | RTS-WFL-AO-0105-ESCOPE_WORKFLOW-R2.1 *CRM - Enhancement - ExtScope* | milestone | 0d | 2013-10-28 | 2013-10-28 | 327FS+5d |  |  | 2013-10-31 | 2013-10-31 | 0d | 48.88d |  |  |  |  |  |  |  |  | 0 days |
| 330 | 1.5.1.3.5.8.6 | BUILD-ENH-AO-0127-ESCOPE_WORKFLOW-R2.1 *CRM - Enhancement - ExtScope* |  | 11.25d | 2013-10-30 | 2013-11-12 | 326 |  |  | 2013-09-23 | 2013-10-23 | 0d | 22.88d | 0d | start no earlier than 2013-09-06 | EN ATTENTE de création du compte planview Rajani Putha NBC_WORKFLOW_1 (dev ACN_OFF1); Reddy, Nithin | 180h |  | 180 |  |  | 22.5 days |
| 331 | 1.5.1.3.5.8.7 | BUILD-WFL-AO-0105-ESCOPE_WORKFLOW-R2.1 *CRM - Enhancement - ExtScope* |  | 7d | 2013-10-21 | 2013-10-30 | 327 |  |  | 2013-10-24 | 2013-11-01 | 0d | 38.38d | 0d | start no earlier than 2013-10-16 | Kambeli, Venkat Rao | 56h |  | 56 |  |  | 7 days |
| 332 | 1.5.1.3.5.8.8 | UT-ENH-AO-0127-ESCOPE_WORKFLOW-R2.1 *CRM - Enhancement - ExtScope* |  | 9d | 2013-11-13 | 2013-11-22 | 330 |  |  | 2013-10-23 | 2013-11-05 | 0d | 22.88d | 0d | start no earlier than 2013-10-23 | EN ATTENTE de création du compte planview Rajani Putha NBC_WORKFLOW_1 (dev ACN_OFF1) | 72h |  | 72 |  |  | 9 days |
| 333 | 1.5.1.3.5.8.9 | UT-WFL-AO-0105-ESCOPE_WORKFLOW-R2.1 *CRM - Enhancement - ExtScope* |  | 2.5d | 2013-10-30 | 2013-11-01 | 331 |  |  | 2013-11-01 | 2013-11-05 | 0d | 38.46d | 15.58d |  | Kambeli, Venkat Rao | 20h |  | 20 |  |  | 2.5 days |
| 334 | 1.5.1.3.5.8.10 | RB-ENH-AO-0127-ESCOPE_WORKFLOW-R2.1 *CRM - Enhancement - ExtScope* | milestone | 0d | 2013-12-03 | 2013-12-03 | 332FS+7d, 333FS+7d |  |  | 2013-11-14 | 2013-11-14 | 0d | 22.88d |  |  |  |  |  |  |  |  | 0 days |
| 335 | 1.5.1.3.5.9 | **FS-ENH-AO-0118-DEC_AMORT *CRM - Enhancement - ExtScope*** |  | 42.62d | 2013-10-16 | 2013-12-13 |  |  |  | 2013-11-04 | 2013-12-12 | 0d | 15.25d |  |  |  | 268h |  | 268 |  | AP355 | 33.5 days |
| 336 | 1.5.1.3.5.9.1 | TS-ENH-AO-0118-DEC_AMORT *CRM - Enhancement - ExtScope* |  | 12.5d | 2013-10-16 | 2013-10-31 | 107 |  |  | 2013-11-04 | 2013-11-12 | 0d | 756.26d | 0d | start no earlier than 2013-10-16 | Kumar, Nitin [80%] | 80h |  | 80 |  |  | 10 days |
| 337 | 1.5.1.3.5.9.2 | RTS-ENH-AO-0118-DEC_AMORT *CRM - Enhancement - ExtScope* | milestone | 0d | 2013-11-07 | 2013-11-07 | 336FS+5d |  |  | 2013-11-19 | 2013-11-19 | 0d | 188.27d |  | start no earlier than 2013-10-15 |  |  |  |  |  |  | 0 days |
| 338 | 1.5.1.3.5.9.3 | BUILD-ENH-AO-0118-DEC_AMORT *CRM - Enhancement - ExtScope* |  | 15d | 2013-10-31 | 2013-11-19 | 336 |  |  | 2013-11-12 | 2013-11-27 | 0d | 165.39d | 3.5d |  | Kumar, Nitin | 120h |  | 120 |  |  | 15 days |
| 339 | 1.5.1.3.5.9.4 | UT-ENH-AO-0118-DEC_AMORT *CRM - Enhancement - ExtScope* |  | 8.5d | 2013-11-25 | 2013-12-04 | 338, 108 |  |  | 2013-11-27 | 2013-12-03 | 0d | 161.77d | 0d | start no earlier than 2013-11-25 | Kumar, Nitin | 68h |  | 68 |  |  | 8.5 days |
| 340 | 1.5.1.3.5.9.5 | RB-ENH-AO-0118-DEC_AMORT *CRM - Enhancement - ExtScope* | milestone | 0d | 2013-12-13 | 2013-12-13 | 339FS+7d |  |  | 2013-12-12 | 2013-12-12 | 0d | 161.77d |  | start no earlier than 2013-11-08 |  |  |  |  |  |  | 0 days |
| 341 | 1.5.1.3.5.10 | **FS-ENH-AO-0127_GET_RATE-2.1 *CRM - Enhancement - ExtScope*** |  | 24.54d | 2013-11-07 | 2013-12-11 |  |  |  | 2013-11-05 | 2013-12-19 | 0d | 17.34d |  |  |  | 204h |  | 204 |  | AP355 | 25.5 days |
| 342 | 1.5.1.3.5.10.1 | TS-ENH-AO-0127_GET_RATE-2.1 *CRM - Enhancement - ExtScope* |  | 11.54d | 2013-11-07 | 2013-11-22 | 495 |  |  | 2013-11-05 | 2013-11-14 | 0d | 163.85d | 0d | start no earlier than 2013-11-07 | Hartley, David [65%] | 60h |  | 60 |  |  | 7.5 days |
| 343 | 1.5.1.3.5.10.2 | RTS-ENH-AO-0127_GET_RATE-2.1 *CRM - Enhancement - ExtScope* | milestone | 0d | 2013-11-27 | 2013-11-27 | 342FS+3d |  |  | 2013-11-19 | 2013-11-19 | 0d | 170.85d | 0d |  |  |  |  |  |  |  | 0 days |
| 344 | 1.5.1.3.5.10.3 | RTS-ENH-AO-0127_GET_RATE-2.1-Gate2 *CRM - Enhancement - ExtScope* | milestone | 0d | 2013-12-02 | 2013-12-02 | 343FS+3d |  |  | 2013-11-22 | 2013-11-22 | 0d | 170.85d |  |  |  |  |  |  |  |  | 0 days |
| 345 | 1.5.1.3.5.10.4 | BUILD-ENH-AO-0127_GET_RATE-2.1 *CRM - Enhancement - ExtScope* |  | 7.25d | 2013-11-22 | 2013-12-03 | 342 |  |  | 2013-11-14 | 2013-12-03 | 0d | 163.85d | 0d | start no earlier than 2013-08-21 | Hartley, David; Halali, Sreekanth [90.1%] | 104h |  | 104 |  |  | 13 days |
| 346 | 1.5.1.3.5.10.5 | UT-ENH-AO-0127_GET_RATE-2.1 *CRM - Enhancement - ExtScope* |  | 2.75d | 2013-12-03 | 2013-12-05 | 345 |  |  | 2013-12-03 | 2013-12-13 | 0d | 163.85d | 0d | start no earlier than 2013-09-09 | Hartley, David; Halali, Sreekanth | 40h |  | 40 |  |  | 5 days |
| 347 | 1.5.1.3.5.10.6 | RB-ENH-AO-0127_GET_RATE-2.1 *CRM - Enhancement - ExtScope* | milestone | 0d | 2013-12-11 | 2013-12-11 | 346FS+4d |  |  | 2013-12-19 | 2013-12-19 | 0d | 163.85d |  |  |  |  |  |  |  |  | 0 days |

| ID | WBS | Task | Type | Duration | Start | Finish | Predecessors | Complete | Remaining | Baseline start | Baseline finish | Baseline duration | Total slack | Free slack | Constraint | Resources | Work | Actual work | Cost | Actual cost | work_091113 | type of Deliverable |
| --- | --- | --- | --- | --- | --- | --- | --- | --- | --- | --- | --- | --- | --- | --- | --- | --- | --- | --- | --- | --- | --- | --- |
| 348 | 1.5.1.3.5.11 | **Document Management *CRM - Enhancement - ExtScope*** |  | 71.25d | 2013-09-09 A | 2013-12-17 |  |  | 70.91d | 2013-08-15 | 2013-11-18 | 0d | 13.62d |  |  |  | 1310h | 9h | 1,310 | 9 | 163.75 days |  |
| 349 | 1.5.1.3.5.11.1 | **FS-ENH-AO-250_DOC_Delete-R2.1 *CRM - Enhancement - ExtScope*** |  | 71.25d | 2013-09-09 A | 2013-12-17 |  | 1% | 70.8d | 2013-08-15 | 2013-11-12 | 0d | 13.62d |  |  |  | 1050h | 9h | 1,050 | 9 | 131.25 days | AP355 |
| 350 | 1.5.1.3.5.11.1.1 | TS-ENH-AO-250_DOC_Delete-R2.1 *CRM - Enhancement - ExtScope* |  | 9d | 2013-10-04 A | 2013-10-23 |  | 6% | 8.46d | 2013-09-20 | 2013-10-02 | 0d | 23.29d | 0d | start no earlier than 2013-10-04 | Vallanda, Rohan Poovaiah [93.1%]; Kacham, Santosh [207.7%] | 72h | 9h | 72 | 9 | 9 days |  |
| 351 | 1.5.1.3.5.11.1.2 | RTS-ENH-AO-250_DOC_Delete-R2.1 *CRM - Enhancement - ExtScope* | milestone | 0d | 2013-10-30 | 2013-10-30 | 350FS+5d |  |  | 2013-10-09 | 2013-10-09 | 0d | 44.29d | 0d |  |  |  |  |  |  | 0 days |  |
| 352 | 1.5.1.3.5.11.1.3 | RTS-ENH-AO-250_DOC_Delete-R2.1-Gate2 *CRM - Enhancement - ExtScope* | milestone | 0d | 2013-11-04 | 2013-11-04 | 351FS+3d |  |  | 2013-10-14 | 2013-10-14 | 0d | 44.29d |  |  |  |  |  |  |  | 0 days |  |
| 353 | 1.5.1.3.5.11.1.4 | BUILD-ENH-AO-250_DOC_Delete-R2.1-CR *CRM - Enhancement - ExtScope* |  | 52d | 2013-09-09 | 2013-12-17 |  |  |  | 2013-08-15 | 2013-09-18 | 0d | 13.62d |  | start no earlier than 2013-09-09 | Kacham, Santosh; Vallanda, Rohan Poovaiah [76.7%]; Shafai, Ramin [28.6%]; ***SERA OUT si coupure demandé par Gina-------CRM_INTERMEDIATE2 (dev ACN_OFF1) [51.2%]; Kumar, Nitin [44.7%]; Kumar, Abhimanyu [71.6%]; Verma, Vinay | 810h |  | 810 |  | 101.25 days |  |
| 354 | 1.5.1.3.5.11.1.5 | BUILD-ENH-AO-250_DOC_Delete-R2.1 *CRM - Enhancement - ExtScope* |  | 18.75d | 2013-10-23 | 2013-11-15 | 350 |  |  | 2013-10-02 | 2013-10-25 | 0d | 23.29d | 0d | start no earlier than 2013-10-02 | Vallanda, Rohan Poovaiah [80%] | 120h |  | 120 |  | 15 days |  |
| 355 | 1.5.1.3.5.11.1.6 | UT-ENH-AO-250_DOC_Delete-R2.1 *CRM - Enhancement - ExtScope* |  | 6d | 2013-11-15 | 2013-11-22 | 354 |  |  | 2013-10-25 | 2013-11-01 | 0d | 23.29d | 0d | start no earlier than 2013-10-25 | Vallanda, Rohan Poovaiah | 48h |  | 48 |  | 6 days |  |
| 356 | 1.5.1.3.5.11.1.7 | RB-ENH-AO-250_DOC_Delete-R2.1 *CRM - Enhancement - ExtScope* | milestone | 0d | 2013-12-03 | 2013-12-03 | 355FS+7d |  |  | 2013-11-12 | 2013-11-12 | 0d | 23.29d |  |  |  |  |  |  |  | 0 days |  |
| 357 | 1.5.1.3.5.11.2 | **FS-WFL-AO-250_DOC_Delete-R2.1 *CRM - Enhancement - ExtScope*** |  | 38.75d | 2013-10-16 | 2013-12-09 |  |  |  | 2013-10-14 | 2013-11-18 | 0d | 19.12d |  |  |  | 260h |  | 260 |  | 32.5 days | AP355 |
| 358 | 1.5.1.3.5.11.2.1 | TS-WFL-AO-250_DOC_Delete-R2.1 *CRM - Enhancement - ExtScope* |  | 13.38d | 2013-10-16 | 2013-10-31 |  |  |  | 2013-10-14 | 2013-10-21 | 0d | 763d | 0d | start no earlier than 2013-10-16 | EN ATTENTE de création du compte planview Rajani Putha NBC_WORKFLOW_1 (dev ACN_OFF1) [80%]; (CRM_SENIOR_5) ACN_ON1 601a [37.4%] | 80h |  | 80 |  | 10 days |  |
| 359 | 1.5.1.3.5.11.2.2 | RTS-WFL-AO-250_DOC_Delete-R2.1 *CRM - Enhancement - ExtScope* | milestone | 0d | 2013-11-07 | 2013-11-07 | 358FS+5d |  |  | 2013-10-28 | 2013-10-28 | 0d | 184.39d | 0d |  |  |  |  |  |  | 0 days |  |
| 360 | 1.5.1.3.5.11.2.3 | RTS-WFL-AO-250_DOC_Delete-R2.1-Gate2 *CRM - Enhancement - ExtScope* | milestone | 0d | 2013-11-12 | 2013-11-12 | 359FS+3d |  |  | 2013-10-31 | 2013-10-31 | 0d | 184.39d |  |  |  |  |  |  |  | 0 days |  |
| 361 | 1.5.1.3.5.11.2.4 | BUILD-WFL-AO-250_DOC_Delete-R2.1 *CRM - Enhancement - ExtScope* |  | 7.5d | 2013-10-31 | 2013-11-11 | 358 |  |  | 2013-10-22 | 2013-11-01 | 0d | 172.02d | 6.38d |  | EN ATTENTE de création du compte planview Rajani Putha NBC_WORKFLOW_1 (dev ACN_OFF1); (CRM_SENIOR_5) ACN_ON1 601a | 120h |  | 120 |  | 15 days |  |
| 362 | 1.5.1.3.5.11.2.5 | UT-WFL-AO-250_DOC_Delete-R2.1 *CRM - Enhancement - ExtScope* |  | 7.5d | 2013-11-20 | 2013-11-28 | 361 |  |  | 2013-11-04 | 2013-11-07 | 0d | 165.64d | 0d | start no earlier than 2013-11-20 | EN ATTENTE de création du compte planview Rajani Putha NBC_WORKFLOW_1 (dev ACN_OFF1) | 60h |  | 60 |  | 7.5 days |  |
| 363 | 1.5.1.3.5.11.2.6 | RB-WFL-AO-250_DOC_Delete-R2.1 *CRM - Enhancement - ExtScope* | milestone | 0d | 2013-12-09 | 2013-12-09 | 362FS+7d |  |  | 2013-11-18 | 2013-11-18 | 0d | 165.64d |  |  |  |  |  |  |  | 0 days |  |
| 364 | 1.5.1.3.5.12 | **FS-ENH-AO-0117-DEC *CRM - Enhancement - ExtScope*** |  | 21.72d | 2013-10-18 | 2013-11-19 |  |  |  | 2013-11-04 | 2013-12-03 | 0d | 33.12d |  |  |  | 120h |  | 120 |  | 15 days | AP355 |
| 365 | 1.5.1.3.5.12.1 | TS-ENH-AO-0117-DEC *CRM - Enhancement - ExtScope* |  | 6d | 2013-10-18 | 2013-10-28 |  |  |  | 2013-11-04 | 2013-11-08 | 0d | 179.67d | 0d | start no earlier than 2013-10-18 | Halali, Sreekanth [75%] | 36h |  | 36 |  | 4.5 days |  |
| 366 | 1.5.1.3.5.12.2 | RTS-ENH-AO-0117-DEC *CRM - Enhancement - ExtScope* | milestone | 0d | 2013-11-04 | 2013-11-04 | 365FS+5d |  |  | 2013-11-15 | 2013-11-15 | 0d | 191.05d |  | start no earlier than 2013-10-10 |  |  |  |  |  | 0 days |  |
| 367 | 1.5.1.3.5.12.3 | BUILD-ENH-AO-0117-DEC *CRM - Enhancement - ExtScope* |  | 7.5d | 2013-10-28 | 2013-11-05 | 365 |  |  | 2013-11-08 | 2013-11-19 | 0d | 179.67d | 0d | start no earlier than 2013-10-07 | Halali, Sreekanth | 60h |  | 60 |  | 7.5 days |  |
| 368 | 1.5.1.3.5.12.4 | UT-ENH-AO-0117-DEC *CRM - Enhancement - ExtScope* |  | 3d | 2013-11-05 | 2013-11-08 | 367 |  |  | 2013-11-19 | 2013-11-22 | 0d | 179.67d | 0d | start no earlier than 2013-10-17 | Halali, Sreekanth | 24h |  | 24 |  | 3 days |  |
| 369 | 1.5.1.3.5.12.5 | RB-ENH-AO-0117-DEC *CRM - Enhancement - ExtScope* | milestone | 0d | 2013-11-19 | 2013-11-19 | 368FS+7d |  |  | 2013-12-03 | 2013-12-03 | 0d | 179.67d |  | start no earlier than 2013-10-28 |  |  |  |  |  | 0 days |  |
| 370 | 1.5.1.3.5.13 | **FS-ENH-AO-0123-Indemnities *CRM - Enhancement - ExtScope*** |  | 20.38d | 2013-11-01 | 2013-11-29 |  |  |  | 2013-10-02 | 2013-11-12 | 0d | 25.21d |  |  |  | 120h |  | 120 |  | 15 days | AP355 |
| 371 | 1.5.1.3.5.13.1 | TS-ENH-AO-0123-Indemnities *CRM - Enhancement - ExtScope* |  | 4.5d | 2013-11-01 | 2013-11-07 |  |  |  | 2013-10-02 | 2013-10-14 | 0d | 171.73d | 0d | start no earlier than 2013-11-01 | Kacham, Santosh | 36h |  | 36 |  | 4.5 days |  |
| 372 | 1.5.1.3.5.13.2 | RTS-ENH-AO-0123-Indemnities *CRM - Enhancement - ExtScope* | milestone | 0d | 2013-11-14 | 2013-11-14 | 371FS+5d |  |  | 2013-10-21 | 2013-10-21 | 0d | 183.1d |  |  |  |  |  |  |  | 0 days |  |
| 373 | 1.5.1.3.5.13.3 | BUILD-ENH-AO-0123-Indemnities *CRM - Enhancement - ExtScope* |  | 7.5d | 2013-11-07 | 2013-11-15 | 371 |  |  | 2013-10-14 | 2013-10-29 | 0d | 171.73d | 0d | start no earlier than 2013-10-14 | Kacham, Santosh | 60h |  | 60 |  | 7.5 days |  |
| 374 | 1.5.1.3.5.13.4 | UT-ENH-AO-0123-Indemnities *CRM - Enhancement - ExtScope* |  | 3d | 2013-11-15 | 2013-11-20 | 373 |  |  | 2013-10-29 | 2013-11-01 | 0d | 171.73d | 0d | start no earlier than 2013-10-21 | Kacham, Santosh | 24h |  | 24 |  | 3 days |  |
| 375 | 1.5.1.3.5.13.5 | RB-ENH-AO-0123-Indemnities *CRM - Enhancement - ExtScope* | milestone | 0d | 2013-11-29 | 2013-11-29 | 374FS+7d |  |  | 2013-11-12 | 2013-11-12 | 0d | 171.73d |  |  |  |  |  |  |  | 0 days |  |

| ID | WBS | Task | Type | Duration | Start | Finish | Predecessors | Complete | Remaining | Baseline start | Baseline finish | Baseline duration | Total slack | Free slack | Constraint | Resources | Work | Actual work | Cost | Actual cost | type of Deliverable | work_091113 |
| --- | --- | --- | --- | --- | --- | --- | --- | --- | --- | --- | --- | --- | --- | --- | --- | --- | --- | --- | --- | --- | --- | --- |
| 376 | 1.5.1.3.5.14 | **FS-ENH-AO-0124-Indemnities_Mandate *CRM - Enhancement - ExtScope*** |  | 20.93d | 2013-11-11 | 2013-12-10 |  |  |  | 2013-10-10 | 2013-11-12 | 0d | 18.02d |  |  |  | 120h |  | 120 |  | AP355 | 15 days |
| 377 | 1.5.1.3.5.14.1 | TS-ENH-AO-0124-Indemnities_Mandate *CRM - Enhancement - ExtScope* |  | 5d | 2013-11-11 | 2013-11-18 |  |  |  | 2013-10-10 | 2013-10-16 | 0d | 164.54d | 0d | start no earlier than 2013-11-11 | Bhandari, Himanshu [90%] | 36h |  | 36 |  |  | 4.5 days |
| 378 | 1.5.1.3.5.14.2 | RTS-ENH-AO-0124-Indemnities_Mandate *CRM - Enhancement - ExtScope* | milestone | 0d | 2013-11-25 | 2013-11-25 | 377FS+5d |  |  | 2013-10-23 | 2013-10-23 | 0d | 176.1d |  |  |  |  |  |  |  |  | 0 days |
| 379 | 1.5.1.3.5.14.3 | BUILD-ENH-AO-0124-Indemnities_Mandate *CRM - Enhancement - ExtScope* |  | 8.43d | 2013-11-18 | 2013-11-27 | 377 |  |  | 2013-10-16 | 2013-10-30 | 0d | 164.54d | 0d | start no earlier than 2013-10-16 | Bhandari, Himanshu [89%] | 60h |  | 60 |  |  | 7.5 days |
| 380 | 1.5.1.3.5.14.4 | UT-ENH-AO-0124-Indemnities_Mandate *CRM - Enhancement - ExtScope* |  | 2.26d | 2013-11-27 | 2013-11-29 | 379 |  |  | 2013-10-30 | 2013-11-01 | 0d | 164.54d | 0d | start no earlier than 2013-10-28 | Bhandari, Himanshu [133%] | 24h |  | 24 |  |  | 3 days |
| 381 | 1.5.1.3.5.14.5 | RB-ENH-AO-0124-Indemnities_Mandate *CRM - Enhancement - ExtScope* | milestone | 0d | 2013-12-10 | 2013-12-10 | 380FS+7d |  |  | 2013-11-12 | 2013-11-12 | 0d | 164.54d |  |  |  |  |  |  |  |  | 0 days |
| 382 | 1.5.1.3.5.15 | **FS-WFL-AO-0105-ESCOPE_WORKFLOW-R2.1 *CRM - Enhancement - ExtScope*** |  | 48.12d? | 2013-10-07 A | 2013-12-12 |  | 18% | 39.46d? |  |  |  | 16.75d |  |  |  | 190h | 1h | 190 | 1 | AP355 | 23.75 days |
| 383 | 1.5.1.3.5.15.1 | TS-WFL-AO-0105-ESCOPE_WORKFLOW-R2.1 *CRM - Enhancement - ExtScope* |  | 12.62d? | 2013-10-07 A | 2013-10-22 |  | 45% | 7d? |  |  |  | 177.39d | 0d | start no earlier than 2013-11-01 | Kambeli, Venkat Rao | 57h | 1h | 57 | 1 |  | 7.13 days |
| 384 | 1.5.1.3.5.15.2 | RTS-WFL-AO-0105-ESCOPE_WORKFLOW-R2.1 *CRM - Enhancement - ExtScope* |  | 1d? | 2013-10-29 | 2013-10-30 | 383FS+5d |  |  |  |  |  | 194.14d |  |  |  |  |  |  |  |  | 0 days |
| 385 | 1.5.1.3.5.15.3 | BUILD-WFL-AO-0105-ESCOPE_WORKFLOW-R2.1 *CRM - Enhancement - ExtScope* |  | 11.88d? | 2013-11-11 | 2013-11-25 | 383 |  |  |  |  |  | 16.62d | 0d | start no earlier than 2013-11-11 | Kambeli, Venkat Rao | 95h |  | 95 |  |  | 11.88 days |
| 386 | 1.5.1.3.5.15.4 | UT-WFL-AO-0105-ESCOPE_WORKFLOW-R2.1 *CRM - Enhancement - ExtScope* |  | 4.75d? | 2013-11-25 | 2013-12-02 | 385 |  |  |  |  |  | 163.14d | 0d | start no earlier than 2013-11-25 | Kambeli, Venkat Rao | 38h |  | 38 |  |  | 4.75 days |
| 387 | 1.5.1.3.5.15.5 | RB-WFL-AO-0105-ESCOPE_WORKFLOW-R2.1 *CRM - Enhancement - ExtScope* |  | 1d? | 2013-12-11 | 2013-12-12 | 386FS+7d |  |  |  |  |  | 163.27d |  |  |  |  |  |  |  |  | 0 days |
| 388 | 1.5.1.4 | **PI - AP310 Interface** |  | 122d? | 2013-06-17 A | 2013-12-03 |  | 77% | 27.58d? | 2013-06-17 | 2013-12-20 | 0d | 25d | 13d |  |  | 2607h | 1861h | 2,607 | 1,861 |  | 331.03 days |
| 389 | 1.5.1.4.1 | **Completed--------PI - Interface - Master Data** |  | 72d? | 2013-07-01 A | 2013-10-08 A |  | 100% |  | 2013-07-25 | 2013-09-17 | 0d |  |  |  |  | 309h | 309h | 309 | 309 |  | 29.88 days |
| 390 | 1.5.1.4.1.1 | **Completed--------FS-INT-AO-0001-I_BP-R2.1 *PI - Interdace - Master Data*** |  | 42d | 2013-07-01 A | 2013-08-27 A |  | 100% |  | 2013-07-25 | 2013-09-17 | 0d |  |  |  |  | 239h | 239h | 239 | 239 | AP310 | 29.88 days |
| 391 | 1.5.1.4.1.1.1 | Completed--------TS-INT-AO-0001-I_BP-R2.1 *PI - Interdace - Master Data* |  | 15d | 2013-07-01 A | 2013-07-19 A |  | 100% |  | 2013-07-25 | 2013-08-07 | 0d |  |  | start no earlier than 2013-07-25 | Kalivarapu, Sai Krishna [92.5%] | 93h | 93h | 93 | 93 |  | 11.63 days |
| 392 | 1.5.1.4.1.1.2 | Completed--------RTS-INT-AO-0001-I_BP-R2.1 *PI - Interdace - Master Data* | milestone | 0d | 2013-08-05 A | 2013-08-05 A |  | 100% |  | 2013-08-12 | 2013-08-12 | 0d |  |  | start no earlier than 2013-08-05 |  |  |  |  |  |  | 0 days |
| 393 | 1.5.1.4.1.1.3 | Completed--------RTS-INT-AO-0001-I_BP-R2.1-Gate2 *PI - Interdace - Master Data* | milestone | 0d | 2013-08-07 A | 2013-08-07 A |  | 100% |  | 2013-08-15 | 2013-08-15 | 0d |  |  |  |  |  |  |  |  |  | 0 days |
| 394 | 1.5.1.4.1.1.4 | Completed--------BUILD-INT-AO-0001-I_BP-R2.1 *PI - Interdace - Master Data* |  | 17.18d | 2013-07-22 A | 2013-08-14 A |  | 100% |  | 2013-08-07 | 2013-08-29 | 0d |  |  |  | Kalivarapu, Sai Krishna [103.3%] | 124h | 124h | 124 | 124 |  | 15.5 days |
| 395 | 1.5.1.4.1.1.5 | Completed--------UT-INT-AO-0001-I_BP-R2.1 *PI - Interdace - Master Data* |  | 5d | 2013-08-12 A | 2013-08-16 A |  | 100% |  | 2013-08-29 | 2013-09-06 | 0d |  |  |  | Kalivarapu, Sai Krishna [55%] | 22h | 22h | 22 | 22 |  | 2.75 days |
| 396 | 1.5.1.4.1.1.6 | Completed--------RB-INT-AO-0001-I_BP-R2.1 *PI - Interdace - Master Data* | milestone | 0d | 2013-08-27 A | 2013-08-27 A |  | 100% |  | 2013-09-17 | 2013-09-17 | 0d |  |  |  |  |  |  |  |  |  | 0 days |
| 397 | 1.5.1.4.1.2 | **Completed--------FS-INT-AO-0015-CALCULATOR-R2.1 *PI - Interdace - Master Data*** |  | 17d? | 2013-09-16 A | 2013-10-08 A |  | 100% |  |  |  |  |  |  |  |  | 70h | 70h | 70 | 70 | AP310 |  |
| 398 | 1.5.1.4.1.2.1 | Completed--------TS-INT-AO-0015-CALCULATOR-R2.1 *PI - Interdace - Master Data* |  | 6d? | 2013-09-16 A | 2013-09-23 A |  | 100% |  |  |  |  |  |  |  | Priyambada, Suprita [666.7%] | 25h | 25h | 25 | 25 |  |  |
| 399 | 1.5.1.4.1.2.2 | Completed--------RTS-INT-AO-0015-CALCULATOR-R2.1 *PI - Interdace - Master Data* |  | 1d? | 2013-09-30 A | 2013-10-01 A | 398FS+5d | 100% |  |  |  |  |  |  |  |  |  |  |  |  |  |  |
| 400 | 1.5.1.4.1.2.3 | Completed--------BUILD-INT-AO-0015-CALCULATOR-R2.1 *PI - Interdace - Master Data* |  | 5.62d? | 2013-09-16 A | 2013-09-20 A | 399 | 100% |  |  |  |  |  |  |  | Priyambada, Suprita [88.9%] | 40h | 40h | 40 | 40 |  |  |
| 401 | 1.5.1.4.1.2.4 | Completed--------UT-INT-AO-0015-CALCULATOR-R2.1 *PI - Interdace - Master Data* |  | 5.62d? | 2013-09-23 A | 2013-09-27 A | 400 | 100% |  |  |  |  |  |  |  | Priyambada, Suprita [11.1%] | 5h | 5h | 5 | 5 |  |  |
| 402 | 1.5.1.4.1.2.5 | Completed--------RB-INT-AO-0015-CALCULATOR-R2.1 *PI - Interdace - Master Data* | milestone | 0h | 2013-10-08 A | 2013-10-08 A | 401FS+7d | 100% |  |  |  |  |  |  |  |  |  |  |  |  |  |  |

| ID | WBS | Task | Type | Duration | Start | Finish | Predecessors | Complete | Remaining | Baseline start | Baseline finish | Baseline duration | Total slack | Free slack | Constraint | Resources | Work | Actual work | Cost | Actual cost | work_091113 | type of Deliverable |
| --- | --- | --- | --- | --- | --- | --- | --- | --- | --- | --- | --- | --- | --- | --- | --- | --- | --- | --- | --- | --- | --- | --- |
| 403 | 1.5.1.4.2 | **PI - Interface - DECISIONING** |  | 77d? | 2013-08-19 A | 2013-12-03 |  | 71% | 22.08d? | 2013-06-17 | 2013-10-21 | 0d | 25d |  |  |  | 578h | 385h | 578 | 385 | 64.13 days |  |
| 404 | 1.5.1.4.2.1 | **FS-INT-AO-0004-CDA_CROSSSELL-R2.1 *PI - Interdace - Decisioning*** |  | 46.12d | 2013-09-02 A | 2013-11-05 |  | 79% | 9.54d | 2013-09-06 | 2013-10-21 | 0d | 33.88d |  |  |  | 274h | 201h | 274 | 201 | 31.75 days | AP310 |
| 405 | 1.5.1.4.2.1.1 | Completed--------TS-INT-AO-0004-CDA_CROSSSELL-R2.1 *PI - Interdace - Decisioning* |  | 15d | 2013-09-02 A | 2013-09-20 A |  | 100% |  | 2013-09-06 | 2013-09-20 | 0d |  |  | start no earlier than 2013-09-06 | Kalivarapu, Sai Krishna | 96h | 96h | 96 | 96 | 9.5 days |  |
| 406 | 1.5.1.4.2.1.2 | Completed--------RTS-INT-AO-0004-CDA_CROSSSELL-R2.1 *PI - Interdace - Decisioning* | milestone | 0d | 2013-09-27 A | 2013-09-27 A | 405FS+5d | 100% |  | 2013-09-27 | 2013-09-27 | 0d |  |  |  |  |  |  |  |  | 0 days |  |
| 407 | 1.5.1.4.2.1.3 | BUILD-INT-AO-0004-CDA_CROSSSELL-R2.1 *PI - Interdace - Decisioning* |  | 19.62d | 2013-09-23 A | 2013-10-18 | 405 | 76% | 4.62d | 2013-09-20 | 2013-10-04 | 0d | 33.88d | 0d | start no earlier than 2013-09-20 | Kalivarapu, Sai Krishna | 128h | 91h | 128 | 91 | 16 days |  |
| 408 | 1.5.1.4.2.1.4 | UT-INT-AO-0004-CDA_CROSSSELL-R2.1 *PI - Interdace - Decisioning* |  | 9.5d | 2013-10-07 A | 2013-10-25 | 407 | 53% | 4.5d | 2013-10-04 | 2013-10-10 | 0d | 33.88d | 0d | start no earlier than 2013-10-04 | Kalivarapu, Sai Krishna | 50h | 14h | 50 | 14 | 6.25 days |  |
| 409 | 1.5.1.4.2.1.5 | RB-INT-AO-0004-CDA_CROSSSELL-R2.1 *PI - Interdace - Decisioning* | milestone | 0d | 2013-11-05 | 2013-11-05 | 408FS+7d |  |  | 2013-10-21 | 2013-10-21 | 0d | 180.39d |  |  |  |  |  |  |  | 0 days |  |
| 410 | 1.5.1.4.2.2 | **Completed--------FS-INT-AO-0003-RATE_GUARANTEE-R2.1 *PI - Interdace - Decisioning*** |  | 35d | 2013-08-19 A | 2013-10-04 A |  | 100% |  | 2013-06-17 | 2013-09-24 | 0d |  |  |  |  | 184h | 184h | 184 | 184 | 32.38 days | AP310 |
| 411 | 1.5.1.4.2.2.1 | Completed--------TS-INT-AO-0003-RATE_GUARANTEE-R2.1 *PI - Interdace - Decisioning* |  | 10d | 2013-08-19 A | 2013-09-20 A |  | 100% |  | 2013-08-19 | 2013-08-26 | 0d |  |  | start no earlier than 2013-08-19 | Mistri, Harish [112.5%] | 81h | 81h | 81 | 81 | 10.13 days |  |
| 412 | 1.5.1.4.2.2.2 | Completed--------RTS-INT-AO-0003-RATE_GUARANTEE-R2.1 *PI - Interdace - Decisioning* | milestone | 0d | 2013-09-27 A | 2013-09-27 A | 411FS+5d | 100% |  | 2013-09-02 | 2013-09-02 | 0d |  |  |  |  |  |  |  |  | 0 days |  |
| 413 | 1.5.1.4.2.2.3 | Completed--------BUILD-INT-AO-0003-RATE_GUARANTEE-R2.1 *PI - Interdace - Decisioning* |  | 15d | 2013-09-02 A | 2013-10-04 A | 411 | 100% |  | 2013-08-27 | 2013-09-09 | 0d |  |  | start no earlier than 2013-08-27 | Mistri, Harish | 99h | 99h | 99 | 99 | 16 days |  |
| 414 | 1.5.1.4.2.2.4 | Completed--------UT-INT-AO-0003-RATE_GUARANTEE-R2.1 *PI - Interdace - Decisioning* |  | 5d | 2013-09-16 A | 2013-09-20 A | 413 | 100% |  | 2013-09-10 | 2013-09-13 | 0d |  |  | start no earlier than 2013-09-02 | Mistri, Harish [10%] | 4h | 4h | 4 | 4 | 6.25 days |  |
| 415 | 1.5.1.4.2.2.5 | Completed--------RB-INT-AO-0003-RATE_GUARANTEE-R2.1 *PI - Interdace - Decisioning* | milestone | 0d | 2013-10-01 A | 2013-10-01 A | 414FS+7d | 100% |  | 2013-09-24 | 2013-09-24 | 0d |  |  |  |  |  |  |  |  | 0 days |  |
| 416 | 1.5.1.4.2.3 | **FS_INT_CDA_Decision *PI - Interdace - Decisioning*** |  | 23d? | 2013-11-01 | 2013-12-03 |  |  |  |  |  |  | 13d |  |  |  | 120h |  | 120 |  |  | AP310 |
| 417 | 1.5.1.4.2.3.1 | TS-INT_CDA_Decision *PI - Interdace - Decisioning* |  | 40h? | 2013-11-01 | 2013-11-07 |  |  |  |  |  |  | 168.39d | 0d | start no earlier than 2013-11-01 | Priyambada, Suprita | 40h |  | 40 |  |  |  |
| 418 | 1.5.1.4.2.3.2 | RTS-INT_CDA_Decision *PI - Interdace - Decisioning* |  | 8h? | 2013-11-08 | 2013-11-11 | 417FS+5h |  |  |  |  |  | 176.39d |  |  |  |  |  |  |  |  |  |
| 419 | 1.5.1.4.2.3.3 | BUILD-INT_CDA_Decision *PI - Interdace - Decisioning* |  | 70h? | 2013-11-07 | 2013-11-19 | 417 |  |  |  |  |  | 21.88d | 0d |  | Priyambada, Suprita | 70h |  | 70 |  |  |  |
| 420 | 1.5.1.4.2.3.4 | UT-INT-CDA_Decision *PI - Interdace - Decisioning* |  | 10h? | 2013-11-19 | 2013-11-20 | 419 |  |  |  |  |  | 169.14d |  |  | Priyambada, Suprita | 10h |  | 10 |  |  |  |
| 421 | 1.5.1.4.2.3.5 | RB-INT-CDA_Decision *PI - Interdace - Decisioning* |  | 8h? | 2013-12-03 | 2013-12-03 | 419FS+7h |  |  |  |  |  | 13d |  | finish no earlier than 2013-12-03 |  |  |  |  |  |  |  |
| 422 | 1.5.1.4.3 | **PI - Interface - SALES** |  | 108d | 2013-06-24 A | 2013-11-20 |  | 80% | 21.11d | 2013-06-25 | 2013-11-20 | 0d | 22d |  |  |  | 449h | 321h | 449 | 321 | 48.88 days |  |
| 423 | 1.5.1.4.3.1 | **FS-INT-AO-0017-Creditor_Insurance-R2.1 *PI - Interdace - Sales*** |  | 43d | 2013-09-23 A | 2013-11-20 |  | 62% | 16.19d | 2013-09-16 | 2013-11-20 | 0d | 22d |  |  |  | 316h | 188h | 316 | 188 | 37.88 days | AP310 |
| 424 | 1.5.1.4.3.1.1 | Completed--------TS-INT-AO-0017-Creditor_Insurance-R2.1 *PI - Interdace - Sales* |  | 13.88d | 2013-09-23 A | 2013-10-09 A |  | 100% |  | 2013-09-16 | 2013-10-01 | 0d |  |  | start no earlier than 2013-10-01 | Mistri, Harish [40%]; Priyambada, Suprita [214.3%] | 108h | 108h | 108 | 108 | 11.88 days |  |
| 425 | 1.5.1.4.3.1.2 | Completed--------RTS-INT-AO-0017-Creditor_Insurance-R2.1 *PI - Interdace - Sales* | milestone | 0d | 2013-10-14 A | 2013-10-14 A | 424FS+3d | 100% |  | 2013-10-04 | 2013-10-04 | 0d |  |  |  |  |  |  |  |  | 0 days |  |
| 426 | 1.5.1.4.3.1.3 | BUILD-INT-AO-0017-Creditor_Insurance-R2.1 *PI - Interdace - Sales* |  | 18.62d | 2013-09-30 A | 2013-10-28 | 424 | 41% | 11d | 2013-10-01 | 2013-11-05 | 0d | 30d | 0d | start no earlier than 2013-09-03 | Mistri, Harish | 148h | 60h | 148 | 60 | 18.5 days |  |
| 427 | 1.5.1.4.3.1.4 | UT-INT-AO-0017-Creditor_Insurance-R2.1 *PI - Interdace - Sales* |  | 10d | 2013-10-07 A | 2013-11-14 | 426 | 50% | 5d | 2013-11-05 | 2013-11-14 | 0d | 22d | 0d | finish no earlier than 2013-11-14 | Mistri, Harish | 60h | 20h | 60 | 20 | 7.5 days |  |
| 428 | 1.5.1.4.3.1.5 | RB-INT-AO-0017-Creditor_Insurance-R2.1 *PI - Interdace - Sales* | milestone | 0d | 2013-11-20 | 2013-11-20 | 427FS+4d |  |  | 2013-11-20 | 2013-11-20 | 0d | 168.52d |  |  |  |  |  |  |  | 0 days |  |

Notes:
- 403: ? For PM: S'assurer de respecter date de baseline de la fin dans planview
- 422: ? For PM: S'assurer de respecter date de baseline de la fin dans planview

| ID | WBS | Task | Type | Duration | Start | Finish | Predecessors | Complete | Remaining | Baseline start | Baseline finish | Baseline duration | Total slack | Free slack | Constraint | Resources | Work | Actual work | Cost | Actual cost | type of Deliverable | work_091113 |
| --- | --- | --- | --- | --- | --- | --- | --- | --- | --- | --- | --- | --- | --- | --- | --- | --- | --- | --- | --- | --- | --- | --- |
| 429 | 1.5.1.4.3.2 | **Completed--------FS-INT-AO-0002-GET_LOAN-R2.1 *PI - Interdace - Sales*** |  | 14d | 2013-06-24 A | 2013-07-11 A |  | 100% |  | 2013-06-25 | 2013-07-15 | 0d |  |  |  |  | 38h | 38h | 38 | 38 | AP310 | 4.75 days |
| 430 | 1.5.1.4.3.2.1 | Completed--------BUILD-INT-AO-0002-GET_LOAN-R2.1 *PI - Interdace - Sales* |  | 10d | 2013-06-24 A | 2013-07-05 A |  | 100% |  | 2013-06-25 | 2013-07-04 | 0d |  |  | start no earlier than 2013-06-25 | Kalivarapu, Sai Krishna [75%] | 36h | 36h | 36 | 36 |  | 4.5 days |
| 431 | 1.5.1.4.3.2.2 | Completed--------UT-INT-AO-0002-GET_LOAN-R2.1 *PI - Interdace - Sales* |  | 5d | 2013-07-01 A | 2013-07-05 A |  | 100% |  | 2013-07-04 | 2013-07-09 | 0d |  |  |  | Kalivarapu, Sai Krishna [5%] | 2h | 2h | 2 | 2 |  | 0.25 days |
| 432 | 1.5.1.4.3.2.3 | Completed--------RB-INT-AO-0002-GET_LOAN-R2.1 *PI - Interdace - Sales* | milestone | 0d | 2013-07-11 A | 2013-07-11 A |  | 100% |  | 2013-07-15 | 2013-07-15 | 0d |  |  |  |  |  |  |  |  |  | 0 days |
| 433 | 1.5.1.4.3.3 | **Completed--------FS-INT-AO-0016-LOC-R2.1 *PI - Interdace - Sales*** |  | 50d | 2013-07-22 A | 2013-09-27 A |  | 100% |  | 2013-07-09 | 2013-08-05 | 0d |  |  |  |  | 95h | 95h | 95 | 95 | AP310 | 6.25 days |
| 434 | 1.5.1.4.3.3.1 | Completed--------TS-INT-AO-0016-LOC-R2.1 *PI - Interdace - Sales* |  | 19.38d | 2013-07-22 A | 2013-09-27 A |  | 100% |  | 2013-07-09 | 2013-07-15 | 0d |  |  | start no earlier than 2013-07-25 | Mistri, Harish; Priyambada, Suprita [80%] | 75h | 75h | 75 | 75 |  | 3.75 days |
| 435 | 1.5.1.4.3.3.2 | Completed--------RTS-INT-AO-0016-LOC-R2.1 *PI - Interdace - Sales* | milestone | 0d | 2013-08-08 A | 2013-08-08 A |  | 100% |  | 2013-07-22 | 2013-07-22 | 0d |  |  |  |  |  |  |  |  |  | 0 days |
| 436 | 1.5.1.4.3.3.3 | Completed--------BUILD-INT-AO-0016-LOC-R2.1 *PI - Interdace - Sales* |  | 5d | 2013-07-29 A | 2013-08-16 A |  | 100% |  | 2013-07-15 | 2013-07-23 | 0d |  |  | start no earlier than 2013-07-15 | Mistri, Harish [50%] | 20h | 20h | 20 | 20 |  | 2.5 days |
| 437 | 1.5.1.4.3.3.4 | Completed--------UT-INT-AO-0016-LOC-R2.1 *PI - Interdace - Sales* | milestone | 0d | 2013-08-19 A | 2013-08-21 A |  | 100% |  | 2013-07-23 | 2013-07-25 | 0d |  |  | start no earlier than 2013-07-23 | Mistri, Harish |  |  |  |  |  | 0 days |
| 438 | 1.5.1.4.3.3.5 | Completed--------RB-INT-AO-0016-LOC-R2.1 *PI - Interdace - Sales* | milestone | 0d | 2013-08-30 A | 2013-08-30 A |  | 100% |  | 2013-08-05 | 2013-08-05 | 0d |  |  |  |  |  |  |  |  |  | 0 days |
| 439 | 1.5.1.4.4 | **PI - Interface - FULFILLMENT** |  | 100.5d? | 2013-07-15 A | 2013-12-02 |  | 69% | 31.38d? | 2013-06-28 | 2013-12-13 | 0d | 26.5d |  |  |  | 614h | 366h | 614 | 366 |  | 52.5 days |
| 440 | 1.5.1.4.4.1 | **Completed--------FS-INT-AO-0018-HOME_EQUITY-R2.1 *PI - Interface - Fulfillment*** |  | 44d | 2013-07-15 A | 2013-09-12 A |  | 100% |  | 2013-06-28 | 2013-07-29 | 0d |  |  |  |  | 143h | 143h | 143 | 143 | AP310 | 17.88 days |
| 441 | 1.5.1.4.4.1.1 | Completed--------BUILD-INT-AO-0018-HOME_EQUITY-R2.1 *PI - Interface - Fulfillment* |  | 15d | 2013-07-15 A | 2013-08-16 A |  | 100% |  | 2013-06-28 | 2013-07-16 | 0d |  |  | start no earlier than 2013-07-15 | Missy, Vincent | 85h | 85h | 85 | 85 |  | 10.63 days |
| 442 | 1.5.1.4.4.1.2 | Completed--------UT-INT-AO-0018-HOME_EQUITY-R2.1 *PI - Interface - Fulfillment* |  | 10d | 2013-08-12 A | 2013-09-06 A |  | 100% |  | 2013-07-16 | 2013-07-23 | 0d |  |  |  | Missy, Vincent [87.5%] | 58h | 58h | 58 | 58 |  | 7.25 days |
| 443 | 1.5.1.4.4.1.3 | Completed--------RB-INT-AO-0018-HOME_EQUITY-R2.1 *PI - Interface - Fulfillment* | milestone | 0d | 2013-09-12 A | 2013-09-12 A |  | 100% |  | 2013-07-29 | 2013-07-29 | 0d |  |  |  |  |  |  |  |  |  | 0 days |
| 444 | 1.5.1.4.4.2 | **FS-INT-AO-0010-DISB_HOME_EQUITY-R2.1 *PI - Interface - Fulfillment*** |  | 73.02d | 2013-08-19 A | 2013-11-28 |  | 42% | 42.61d | 2013-10-15 | 2013-12-13 | 0d | 16.98d |  |  |  | 252h | 104h | 252 | 104 | AP310 | 28.63 days |
| 445 | 1.5.1.4.4.2.1 | TS-INT-AO-0010-DISB_HOME_EQUITY-R2.1 *PI - Interface - Fulfillment* |  | 15d | 2013-08-19 A | 2013-10-11 A |  | 100% |  | 2013-10-15 | 2013-11-04 | 0d |  |  | start no earlier than 2013-10-31 | Missy, Vincent | 104h | 104h | 104 | 104 |  | 10.13 days |
| 446 | 1.5.1.4.4.2.2 | RTS-INT-AO-0010-DISB_HOME_EQUITY-R2.1 *PI - Interface - Fulfillment* | milestone | 0d | 2013-10-18 | 2013-10-18 | 445FS+5d |  |  | 2013-11-11 | 2013-11-11 | 0d | 779.38d | 0d |  |  |  |  |  |  |  | 0 days |
| 447 | 1.5.1.4.4.2.3 | RTS-INT-AO-0010-DISB_HOME_EQUITY-R2.1-Gate2 *PI - Interface - Fulfillment* | milestone | 0d | 2013-10-23 | 2013-10-23 | 446FS+3d |  |  | 2013-11-14 | 2013-11-14 | 0d | 779.38d |  |  |  |  |  |  |  |  | 0 days |
| 448 | 1.5.1.4.4.2.4 | BUILD-INT-AO-0010-DISB_HOME_EQUITY-R2.1 *PI - Interface - Fulfillment* |  | 15d | 2013-10-14 | 2013-11-08 | 445 |  |  | 2013-11-04 | 2013-11-26 | 0d | 16.98d | 0d |  | Missy, Vincent [90%] | 108h |  | 108 |  |  | 13.5 days |
| 449 | 1.5.1.4.4.2.5 | UT-INT-AO-0010-DISB_HOME_EQUITY-R2.1 *PI - Interface - Fulfillment* |  | 6.02d | 2013-11-11 | 2013-11-19 | 448 |  |  | 2013-11-26 | 2013-12-04 | 0d | 16.98d | 0d |  | Missy, Vincent [83.1%] | 40h |  | 40 |  |  | 5 days |
| 450 | 1.5.1.4.4.2.6 | RB-INT-AO-0010-DISB_HOME_EQUITY-R2.1 *PI - Interface - Fulfillment* | milestone | 0d | 2013-11-28 | 2013-11-28 | 449FS+7d |  |  | 2013-12-13 | 2013-12-13 | 0d | 754.36d |  |  |  |  |  |  |  |  | 0 days |
| 451 | 1.5.1.4.4.3 | **Completed--------FS-INT-AO-0027-CO-R2.1 *PI - Interface - Fulfillment*** |  | 32d | 2013-07-22 A | 2013-09-03 A |  | 100% |  |  |  |  |  |  |  |  | 48h | 48h | 48 | 48 | AP310 | 6 days |
| 452 | 1.5.1.4.4.3.1 | Completed--------TS-INT-AO-0027-CO-R2.1 *PI - Interface - Fulfillment* |  | 5d | 2013-07-22 A | 2013-07-26 A |  | 100% |  |  |  |  |  |  | start no earlier than 2013-07-22 | Merwade, Mahesh [75%] | 30h | 30h | 30 | 30 |  | 3.75 days |
| 453 | 1.5.1.4.4.3.2 | Completed--------RTS-INT-AO-0027-CO-R2.1 *PI - Interface - Fulfillment* | milestone | 0d | 2013-08-02 A | 2013-08-02 A |  | 100% |  |  |  |  |  |  |  |  |  |  |  |  |  | 0 days |
| 454 | 1.5.1.4.4.3.3 | Completed--------BUILD-INT-AO-0027-CO-R2.1 *PI - Interface - Fulfillment* |  | 10d | 2013-07-22 A | 2013-08-16 A |  | 100% |  |  |  |  |  |  | start no earlier than 2013-07-15 | Merwade, Mahesh [25%] | 18h | 18h | 18 | 18 |  | 2.25 days |
| 455 | 1.5.1.4.4.3.4 | Completed--------UT-INT-AO-0027-CO-R2.1 *PI - Interface - Fulfillment* | milestone | 0d | 2013-08-16 A | 2013-08-23 A |  | 100% |  |  |  |  |  |  | start no earlier than 2013-07-23 | Merwade, Mahesh |  |  |  |  |  | 0 days |
| 456 | 1.5.1.4.4.3.5 | Completed--------RB-INT-AO-0027-CO-R2.1 *PI - Interface - Fulfillment* | milestone | 0d | 2013-09-03 A | 2013-09-03 A |  | 100% |  |  |  |  |  |  |  |  |  |  |  |  |  | 0 days |

Notes:
- 439: ? For PM: S'assurer de respecter date de baseline de la fin dans planview

| ID | WBS | Task | Type | Duration | Start | Finish | Predecessors | Complete | Remaining | Baseline start | Baseline finish | Baseline duration | Total slack | Free slack | Constraint | Resources | Work | Actual work | Cost | Actual cost | type of Deliverable | work_091113 |
| --- | --- | --- | --- | --- | --- | --- | --- | --- | --- | --- | --- | --- | --- | --- | --- | --- | --- | --- | --- | --- | --- | --- |
| 457 | 1.5.1.4.4.4 | **FS-INT-AO-0008-BORROWING_CAPACITY-R2.1 *PI - Interface - Fulfillment*** |  | 20.5d? | 2013-11-04 | 2013-12-02 |  |  |  |  |  |  | 14.5d |  |  |  | 100h |  | 100 |  | AP310 |  |
| 458 | 1.5.1.4.4.4.1 | TS-INT-AO-0008-BORROWING_CAPACITY-R2.1 *PI - Interface - Fulfillment* |  | 4d? | 2013-11-04 | 2013-11-07 |  |  |  |  |  |  | 161.02d | 0d | start no earlier than 2013-11-04 | Kalivarapu, Sai Krishna | 32h |  | 32 |  |  |  |
| 459 | 1.5.1.4.4.4.2 | RTS-INT-AO-0008-BORROWING_CAPACITY-R2.1 *PI - Interface - Fulfillment* |  | 1d? | 2013-11-15 | 2013-11-15 | 458FS+5d |  |  |  |  |  | 171.52d |  |  |  |  |  |  |  |  |  |
| 460 | 1.5.1.4.4.4.3 | BUILD-INT-AO-0008-BORROWING_CAPACITY-R2.1 *PI - Interface - Fulfillment* |  | 6d? | 2013-11-08 | 2013-11-15 | 458 |  |  |  |  |  | 14.5d | 0d |  | Kalivarapu, Sai Krishna | 48h |  | 48 |  |  |  |
| 461 | 1.5.1.4.4.4.4 | UT-INT-AO-0008-BORROWING_CAPACITY-R2.1 *PI - Interface - Fulfillment* |  | 2.5d? | 2013-11-18 | 2013-11-20 | 460 |  |  |  |  |  | 14.5d | 0d |  | Kalivarapu, Sai Krishna | 20h |  | 20 |  |  |  |
| 462 | 1.5.1.4.4.4.5 | RB-INT-AO-0008-BORROWING_CAPACITY-R2.1 *PI - Interface - Fulfillment* |  | 1d? | 2013-11-29 | 2013-12-02 | 461FS+7d |  |  |  |  |  | 161.02d |  |  |  |  |  |  |  |  |  |
| 463 | 1.5.1.4.4.5 | **Completed--------FS-INT-AO-0009-PH_CO_Fulfillment-R2.1 *PI - Interface - Fulfillment*** |  | 13d? | 2013-09-16 A | 2013-10-02 A |  | 100% |  |  |  |  |  |  |  |  | 71h | 71h | 71 | 71 | AP310 |  |
| 464 | 1.5.1.4.4.5.1 | Completed--------TS-INT-AO-0009-PH_CO_Fulfillment-R2.1 *PI - Interface - Fulfillment* |  | 6.25d? | 2013-09-16 A | 2013-09-24 A |  | 100% |  |  |  |  |  |  | start no earlier than 2013-09-24 | Missy, Vincent [160%] | 20h | 20h | 20 | 20 |  |  |
| 465 | 1.5.1.4.4.5.2 | Completed--------RTS-INT-AO-0009-PH_CO_Fulfillment-R2.1 *PI - Interface - Fulfillment* |  | 1d? | 2013-09-30 A | 2013-09-30 A |  | 100% |  |  |  |  |  |  |  |  |  |  |  |  |  |  |
| 466 | 1.5.1.4.4.5.3 | Completed--------BUILD-INT-AO-0009-PH_CO_Fulfillment-R2.1 *PI - Interface - Fulfillment* |  | 5d? | 2013-09-16 A | 2013-09-20 A |  | 100% |  |  |  |  |  |  |  | Missy, Vincent [10%] | 4h | 4h | 4 | 4 |  |  |
| 467 | 1.5.1.4.4.5.4 | Completed--------UT-INT-AO-0009-PH_CO_Fulfillment-R2.1 *PI - Interface - Fulfillment* |  | 10d? | 2013-09-16 A | 2013-09-27 A |  | 100% |  |  |  |  |  |  |  | Missy, Vincent | 47h | 47h | 47 | 47 |  |  |
| 468 | 1.5.1.4.4.5.5 | Completed--------RB-INT-AO-0009-PH_CO_Fulfillment-R2.1 *PI - Interface - Fulfillment* |  | 1d? | 2013-10-02 A | 2013-10-02 A |  | 100% |  |  |  |  |  |  |  |  |  |  |  |  |  |  |
| 469 | 1.5.1.4.5 | **PI - Interface - Extended Scope** |  | 118.29d | 2013-06-17 A | 2013-11-28 |  | 78% | 26.46d | 2013-07-01 | 2013-12-20 | 0d | 16.71d |  |  |  | 657h | 480h | 657 | 480 |  | 135.65 days |
| 470 | 1.5.1.4.5.1 | **Completed--------FS-INT-AO-0109-CAMP_ACTIVATION-R2.1 *PI - Interdace - ExtScope*** |  | 72d | 2013-06-17 A | 2013-09-24 A |  | 100% |  | 2013-07-01 | 2013-10-24 | 0d |  |  |  |  | 3h | 3h | 3 | 3 | AP310 | 12.53 days |
| 471 | 1.5.1.4.5.1.1 | Completed--------TS-INT-AO-0109-CAMP_ACTIVATION-R2.1 *PI - Interdace - ExtScope* |  | 5d | 2013-07-15 A | 2013-09-02 A |  | 100% |  | 2013-07-01 | 2013-07-24 | 0d |  |  | start no earlier than 2013-07-22 | Kalivarapu, Sai Krishna [7.5%]; Missy, Vincent [1%] | 3h | 3h | 3 | 3 |  | 0.38 days |
| 472 | 1.5.1.4.5.1.2 | Completed--------RTS-INT-AO-0109-CAMP_ACTIVATION-R2.1 *PI - Interdace - ExtScope* | milestone | 0d | 2013-09-06 A | 2013-09-06 A |  | 100% |  | 2013-07-31 | 2013-07-31 | 0d |  |  |  |  |  |  |  |  |  | 0 days |
| 473 | 1.5.1.4.5.1.3 | Completed--------BUILD-INT-AO-0109-CAMP_ACTIVATION-R2.1 *PI - Interdace - ExtScope* | milestone | 0d | 2013-06-17 A | 2013-06-17 A |  | 100% |  | 2013-07-24 | 2013-09-17 | 0d |  |  |  | Missy, Vincent [5.5%] |  |  |  |  |  | 0.4 days |
| 474 | 1.5.1.4.5.1.4 | Completed--------UT-INT-AO-0109-CAMP_ACTIVATION-R2.1 *PI - Interdace - ExtScope* | milestone | 0d | 2013-06-17 A | 2013-06-17 A |  | 100% |  | 2013-09-17 | 2013-10-15 | 0d |  |  |  | Missy, Vincent [2.5%] |  |  |  |  |  | 11.75 days |
| 475 | 1.5.1.4.5.1.5 | Completed--------RB-INT-AO-0109-CAMP_ACTIVATION-R2.1 *PI - Interdace - ExtScope* | milestone | 0d | 2013-09-24 A | 2013-09-24 A |  | 100% |  | 2013-10-24 | 2013-10-24 | 0d |  |  |  |  |  |  |  |  |  | 0 days |
| 476 | 1.5.1.4.5.2 | **Completed--------FS-INT-AO-0111-CAMP_CDA-R2.1 *PI - Interdace - ExtScope*** |  | 30d | 2013-09-02 A | 2013-10-11 A |  | 100% |  | 2013-09-26 | 2013-12-20 | 0d |  |  |  |  | 170h | 170h | 170 | 170 | AP310 | 51.38 days |
| 477 | 1.5.1.4.5.2.1 | Completed--------TS-INT-AO-0111-CAMP_CDA-R2.1 *PI - Interdace - ExtScope* |  | 20d | 2013-09-02 A | 2013-10-04 A |  | 100% |  | 2013-09-26 | 2013-10-17 | 0d |  |  | start no earlier than 2013-09-24 | Merwade, Mahesh | 120h | 120h | 120 | 120 |  | 15.5 days |
| 478 | 1.5.1.4.5.2.2 | Completed--------RTS-INT-AO-0111-CAMP_CDA-R2.1 *PI - Interdace - ExtScope* | milestone | 0d | 2013-10-11 A | 2013-10-11 A | 477FS+5d | 100% |  | 2013-10-24 | 2013-10-24 | 0d |  |  |  |  |  |  |  |  |  | 0 days |
| 479 | 1.5.1.4.5.2.3 | Completed--------BUILD-INT-AO-0111-CAMP_CDA-R2.1 *PI - Interdace - ExtScope* |  | 5d | 2013-09-30 A | 2013-10-04 A | 477 | 100% |  | 2013-10-17 | 2013-12-02 | 0d |  |  | start no earlier than 2013-10-17 | Merwade, Mahesh [80%] | 32h | 32h | 32 | 32 |  | 25.63 days |
| 480 | 1.5.1.4.5.2.4 | Completed--------UT-INT-AO-0111-CAMP_CDA-R2.1 *PI - Interdace - ExtScope* |  | 10d | 2013-09-23 A | 2013-10-04 A | 479 | 100% |  | 2013-12-02 | 2013-12-16 | 0d |  |  | start no earlier than 2013-11-22 | Merwade, Mahesh [25%] | 18h | 18h | 18 | 18 |  | 10.25 days |
| 481 | 1.5.1.4.5.2.5 | Completed--------RB-INT-AO-0111-CAMP_CDA-R2.1 *PI - Interdace - ExtScope* | milestone | 0d | 2013-10-10 A | 2013-10-10 A | 480FS+4d | 100% |  | 2013-12-20 | 2013-12-20 | 0d |  |  |  |  |  |  |  |  |  | 0 days |

Notes:
- 469: ? For PM: S'assurer de respecter date de baseline de la fin dans planview

| ID | WBS | Task | Type | Duration | Start | Finish | Predecessors | Complete | Remaining | Baseline start | Baseline finish | Baseline duration | Total slack | Free slack | Constraint | Resources | Work | Actual work | Cost | Actual cost | work_091113 | type of Deliverable |
| --- | --- | --- | --- | --- | --- | --- | --- | --- | --- | --- | --- | --- | --- | --- | --- | --- | --- | --- | --- | --- | --- | --- |
| 482 | 1.5.1.4.5.3 | **Cancelled--------FS-INT-AO-0108-ESCOPE_DEC_AMORT-R2.1 *PI - Interdace - ExtScope*** |  | 40d | 2013-08-21 A | 2013-10-15 A |  | 100% |  | 2013-09-18 | 2013-10-22 | 0d |  |  |  |  | 90h | 90h | 90 | 90 | 11.25 days |  |
| 483 | 1.5.1.4.5.3.1 | Cancelled--------TS-FS-INT-AO-0108-ESCOPE_DEC_AMORT-R2.1 *PI - Interdace - ExtScope* |  | 5.25d | 2013-08-21 A | 2013-08-27 A |  | 100% |  | 2013-09-18 | 2013-09-23 | 0d |  |  | start no earlier than 2013-08-21 | Priyambada, Suprita [300%] | 90h | 90h | 90 | 90 | 11.25 days |  |
| 484 | 1.5.1.4.5.3.2 | Cancelled--------RTS-FS-INT-AO-0108-ESCOPE_DEC_AMORT-R2.1 *PI - Interdace - ExtScope* | milestone | 0d | 2013-09-03 A | 2013-09-03 A |  | 100% |  | 2013-09-30 | 2013-09-30 | 0d |  |  |  |  |  |  |  |  | 0 days |  |
| 485 | 1.5.1.4.5.3.3 | Cancelled--------BUILD-FS-INT-AO-0108-ESCOPE_DEC_AMORT-R2.1 *PI - Interdace - ExtScope* | milestone | 0d | 2013-08-29 A | 2013-08-30 A |  | 100% |  | 2013-09-23 | 2013-10-08 | 0d |  |  | start no earlier than 2013-08-29 | Priyambada, Suprita [51%] |  |  |  |  | 0 days |  |
| 486 | 1.5.1.4.5.3.4 | Cancelled--------UT-FS-INT-AO-0108-ESCOPE_DEC_AMORT-R2.1 *PI - Interdace - ExtScope* | milestone | 0d | 2013-10-07 A | 2013-10-07 A |  | 100% |  | 2013-10-08 | 2013-10-11 | 0d |  |  | start no earlier than 2013-10-07 | Priyambada, Suprita |  |  |  |  | 0 days |  |
| 487 | 1.5.1.4.5.3.5 | Cancelled--------RB-INT-AO-0108-ESCOPE_DEC_AMORT-R2.1 *PI - Interdace - ExtScope* | milestone | 0d | 2013-10-15 A | 2013-10-15 A |  | 100% |  | 2013-10-22 | 2013-10-22 | 0d |  |  |  |  |  |  |  |  | 0 days |  |
| 488 | 1.5.1.4.5.4 | **Cancelled--------FS-INT-AO-0107-ESCOPE_ACTIVATION_AMORT-R2.1 *PI - Interdace - ExtScope*** |  | 25d | 2013-06-17 A | 2013-07-22 |  | 99% | 0d | 2013-07-23 | 2013-09-11 | 0d | 110d |  |  |  | 2h | 2h | 2 | 2 | 0.25 days |  |
| 489 | 1.5.1.4.5.4.1 | Cancelled--------TS-INT-AO-0107-ESCOPE_ACTIVATION_AMORT-R2.1 *PI - Interdace - ExtScope* |  | 1d | 2013-07-15 A | 2013-07-15 A |  | 100% |  | 2013-07-23 | 2013-08-13 | 0d |  |  | start no earlier than 2013-07-25 | Merwade, Mahesh [5%] | 2h | 2h | 2 | 2 | 0.25 days |  |
| 490 | 1.5.1.4.5.4.2 | Cancelled--------RTS-INT-AO-0107-ESCOPE_ACTIVATION_AMORT-R2.1 *PI - Interdace - ExtScope* | milestone | 0d | 2013-07-15 | 2013-07-15 |  |  |  | 2013-08-20 | 2013-08-20 | 0d | 261.52d |  | start no earlier than 2013-07-15 |  |  |  |  |  | 0 days |  |
| 491 | 1.5.1.4.5.4.3 | Cancelled--------BUILD-INT-AO-0107-ESCOPE_ACTIVATION_AMORT-R2.1 *PI - Interdace - ExtScope* | milestone | 0d | 2013-06-17 | 2013-06-17 |  |  |  | 2013-08-13 | 2013-08-27 | 0d | 281.52d |  |  | Merwade, Mahesh |  |  |  |  | 0 days |  |
| 492 | 1.5.1.4.5.4.4 | Cancelled--------UT-INT-AO-0107-ESCOPE_ACTIVATION_AMORT-R2.1 *PI - Interdace - ExtScope* | milestone | 0d | 2013-06-17 | 2013-06-17 |  |  |  | 2013-08-27 | 2013-09-02 | 0d | 281.52d |  |  | Merwade, Mahesh |  |  |  |  | 0 days |  |
| 493 | 1.5.1.4.5.4.5 | Cancelled--------RB-INT-AO-0107-ESCOPE_ACTIVATION_AMORT-R2.1 *PI - Interdace - ExtScope* | milestone | 0d | 2013-07-22 | 2013-07-22 |  |  |  | 2013-09-11 | 2013-09-11 | 0d | 256.52d |  | start no earlier than 2013-07-22 |  |  |  |  |  | 0 days |  |
| 494 | 1.5.1.4.5.5 | **Completed--------FS-INT-AO-0113-GET_RATE-R2.1 *PI - Interdace - ExtScope*** |  | 42d | 2013-07-29 A | 2013-09-24 A |  | 100% |  | 2013-08-19 | 2013-10-04 | 0d |  |  |  |  | 214h | 214h | 214 | 214 | 28.5 days | AP310 |
| 495 | 1.5.1.4.5.5.1 | Completed--------TS-INT-AO-0113-GET_RATE-R2.1 *PI - Interdace - ExtScope* |  | 15d | 2013-07-29 A | 2013-08-30 A |  | 100% |  | 2013-08-19 | 2013-08-28 | 0d |  |  | start no earlier than 2013-08-22 | Merwade, Mahesh | 102h | 102h | 102 | 102 | 12.75 days |  |
| 496 | 1.5.1.4.5.5.2 | Completed--------RTS-INT-AO-0113-GET_RATE-R2.1 *PI - Interdace - ExtScope* | milestone | 0d | 2013-09-06 A | 2013-09-06 A |  | 100% |  | 2013-09-04 | 2013-09-04 | 0d |  |  |  |  |  |  |  |  | 0 days |  |
| 497 | 1.5.1.4.5.5.3 | Completed--------RTS-INT-AO-0113-GET_RATE-R2.1 -Gate2 *PI - Interdace - ExtScope* | milestone | 0d | 2013-09-11 A | 2013-09-11 A |  | 100% |  | 2013-09-09 | 2013-09-09 | 0d |  |  |  |  |  |  |  |  | 0 days |  |
| 498 | 1.5.1.4.5.5.4 | Completed--------BUILD-INT-AO-0113-GET_RATE-R2.1 *PI - Interdace - ExtScope* |  | 15d | 2013-08-05 A | 2013-09-06 A |  | 100% |  | 2013-08-29 | 2013-09-16 | 0d |  |  |  | Merwade, Mahesh | 70h | 70h | 70 | 70 | 8.75 days |  |
| 499 | 1.5.1.4.5.5.5 | Completed--------UT-INT-AO-0113-GET_RATE-R2.1 *PI - Interdace - ExtScope* |  | 10d | 2013-08-26 A | 2013-09-13 A |  | 100% |  | 2013-09-17 | 2013-09-25 | 0d |  |  | start no earlier than 2013-09-17 | Merwade, Mahesh [55%] | 42h | 42h | 42 | 42 | 7 days |  |
| 500 | 1.5.1.4.5.5.6 | Completed--------RB-INT-AO-0113-GET_RATE-R2.1 *PI - Interdace - ExtScope* | milestone | 0d | 2013-09-24 A | 2013-09-24 A |  | 100% |  | 2013-10-04 | 2013-10-04 | 0d |  |  |  |  |  |  |  |  | 0 days |  |
| 501 | 1.5.1.4.5.6 | **FS-INT-AO-0105-ESCOPE_CALC_INDEMNITY-R2.1 *PI - Interdace - ExtScope*** |  | 38.29d | 2013-10-07 A | 2013-11-28 |  | 16% | 32.17d | 2013-10-10 | 2013-12-19 | 0d | 16.71d |  |  |  | 178h | 1h | 178 | 1 | 31.75 days | AP310 |
| 502 | 1.5.1.4.5.6.1 | Completed--------TS-INT-AO-0105-ESCOPE_CALC_INDEMNITY-R2.1 *PI - Interdace - ExtScope* | milestone | 0d | 2013-10-08 A | 2013-10-08 A |  | 100% |  | 2013-10-10 | 2013-11-01 | 0d |  |  | start no earlier than 2013-10-08 | Kalivarapu, Sai Krishna [60%] |  |  |  |  | 9.5 days |  |
| 503 | 1.5.1.4.5.6.2 | Completed--------RTS-INT-AO-0105-ESCOPE_CALC_INDEMNITY-R2.1 *PI - Interdace - ExtScope* | milestone | 0d | 2013-10-14 A | 2013-10-14 A | 502FS+5d | 100% |  | 2013-11-08 | 2013-11-08 | 0d |  |  |  |  |  |  |  |  | 0 days |  |
| 504 | 1.5.1.4.5.6.3 | BUILD-INT-AO-0105-ESCOPE_CALC_INDEMNITY-R2.1 *PI - Interdace - ExtScope* |  | 20.88d | 2013-10-07 A | 2013-11-04 | 502 | 24% | 15.88d | 2013-11-04 | 2013-11-25 | 0d | 16.71d | 0d | start no earlier than 2013-11-04 | Kalivarapu, Sai Krishna | 128h | 1h | 128 | 1 | 16 days |  |
| 505 | 1.5.1.4.5.6.4 | UT-INT-AO-0105-ESCOPE_CALC_INDEMNITY-R2.1 *PI - Interdace - ExtScope* |  | 10.42d | 2013-11-04 | 2013-11-19 | 504 |  |  | 2013-11-26 | 2013-12-10 | 0d | -15.12d | 0d | start no earlier than 2013-10-07 | Kalivarapu, Sai Krishna [60%] | 50h |  | 50 |  | 6.25 days |  |
| 506 | 1.5.1.4.5.6.5 | RB-INT-AO-0105-ESCOPE_CALC_INDEMNITY-R2.1 *PI - Interdace - ExtScope* | milestone | 0d | 2013-11-28 | 2013-11-28 | 505FS+7d |  |  | 2013-12-19 | 2013-12-19 | 0d | -15.12d | 0d |  |  |  |  |  |  | 0 days |  |

Notes:
- 482: ? For PM: FS cancellé (les hrs auraient dû être dans calculator mais on été mis ici par erreur dans planview). Ce FS ne fait pas partie des COUNTS
- 488: ? For PM: FS cancellé (les hrs auraient dû être dans un autre FS mais on été mis ici par erreur dans planview). Ce FS ne fait pas partie des COUNTS
- 501: ? For PM: QUESTIONS!!

| ID | WBS | Task | Type | Duration | Start | Finish | Predecessors | Complete | Remaining | Baseline start | Baseline finish | Baseline duration | Total slack | Free slack | Constraint | Resources | Work | Actual work | Cost | Actual cost | work_091113 | type of Deliverable |
| --- | --- | --- | --- | --- | --- | --- | --- | --- | --- | --- | --- | --- | --- | --- | --- | --- | --- | --- | --- | --- | --- | --- |
| 507 | 1.5.1.5 | **ADOBE - AP354 Form** |  | 97.5d? | 2013-08-12 A | 2013-12-25 |  | 37% | 61.85d? | 2013-08-15 | 2013-12-23 | 0d | 12d | 0d |  |  | 6533.5h | 2089.5h | 6,533.5 | 2,089.5 | 831.5 days |  |
| 508 | 1.5.1.5.1 | **FS-FRM-AO-0005-Crosspackage-R2.1 *Adobe - Form*** |  | 31.5d | 2013-09-17 A | 2013-10-30 |  | 82% | 5.59d | 2013-09-11 | 2013-10-28 | 0d | 40d |  |  |  | 184h | 140h | 184 | 140 | 22 days | AP354 |
| 509 | 1.5.1.5.1.1 | Completed--------TS-FRM-AO-0005-Crosspackage-R2.1 *Adobe - Form* |  | 10.5d | 2013-09-17 A | 2013-10-08 A |  | 100% |  | 2013-09-11 | 2013-09-19 | 0d |  |  | start no earlier than 2013-09-17 | Rahane, Samir [166.7%] | 60h | 60h | 60 | 60 | 6.5 days |  |
| 510 | 1.5.1.5.1.2 | Completed--------RTS-FRM-AO-0005-Crosspackage-R2.1 *Adobe - Form* | milestone | 0d | 2013-10-15 A | 2013-10-15 A | 509FS+5d | 100% |  | 2013-09-26 | 2013-09-26 | 0d |  |  |  |  |  |  |  |  | 0 days |  |
| 511 | 1.5.1.5.1.3 | BUILD-FRM-AO-0005-Crosspackage-R2.1 *Adobe - Form* |  | 16d | 2013-09-23 A | 2013-10-14 | 509 | 94% | 1d | 2013-09-19 | 2013-10-04 | 0d | 40d | 0d | start no earlier than 2013-09-11 | Rahane, Samir | 88h | 80h | 88 | 80 | 11 days |  |
| 512 | 1.5.1.5.1.4 | UT-FRM-AO-0005-Crosspackage-R2.1 *Adobe - Form* |  | 4.5d | 2013-10-15 | 2013-10-21 | 511, 106 |  |  | 2013-10-08 | 2013-10-17 | 0d | 184.48d | 0d | start no earlier than 2013-10-04 | Rahane, Samir | 36h |  | 36 |  | 4.5 days |  |
| 513 | 1.5.1.5.1.5 | RB-FRM-AO-0005-Crosspackage-R2.1 *Adobe - Form* | milestone | 0d | 2013-10-30 | 2013-10-30 | 512FS+7d |  |  | 2013-10-28 | 2013-10-28 | 0d | 184.48d |  |  |  |  |  |  |  | 0 days |  |
| 514 | 1.5.1.5.2 | **On Hold--------FS-FRM-AO-0033-10135_CONV-R2.1 *Adobe - Form*** |  | 56.88d | 2013-09-23 A | 2013-12-10 |  | 19% | 46.05d | 2013-08-19 | 2013-10-17 | 0d | 10.62d |  |  |  | 508h | 59h | 508 | 59 | 60.63 days | AP354 |
| 515 | 1.5.1.5.2.1 | On Hold--------TS-FRM-AO-0033-10135_CONV-R2.1 *Adobe - Form* |  | 25d | 2013-09-23 A | 2013-10-30 |  | 45% | 13.75d | 2013-08-19 | 2013-08-29 | 0d | 755.84d | 0d | start no earlier than 2013-10-03 | Sriram Sarath, Nandula (termine 22 dec); Verma, Vinay [71.1%] | 169h | 59h | 169 | 59 | 18.25 days |  |
| 516 | 1.5.1.5.2.2 | RTS-FRM-AO-0033-10135_CONV-R2.1 *Adobe - Form* | milestone | 0d | 2013-11-06 | 2013-11-06 | 515FS+5d |  |  | 2013-09-05 | 2013-09-05 | 0d | 767.59d | 0d | start no earlier than 2013-10-22 |  |  |  |  |  | 0 days |  |
| 517 | 1.5.1.5.2.3 | RTS-FRM-AO-0033-10135_CONV-R2.1-Gate2 *Adobe - Form* | milestone | 0d | 2013-11-11 | 2013-11-11 | 516FS+3d |  |  | 2013-09-10 | 2013-09-10 | 0d | 767.59d |  |  |  |  |  |  |  | 0 days |  |
| 518 | 1.5.1.5.2.4 | BUILD-FRM-AO-0033-10135_CONV-R2.1-Form *Adobe - Form* |  | 20d | 2013-10-30 | 2013-11-26 | 515 |  |  | 2013-08-29 | 2013-09-13 | 0d | 755.84d |  | start no earlier than 2013-10-25 | Sriram Sarath, Nandula (termine 22 dec) | 160h |  | 160 |  | 20 days |  |
| 519 | 1.5.1.5.2.5 | BUILD-FRM-AO-0033-10135_CONV-R2.1-BRF *Adobe - Form* |  | 2d | 2013-11-07 | 2013-11-11 | 103, 515 |  |  | 2013-09-13 | 2013-09-19 | 0d | 749.34d | 3.37d | start no earlier than 2013-11-07 | Kumar Sahoo, Saroj | 82h |  | 82 |  | 10.25 days |  |
| 520 | 1.5.1.5.2.6 | UT-FRM-AO-0033-10135_CONV-R2.1 *Adobe - Form* |  | 12.12d | 2013-11-15 | 2013-11-29 | 519, 106 |  |  | 2013-10-02 | 2013-10-08 | 0d | 10.62d | 0d | start no earlier than 2013-11-15 | Sriram Sarath, Nandula (termine 22 dec) | 97h |  | 97 |  | 12.13 days |  |
| 521 | 1.5.1.5.2.7 | RB-FRM-AO-0033-10135_CONV-R2.1 *Adobe - Form* | milestone | 0d | 2013-12-10 | 2013-12-10 | 520FS+7d |  |  | 2013-10-17 | 2013-10-17 | 0d | 745.97d |  |  |  |  |  |  |  | 0 days |  |
| 522 | 1.5.1.5.3 | **FS-FRM-AO-0032-10134_CONV-R2.1 *Adobe - Form*** |  | 40.82d | 2013-08-21 A | 2013-10-16 |  | 97% | 1.33d | 2013-08-30 | 2013-10-22 | 0d | 49.68d |  |  |  | 152h | 146.5h | 152 | 146.5 | 12.88 days | AP354 |
| 523 | 1.5.1.5.3.1 | Completed--------TS-FRM-AO-0032-10134_CONV-R2.1 *Adobe - Form* |  | 1.62d | 2013-08-21 A | 2013-09-27 A |  | 100% |  | 2013-08-30 | 2013-09-05 | 0d |  |  | start no earlier than 2013-08-21 | Sriram Sarath, Nandula (termine 22 dec) [200%] | 26h | 26h | 26 | 26 | 4 days |  |
| 524 | 1.5.1.5.3.2 | Completed--------RTS-FRM-AO-0032-10134_CONV-R2.1 *Adobe - Form* | milestone | 0d | 2013-10-04 A | 2013-10-04 A | 523FS+5d | 100% |  | 2013-09-12 | 2013-09-12 | 0d |  |  |  |  |  |  |  |  | 0 days |  |
| 525 | 1.5.1.5.3.3 | Completed--------RTS-FRM-AO-0032-10134_CONV-R2.1-Gate2 *Adobe - Form* | milestone | 0d | 2013-10-09 A | 2013-10-09 A | 524FS+3d | 100% |  | 2013-09-17 | 2013-09-17 | 0d |  |  |  |  |  |  |  |  | 0 days |  |
| 526 | 1.5.1.5.3.4 | Completed--------BUILD-FRM-AO-0032-10134_CONV-R2.1 *Adobe - Form* |  | 11.25d | 2013-09-09 A | 2013-09-27 A | 523 | 100% |  | 2013-09-05 | 2013-09-16 | 0d |  |  | start no earlier than 2013-08-27 | Sriram Sarath, Nandula (termine 22 dec) | 65h | 65h | 65 | 65 | 6.25 days |  |
| 527 | 1.5.1.5.3.5 | HOLD--------UT-FRM-AO-0032-10134_CONV-R2.1 *Adobe - Form* |  | 12.07d | 2013-09-23 A | 2013-10-14 | 526, 106 | 93% | 0.81d | 2013-10-09 | 2013-10-11 | 0d | 787.03d |  | start no earlier than 2013-10-02 | Sriram Sarath, Nandula (termine 22 dec) [84.2%]; Sandra, Prasad [131.4%] | 61h | 55.5h | 61 | 55.5 | 2.63 days |  |
| 528 | 1.5.1.5.3.6 | Completed--------RB-FRM-AO-0032-10134_CONV-R2.1 *Adobe - Form* | milestone | 0d | 2013-10-16 A | 2013-10-16 A | 527FS+7d | 100% |  | 2013-10-22 | 2013-10-22 | 0d |  |  |  |  |  |  |  |  | 0 days |  |
| 529 | 1.5.1.5.4 | **FS-FRM-AO-0003-13933_RR-R2.1 *Adobe - Form*** |  | 92d | 2013-08-12 A | 2013-12-17 |  | 51% | 44.8d | 2013-08-19 | 2013-11-01 | 0d | 5.5d |  |  |  | 752h | 379h | 752 | 379 | 64.31 days | AP354 |
| 530 | 1.5.1.5.4.1 | Completed--------TS-FRM-AO-0003-13933_RR-R2.1-CR *Adobe - Form* |  | 17.38d | 2013-08-12 A | 2013-09-23 A |  | 100% |  | 2013-10-21 | 2013-10-23 | 0d |  |  | start no earlier than 2013-10-21 | Kumar Sahoo, Saroj [236.8%]; Sreekumar, Sreejith [10%] | 101.5h | 101.5h | 101.5 | 101.5 | 12.81 days |  |
| 531 | 1.5.1.5.4.2 | BUILD-FRM-AO-0003-13933_RR-R2.1-CR *Adobe - Form* |  | 31.95d | 2013-09-02 A | 2013-10-14 |  | 99% | 0.17d | 2013-10-24 | 2013-10-30 | 0d | 50.96d | 0d |  | Kumar Sahoo, Saroj [28%]; Sreekumar, Sreejith [125%]; Vallanda, Rohan Poovaiah [112%]; Kacham, Santosh [41.1%]; Verma, Vinay; Sriram Sarath, Nandula (termine 22 dec) [75%] | 278.5h | 277.5h | 278.5 | 277.5 | 5 days |  |
| 532 | 1.5.1.5.4.3 | UT-FRM-AO-0003-13933_RR-R2.1-CR *Adobe - Form* |  | 1.5d | 2013-10-14 | 2013-10-15 | 531 |  |  | 2013-10-31 | 2013-11-01 | 0d | 50.96d |  |  | Sreekumar, Sreejith | 12h |  | 12 |  | 1.5 days |  |
| 533 | 1.5.1.5.4.4 | TS-FRM-AO-0003-13933_RR-R2.1 *Adobe - Form* |  | 13.5d | 2013-08-19 | 2013-10-29 | 103 |  |  | 2013-08-19 | 2013-09-03 | 0d | 5.38d | 0d | start no earlier than 2013-08-19 | Sreekumar, Sreejith | 108h |  | 108 |  | 13.5 days |  |
| 534 | 1.5.1.5.4.5 | RTS-FRM-AO-0003-13933_RR-R2.1 *Adobe - Form* | milestone | 0d | 2013-11-05 | 2013-11-05 | 533FS+5d |  |  | 2013-09-10 | 2013-09-10 | 0d | 770.84d |  |  |  |  |  |  |  | 0 days |  |
| 535 | 1.5.1.5.4.6 | BUILD-FRM-AO-0003-13933_RR-R2.1 *Adobe - Form* |  | 22.5d | 2013-10-30 | 2013-11-26 | 533 |  |  | 2013-09-04 | 2013-10-01 | 0d | 740.84d | 0d | start no earlier than 2013-10-23 | Sandra, Prasad | 180h |  | 180 |  | 22.5 days |  |
| 536 | 1.5.1.5.4.7 | UT-FRM-AO-0003-13933_RR-R2.1 *Adobe - Form* |  | 9d | 2013-11-27 | 2013-12-06 | 535, 106 |  |  | 2013-10-02 | 2013-10-11 | 0d | 740.84d | 0d | start no earlier than 2013-11-19 | Sandra, Prasad | 72h |  | 72 |  | 9 days |  |
| 537 | 1.5.1.5.4.8 | RB-FRM-AO-0003-13933_RR-R2.1 *Adobe - Form* | milestone | 0d | 2013-12-17 | 2013-12-17 | 536FS+7d |  |  | 2013-10-22 | 2013-10-22 | 0d | 740.84d |  |  |  |  |  |  |  | 0 days |  |

Notes:
- 507: ? For PM: S'assurer de respecter date de baseline de la fin dans planview
- 527: ? For PM: hold

| ID | WBS | Task | Type | Duration | Start | Finish | Predecessors | Complete | Remaining | Baseline start | Baseline finish | Baseline duration | Total slack | Free slack | Constraint | Resources | Work | Actual work | Cost | Actual cost | type of Deliverable | work_091113 |
| --- | --- | --- | --- | --- | --- | --- | --- | --- | --- | --- | --- | --- | --- | --- | --- | --- | --- | --- | --- | --- | --- | --- |
| 538 | 1.5.1.5.5 | **FS-FRM-AO-0018-15021-2.1 *Adobe - Form*** |  | 49.02d | 2013-10-08 A | 2013-12-16 |  | 9% | 44.46d | 2013-09-24 | 2013-11-26 | 0d | 7.38d |  |  |  | 302h | 1h | 302 | 1 | AP354 | 37.75 days |
| 539 | 1.5.1.5.5.1 | TS-FRM-AO-0018-15021-2.1 *Adobe - Form* |  | 15.53d | 2013-10-08 A | 2013-10-25 | 196, 103 | 28% | 11.12d | 2013-09-24 | 2013-10-08 | 0d | 151.73d | 0d | start no earlier than 2013-10-08 | Verma, Vinay | 90h | 1h | 90 | 1 |  | 11.25 days |
| 540 | 1.5.1.5.5.2 | RTS-FRM-AO-0018-15021-2.1 *Adobe - Form* | milestone | 0d | 2013-11-01 | 2013-11-01 | 539FS+5d |  |  | 2013-10-15 | 2013-10-15 | 0d | 181.98d |  |  |  |  |  |  |  |  | 0 days |
| 541 | 1.5.1.5.5.3 | BUILD-FRM-AO-0018-15021-2.1 *Adobe - Form* |  | 19d | 2013-10-25 | 2013-11-19 | 539 |  |  | 2013-10-08 | 2013-10-31 | 0d | 151.73d | 0d | start no earlier than 2013-10-15 | Verma, Vinay | 152h |  | 152 |  |  | 19 days |
| 542 | 1.5.1.5.5.4 | UT-FRM-AO-0018-15021-2.1 *Adobe - Form* |  | 12.75d | 2013-11-19 | 2013-12-05 | 541, 106 |  |  | 2013-10-31 | 2013-11-15 | 0d | 151.73d | 0d |  | Verma, Vinay [58.8%] | 60h |  | 60 |  |  | 7.5 days |
| 543 | 1.5.1.5.5.5 | RB-FRM-AO-0018-15021-2.1 *Adobe - Form* | milestone | 0d | 2013-12-16 | 2013-12-16 | 542FS+7d |  |  | 2013-11-26 | 2013-11-26 | 0d | 151.85d |  |  |  |  |  |  |  |  | 0 days |
| 544 | 1.5.1.5.6 | **FS-FRM-AO-0020-MC_New-R2.1 *Adobe - Form*** |  | 17.62d | 2013-11-14 | 2013-12-10 |  |  |  | 2013-09-20 | 2013-10-15 | 0d | 11.25d |  |  |  | 80h |  | 80 |  | AP354 | 10 days |
| 545 | 1.5.1.5.6.1 | TS-FRM-AO-0020-MC_New-R2.1 *Adobe - Form* |  | 3d | 2013-11-14 | 2013-11-19 | 405, 103 |  |  | 2013-09-20 | 2013-09-25 | 0d | 11.25d | 0d | start no earlier than 2013-11-14 | Sreekumar, Sreejith | 24h |  | 24 |  |  | 3 days |
| 546 | 1.5.1.5.6.2 | RTS-FRM-AO-0020-MC_New-R2.1 *Adobe - Form* | milestone | 0d | 2013-11-26 | 2013-11-26 | 545FS+5d |  |  | 2013-10-02 | 2013-10-02 | 0d | 165.73d |  |  |  |  |  |  |  |  | 0 days |
| 547 | 1.5.1.5.6.3 | BUILD-FRM-AO-0020-MC_New-R2.1 *Adobe - Form* |  | 5d | 2013-11-19 | 2013-11-25 | 545 |  |  | 2013-09-25 | 2013-10-02 | 0d | 155.6d | 0d | start no earlier than 2013-09-18 | Sreekumar, Sreejith | 40h |  | 40 |  |  | 5 days |
| 548 | 1.5.1.5.6.4 | UT-FRM-AO-0020-MC_New-R2.1 *Adobe - Form* |  | 4d | 2013-11-25 | 2013-11-29 | 547, 106 |  |  | 2013-10-02 | 2013-10-04 | 0d | 155.6d | 0d | start no earlier than 2013-10-21 | Sreekumar, Sreejith [50%] | 16h |  | 16 |  |  | 2 days |
| 549 | 1.5.1.5.6.5 | RB-FRM-AO-0020-MC_New-R2.1 *Adobe - Form* | milestone | 0d | 2013-12-10 | 2013-12-10 | 548FS+7d |  |  | 2013-10-15 | 2013-10-15 | 0d | 155.73d |  |  |  |  |  |  |  |  | 0 days |
| 550 | 1.5.1.5.7 | **On Hold--------FS-FRM-AO-0047-16326_16327P-R2.1 *Adobe - Form*** |  | 48.75d | 2013-08-12 A | 2013-10-17 |  | 96% | 1.74d | 2013-08-19 | 2013-10-17 | 0d | 48.75d |  |  |  | 202h | 187h | 202 | 187 | AP354 | 21.5 days |
| 551 | 1.5.1.5.7.1 | Completed--------TS-FRM-AO-0047-16326_16327P-R2.1 *Adobe - Form* |  | 16.81d | 2013-08-12 A | 2013-09-13 A |  | 100% |  | 2013-08-19 | 2013-08-21 | 0d |  |  | start no earlier than 2013-08-19 | Verma, Vinay [90%] | 67h | 67h | 67 | 67 |  | 8.38 days |
| 552 | 1.5.1.5.7.2 | Completed--------RTS-FRM-AO-0047-16326_16327P-R2.1 *Adobe - Form* | milestone | 0d | 2013-09-20 A | 2013-09-20 A | 551FS+5d | 100% |  | 2013-08-28 | 2013-08-28 | 0d |  |  |  |  |  |  |  |  |  | 0 days |
| 553 | 1.5.1.5.7.3 | Completed--------BUILD-FRM-AO-0047-16326_16327P-R2.1 *Adobe - Form* |  | 22.5d | 2013-08-26 A | 2013-09-27 A |  | 100% |  | 2013-08-21 | 2013-08-27 | 0d |  |  | start no earlier than 2013-08-21 | Verma, Vinay | 105h | 105h | 105 | 105 |  | 9.38 days |
| 554 | 1.5.1.5.7.4 | HOLD--------UT-FRM-AO-0047-16326_16327P-R2.1 *Adobe - Form* |  | 13.12d | 2013-09-09 A | 2013-10-15 | 553, 106 | 86% | 1.88d | 2013-10-07 | 2013-10-08 | 0d | 786.09d |  | start no earlier than 2013-10-02 | Verma, Vinay | 30h | 15h | 30 | 15 |  | 3.75 days |
| 555 | 1.5.1.5.7.5 | Completed--------RB-FRM-AO-0047-16326_16327P-R2.1 *Adobe - Form* | milestone | 0d | 2013-10-17 A | 2013-10-17 A | 554FS+7d | 100% |  | 2013-10-17 | 2013-10-17 | 0d |  |  |  |  |  |  |  |  |  | 0 days |
| 556 | 1.5.1.5.8 | **FS-FRM-AO-0058-28668-R2.1 *Adobe - Form*** |  | 73.92d | 2013-08-26 A | 2013-12-05 |  | 35% | 48.04d | 2013-08-19 | 2013-11-11 | 0d | 13.58d |  |  |  | 202h | 93h | 202 | 93 | AP354 | 24 days |
| 557 | 1.5.1.5.8.1 | TS-FRM-AO-0058-28668-R2.1 *Adobe - Form* |  | 30.75d | 2013-08-26 A | 2013-10-30 |  | 53% | 14.5d | 2013-08-19 | 2013-08-26 | 0d | 748.93d | 0d | start no earlier than 2013-09-12 | Sreekumar, Sreejith [112.5%]; Sriram Sarath, Nandula (termine 22 dec) [42.2%] | 94h | 93h | 94 | 93 |  | 10.5 days |
| 558 | 1.5.1.5.8.2 | RTS-FRM-AO-0058-28668-R2.1 *Adobe - Form* | milestone | 0d | 2013-11-06 | 2013-11-06 | 557FS+5d |  |  | 2013-09-02 | 2013-09-02 | 0d | 769.84d |  |  |  |  |  |  |  |  | 0 days |
| 559 | 1.5.1.5.8.3 | BUILD-FRM-AO-0058-28668-R2.1 *Adobe - Form* |  | 9d | 2013-10-30 | 2013-11-18 | 557 |  |  | 2013-08-26 | 2013-09-05 | 0d | 748.93d | 0d | start no earlier than 2013-09-23 | Sriram Sarath, Nandula (termine 22 dec) [105.6%] | 76h |  | 76 |  |  | 9.5 days |
| 560 | 1.5.1.5.8.4 | UT-FRM-AO-0058-28668-R2.1 *Adobe - Form* |  | 6.67d | 2013-11-18 | 2013-11-26 | 559, 106 |  |  | 2013-10-23 | 2013-10-31 | 0d | 748.93d | 0d | start no earlier than 2013-10-03 | Sreekumar, Sreejith [60%] | 32h |  | 32 |  |  | 4 days |
| 561 | 1.5.1.5.8.5 | RB-FRM-AO-0058-28668-R2.1 *Adobe - Form* | milestone | 0d | 2013-12-05 | 2013-12-05 | 560FS+7d |  |  | 2013-11-11 | 2013-11-11 | 0d | 748.93d |  |  |  |  |  |  |  |  | 0 days |

| ID | WBS | Task | Type | Duration | Start | Finish | Predecessors | Complete | Remaining | Baseline start | Baseline finish | Baseline duration | Total slack | Free slack | Constraint | Resources | Work | Actual work | Cost | Actual cost | ? For PM | type of Deliverable | work_091113 |
| --- | --- | --- | --- | --- | --- | --- | --- | --- | --- | --- | --- | --- | --- | --- | --- | --- | --- | --- | --- | --- | --- | --- | --- |
| 562 | 1.5.1.5.9 | **On Hold--------FS-FRM-AO-0013-16329p-R2.1 *Adobe - Form*** |  | 59d | 2013-08-19 A | 2013-11-07 |  | 71% | 16.86d | 2013-08-19 | 2013-10-31 | 0d | 33.5d |  |  |  | 178h | 130h | 178 | 130 | hold | AP354 | 30 days |
| 563 | 1.5.1.5.9.1 | Completed--------TS-FRM-AO-0013-16329p-R2.1 *Adobe - Form* |  | 10d | 2013-08-19 A | 2013-09-27 A |  | 100% |  | 2013-08-19 | 2013-08-28 | 0d |  |  | start no earlier than 2013-08-19 | Rahane, Samir [75%] | 55h | 55h | 55 | 55 |  |  | 9 days |
| 564 | 1.5.1.5.9.2 | Completed--------RTS-FRM-AO-0013-16329p-R2.1 *Adobe - Form* | milestone | 0d | 2013-10-04 A | 2013-10-04 A | 563FS+5d | 100% |  | 2013-09-04 | 2013-09-04 | 0d |  |  |  |  |  |  |  |  |  |  | 0 days |
| 565 | 1.5.1.5.9.3 | Completed--------BUILD-FRM-AO-0013-16329p-R2.1 *Adobe - Form* |  | 20d | 2013-08-19 A | 2013-09-20 A | 563 | 100% |  | 2013-08-29 | 2013-09-17 | 0d |  |  | start no earlier than 2013-08-28 | Rahane, Samir | 75h | 75h | 75 | 75 |  |  | 15 days |
| 566 | 1.5.1.5.9.4 | UT-FRM-AO-0013-16329p-R2.1 *Adobe - Form* |  | 12d | 2013-10-11 | 2013-10-29 | 565, 106 |  |  | 2013-10-10 | 2013-10-22 | 0d | 33.5d | 0d | start no earlier than 2013-10-10 | Rahane, Samir [50%] | 48h |  | 48 |  |  |  | 6 days |
| 567 | 1.5.1.5.9.5 | RB-FRM-AO-0013-16329p-R2.1 *Adobe - Form* | milestone | 0d | 2013-11-07 | 2013-11-07 | 566FS+7d |  |  | 2013-10-31 | 2013-10-31 | 0d | 768.84d |  |  | Rahane, Samir |  |  |  |  |  |  | 0 days |
| 568 | 1.5.1.5.10 | **FS-FRM-AO-0002-13521-R2.1 *Adobe - Form*** |  | 52.12d | 2013-09-02 A | 2013-11-13 |  | 62% | 19.61d | 2013-10-31 | 2013-12-17 | 0d | 30.38d |  |  |  | 372h | 220h | 372 | 220 | hold | AP354 | 38.38 days |
| 569 | 1.5.1.5.10.1 | Completed--------TS-FRM-AO-0002-13521-R2.1 *Adobe - Form* |  | 28.12d | 2013-09-02 A | 2013-10-04 A |  | 100% |  | 2013-10-31 | 2013-11-12 | 0d |  |  | start no earlier than 2013-09-04 | Sandra, Prasad | 157h | 157h | 157 | 157 |  |  | 11.5 days |
| 570 | 1.5.1.5.10.2 | Completed--------RTS-FRM-AO-0002-13521-R2.1 *Adobe - Form* | milestone | 0d | 2013-10-11 A | 2013-10-11 A | 569FS+5d | 100% |  | 2013-11-19 | 2013-11-19 | 0d |  |  |  |  |  |  |  |  |  |  | 0 days |
| 571 | 1.5.1.5.10.3 | BUILD-FRM-AO-0002-13521-R2.1 *Adobe - Form* |  | 16.88d | 2013-10-07 A | 2013-10-25 | 569 | 33% | 11.25d | 2013-11-12 | 2013-11-28 | 0d | 30.38d | 0d |  | Sandra, Prasad; Sriram Sarath, Nandula (termine 22 dec) [40%] | 153h | 63h | 153 | 63 |  |  | 19.13 days |
| 572 | 1.5.1.5.10.4 | UT-FRM-AO-0002-13521-R2.1 *Adobe - Form* |  | 9.12d | 2013-10-28 | 2013-11-07 | 571, 106 |  |  | 2013-11-28 | 2013-12-11 | 0d | -2d | 0d |  | Sandra, Prasad [85%] | 62h |  | 62 |  |  |  | 7.75 days |
| 573 | 1.5.1.5.10.5 | RB-FRM-AO-0002-13521-R2.1 *Adobe - Form* | milestone | 0d | 2013-11-13 | 2013-11-13 | 572FS+4d |  |  | 2013-12-17 | 2013-12-17 | 0d | -2d | 0d |  |  |  |  |  |  |  |  | 0 days |
| 574 | 1.5.1.5.11 | **On Hold--------FS-FRM-AO-0011-16328sc-R2.1 *Adobe - Form*** |  | 51.56d | 2013-09-09 A | 2013-11-19 |  | 43% | 29.14d | 2013-09-18 | 2013-10-09 | 0d | 25.94d |  |  |  | 135h | 78h | 135 | 78 | hold | AP354 | 9.88 days |
| 575 | 1.5.1.5.11.1 | TS-FRM-AO-0061-16328sc-R2.1 *Adobe - Form* |  | 26.88d | 2013-09-09 A | 2013-10-24 |  | 63% | 10d | 2013-09-18 | 2013-09-20 | 0d | 760.03d | 0d | start no earlier than 2013-09-24 | Verma, Vinay [2.9%]; Sandra, Prasad [53.3%]; Sriram Sarath, Nandula (termine 22 dec) | 80h | 78h | 80 | 78 |  |  | 3 days |
| 576 | 1.5.1.5.11.2 | RTS-FRM-AO-0061-16328sc-R2.1 *Adobe - Form* | milestone | 0d | 2013-10-31 | 2013-10-31 | 575FS+5d |  |  | 2013-09-27 | 2013-09-27 | 0d | 773.84d |  |  |  |  |  |  |  |  |  | 0 days |
| 577 | 1.5.1.5.11.3 | BUILD-FRM-AO-0061-16328sc-R2.1 *Adobe - Form* |  | 10.06d | 2013-09-16 A | 2013-11-06 | 575 |  | 10.06d | 2013-09-20 | 2013-09-26 | 0d | 25.94d | 0d | start no earlier than 2013-09-23 | Sriram Sarath, Nandula (termine 22 dec) | 40h |  | 40 |  |  |  | 5 days |
| 578 | 1.5.1.5.11.4 | UT-FRM-AO-0061-16328sc-R2.1 *Adobe - Form* |  | 1.88d | 2013-11-06 | 2013-11-08 | 577 |  |  | 2013-09-26 | 2013-09-30 | 0d | 761.16d | 0d | start no earlier than 2013-09-27 | Verma, Vinay | 15h |  | 15 |  |  |  | 1.88 days |
| 579 | 1.5.1.5.11.5 | RB-FRM-AO-0061-16328sc-R2.1 *Adobe - Form* | milestone | 0d | 2013-11-19 | 2013-11-19 | 578FS+7d |  |  | 2013-10-09 | 2013-10-09 | 0d | 761.28d |  |  |  |  |  |  |  |  |  | 0 days |
| 580 | 1.5.1.5.12 | **On Hold--------FS-FRM-AO-0010-16328p-R2.1 *Adobe - Form*** |  | 58d | 2013-08-19 A | 2013-11-07 |  | 82% | 10.59d | 2013-08-19 | 2013-11-07 | 0d | 34.5d |  |  |  | 184h | 136h | 184 | 136 |  | AP354 | 30 days |
| 581 | 1.5.1.5.12.1 | Completed--------TS-FRM-AO-0010-16328p-R2.1 *Adobe - Form* |  | 10.62d | 2013-08-19 A | 2013-09-27 A |  | 100% |  | 2013-08-19 | 2013-08-28 | 0d |  |  | start no earlier than 2013-08-19 | Verma, Vinay [6.7%]; Rahane, Samir [12.5%] | 8h | 8h | 8 | 8 |  |  | 9 days |
| 582 | 1.5.1.5.12.2 | Completed--------RTS-FRM-AO-0010-16328p-R2.1 *Adobe - Form* | milestone | 0d | 2013-10-04 A | 2013-10-04 A | 581FS+5d | 100% |  | 2013-09-04 | 2013-09-04 | 0d |  |  |  |  |  |  |  |  |  |  | 0 days |
| 583 | 1.5.1.5.12.3 | Completed--------BUILD-FRM-AO-0010-16328p-R2.1 *Adobe - Form* |  | 16.25d | 2013-08-19 A | 2013-09-20 A | 581 | 100% |  | 2013-08-29 | 2013-09-17 | 0d |  |  | start no earlier than 2013-08-29 | Verma, Vinay; Rahane, Samir [85%]; Kacham, Santosh | 128h | 128h | 128 | 128 |  |  | 15 days |
| 584 | 1.5.1.5.12.4 | UT-FRM-AO-0010-16328p-R2.1 *Adobe - Form* |  | 6d | 2013-09-23 | 2013-10-21 | 583 |  |  | 2013-09-17 | 2013-09-24 | 0d | 39.5d | 5d | start no earlier than 2013-09-17 | Rahane, Samir | 48h |  | 48 |  |  |  | 6 days |
| 585 | 1.5.1.5.12.5 | RB-FRM-AO-0010-16328p-R2.1 *Adobe - Form* | milestone | 0d | 2013-11-07 | 2013-11-07 | 584FS+7d |  |  | 2013-11-07 | 2013-11-07 | 0d | 769.84d |  | start no earlier than 2013-11-07 |  |  |  |  |  |  |  | 0 days |

| ID | WBS | Task | Type | Duration | Start | Finish | Predecessors | Complete | Remaining | Baseline start | Baseline finish | Baseline duration | Total slack | Free slack | Constraint | Resources | Work | Actual work | Cost | Actual cost | type of Deliverable | work_091113 | ? For PM |
| --- | --- | --- | --- | --- | --- | --- | --- | --- | --- | --- | --- | --- | --- | --- | --- | --- | --- | --- | --- | --- | --- | --- | --- |
| 586 | 1.5.1.5.13 | **FS-ENH-AO-0010-28897-28899-R2.1 *Adobe - Form*** |  | 81.51d | 2013-08-19 A | 2013-12-10 |  | 43% | 46.36d | 2013-08-15 | 2013-11-11 | 0d | 10.99d |  |  |  | 744h | 209h | 744 | 209 | AP354 | 112.5 days |  |
| 587 | 1.5.1.5.13.1 | Completed--------TS-ENH-AO-0010-28897-28899-R2.2-CR *Adobe - Form* |  | 5.62d | 2013-09-30 A | 2013-10-09 A |  | 100% |  | 2013-10-14 | 2013-10-23 | 0d |  |  | start no earlier than 2013-11-29 | Kumar Sahoo, Saroj [60%]; Vallanda, Rohan Poovaiah [69.2%] | 27h | 27h | 27 | 27 |  | 4.5 days |  |
| 588 | 1.5.1.5.13.2 | Completed--------BUILD-ENH-AO-0010-28897-28899-R2.3-CR *Adobe - Form* |  | 5.62d | 2013-10-07 A | 2013-11-18 A | 587 | 100% |  | 2013-10-28 | 2013-11-06 | 0d |  |  | start no earlier than 2013-11-18 | Sharma, Jayanti; Vallanda, Rohan Poovaiah [40%] | 18h | 18h | 18 | 18 |  | 7.5 days |  |
| 589 | 1.5.1.5.13.3 | UT-ENH-AO-0010-28897-28899-R2.4-CR *Adobe - Form* |  | 8.5d | 2013-09-30 A | 2013-11-20 | 588 | 66% | 2.88d | 2013-11-06 | 2013-11-11 | 0d | 24.88d |  | start no earlier than 2013-12-06 | Adobe_junior_3 ACN_OFF1 | 24h | 1h | 24 | 1 |  | 3 days |  |
| 590 | 1.5.1.5.13.4 | BUILD-ENH-AO-0010-28897-28899-R2.3-CR2 *Adobe - Form* |  | 46.64d | 2013-09-30 | 2013-12-10 |  |  |  | 2013-08-15 | 2013-09-02 | 0d | 10.99d |  | start no earlier than 2013-09-30 | Halali, Sreekanth [33.3%]; Adobe_junior_3 ACN_OFF1 [136.4%]; ***SERA OUT si coupure demandée par Gina-------CRM_INTERMEDIATE_6 ACN_OFF1 [24.1%] | 440h |  | 440 |  |  | 55 days | Build complété - Enlever hres quand fs terminé au complet |
| 591 | 1.5.1.5.13.5 | Completed--------TS-ENH-AO-0010-28897-28899-R2.2 *Adobe - Form* |  | 16.25d | 2013-08-19 A | 2013-10-04 A |  | 100% |  | 2013-08-19 | 2013-09-05 | 0d |  |  | start no earlier than 2013-08-19 | Rahane, Samir [2.5%]; Kumar Sahoo, Saroj | 73h | 73h | 73 | 73 |  | 13.5 days |  |
| 592 | 1.5.1.5.13.6 | Completed--------RTS-ENH-AO-0010-28897-28899-R2.2 *Adobe - Form* | milestone | 0d | 2013-10-11 A | 2013-10-11 A | 591FS+5d | 100% |  | 2013-09-12 | 2013-09-12 | 0d |  |  |  |  |  |  |  |  |  | 0 days |  |
| 593 | 1.5.1.5.13.7 | Completed--------BUILD-ENH-AO-0010-28897-28899-R2.3 *Adobe - Form* |  | 11.25d | 2013-09-09 A | 2013-09-20 A | 591 | 100% |  | 2013-09-05 | 2013-10-07 | 0d |  |  |  | Kumar Sahoo, Saroj | 90h | 90h | 90 | 90 |  | 20 days |  |
| 594 | 1.5.1.5.13.8 | UT-ENH-AO-0010-28897-28899-R2.4 *Adobe - Form* |  | 9d | 2013-10-02 | 2013-10-23 | 593, 103, 106 |  |  | 2013-10-08 | 2013-10-31 | 0d | 37.5d | 0d |  | Kumar Sahoo, Saroj | 72h |  | 72 |  |  | 9 days |  |
| 595 | 1.5.1.5.13.9 | RB-ENH-AO-0010-28897-28899-R2.2 *Adobe - Form* | milestone | 0d | 2013-11-01 | 2013-11-01 | 594FS+7d |  |  | 2013-11-11 | 2013-11-11 | 0d | 772.84d |  |  |  |  |  |  |  |  | 0 days |  |
| 596 | 1.5.1.5.14 | **On Hold--------FS-FRM-AO-0009-16329sc-R2.1 *Adobe - Form*** |  | 28.25d | 2013-09-23 A | 2013-10-31 |  |  | 28.25d | 2013-08-21 | 2013-09-12 | 0d | 39.25d |  |  |  | 56h |  | 56 |  | AP354 | 10 days | Start mais il manque la feuille de temps |
| 597 | 1.5.1.5.14.1 | Completed--------TS-FRM-AO-0009-16329sc-R2.1 *Adobe - Form* | milestone | 0d | 2013-09-23 A | 2013-09-27 A |  | 100% |  | 2013-08-21 | 2013-08-23 | 0d |  |  | start no earlier than 2013-10-04 | Sharma, Jayanti [2.2%] |  |  |  |  |  | 3 days |  |
| 598 | 1.5.1.5.14.2 | RTS-FRM-AO-0009-16329sc-R2.1 *Adobe - Form* | milestone | 0d | 2013-10-04 | 2013-10-04 | 597FS+5d |  |  | 2013-08-30 | 2013-08-30 | 0d | 792.84d |  |  |  |  |  |  |  |  | 0 days |  |
| 599 | 1.5.1.5.14.3 | BUILD-FRM-AO-0009-16329sc-R2.1 *Adobe - Form* |  | 5d | 2013-09-30 | 2013-10-18 | 597 |  |  | 2013-08-23 | 2013-08-30 | 0d | 39.25d | 0d | start no earlier than 2013-08-21 | Sharma, Jayanti | 40h |  | 40 |  |  | 5 days |  |
| 600 | 1.5.1.5.14.4 | UT-FRM-AO-0009-16329sc-R2.1 *Adobe - Form* |  | 2d | 2013-10-18 | 2013-10-22 | 599 |  |  | 2013-08-30 | 2013-09-03 | 0d | 774.5d | 0d | start no earlier than 2013-08-29 | Sharma, Jayanti | 16h |  | 16 |  |  | 2 days |  |
| 601 | 1.5.1.5.14.5 | RB-FRM-AO-0009-16329sc-R2.1 *Adobe - Form* | milestone | 0d | 2013-10-31 | 2013-10-31 | 600FS+7d |  |  | 2013-09-12 | 2013-09-12 | 0d | 774.59d |  |  |  |  |  |  |  |  | 0 days |  |
| 602 | 1.5.1.5.15 | **FS-FRM-AO-0015-16326_16327SC-R2.1 *Adobe - Form*** |  | 15.75d | 2013-10-29 | 2013-11-20 |  |  |  | 2013-09-04 | 2013-09-26 | 0d | 24.75d |  |  |  | 79h |  | 79 |  | AP354 | 9.88 days |  |
| 603 | 1.5.1.5.15.1 | TS-FRM-AO-0015-16326_16327SC-R2.1 *Adobe - Form* |  | 3d | 2013-10-29 | 2013-11-01 |  |  |  | 2013-09-04 | 2013-09-06 | 0d | 169.1d | 0d | start no earlier than 2013-10-29 | Sharma, Jayanti | 24h |  | 24 |  |  | 3 days |  |
| 604 | 1.5.1.5.15.2 | RTS-FRM-AO-0015-16326_16327SC-R2.1 *Adobe - Form* | milestone | 0d | 2013-11-08 | 2013-11-08 | 603FS+5d |  |  | 2013-09-13 | 2013-09-13 | 0d | 177.35d |  |  |  |  |  |  |  |  | 0 days |  |
| 605 | 1.5.1.5.15.3 | BUILD-FRM-AO-0015-16326_16327SC-R2.1 *Adobe - Form* |  | 5d | 2013-11-01 | 2013-11-07 | 603 |  |  | 2013-09-06 | 2013-09-13 | 0d | 169.23d | 0d | start no earlier than 2013-09-13 | Sharma, Jayanti | 40h |  | 40 |  |  | 5 days |  |
| 606 | 1.5.1.5.15.4 | UT-FRM-AO-0015-16326_16327SC-R2.1 *Adobe - Form* |  | 1.88d | 2013-11-08 | 2013-11-11 | 605 |  |  | 2013-09-13 | 2013-09-17 | 0d | 24.75d | 0d | start no earlier than 2013-09-13 | Sharma, Jayanti | 15h |  | 15 |  |  | 1.88 days |  |
| 607 | 1.5.1.5.15.5 | RB-FRM-AO-0015-16326_16327SC-R2.1 *Adobe - Form* | milestone | 0d | 2013-11-20 | 2013-11-20 | 606FS+7d |  |  | 2013-09-26 | 2013-09-26 | 0d | 169.23d |  |  |  |  |  |  |  |  | 0 days |  |
| 608 | 1.5.1.5.16 | **FS-FRM-AO-0052-SPECIFIC_MANDATE-R2.1 *Adobe - Form*** |  | 52d | 2013-10-10 | 2013-12-20 |  |  |  | 2013-09-02 | 2013-12-12 | 0d | 2.5d |  |  |  | 799h |  | 799 |  | AP354 | 99.88 days |  |
| 609 | 1.5.1.5.16.1 | TS-FRM-AO-0052-SPECIFIC_MANDATE-R2.1-FRM2 *Adobe - Form* |  | 10d | 2013-10-10 | 2013-10-24 |  |  |  | 2013-09-02 | 2013-09-13 | 0d | 12.38d | 0d | start no earlier than 2013-10-10 | Adobe_junior_3 ACN_OFF1 | 80h |  | 80 |  |  | 10 days |  |
| 610 | 1.5.1.5.16.2 | BUILD-FRM-AO-0052-SPECIFIC_MANDATE-R2.1-FRM2 *Adobe - Form* |  | 25d | 2013-10-24 | 2013-11-26 | 609 |  |  | 2013-09-16 | 2013-10-18 | 0d | 747.72d | 0d | start no earlier than 2013-09-30 | Adobe_junior_3 ACN_OFF1 | 200h |  | 200 |  |  | 25 days |  |
| 611 | 1.5.1.5.16.3 | UT-FRM-AO-0052-SPECIFIC_MANDATE-R2.1-FRM2 *Adobe - Form* |  | 10d | 2013-11-26 | 2013-12-06 | 610 |  |  | 2013-10-21 | 2013-11-01 | 0d | 12.5d |  | start no earlier than 2013-08-15 | Adobe_junior_3 ACN_OFF1 | 80h |  | 80 |  |  | 10 days |  |
| 612 | 1.5.1.5.16.4 | TS-FRM-AO-0052-SPECIFIC_MANDATE-R2.1-CR *Adobe - Form* |  | 3d | 2013-11-14 | 2013-11-19 |  |  |  | 2013-11-18 | 2013-11-20 | 0d | 755.22d | 1.02d | start no earlier than 2013-11-14 | ***SERA OUT si coupure demandée par Gina-------CRM_INTERMEDIATE_6 ACN_OFF1 | 24h |  | 24 |  |  | 3 days |  |
| 613 | 1.5.1.5.16.5 | BUILD-FRM-AO-0052-SPECIFIC_MANDATE-R2.1-CR *Adobe - Form* |  | 4.75d | 2013-11-20 | 2013-11-26 | 612 |  |  | 2013-11-20 | 2013-11-26 | 0d | 754.19d | 0.08d | start no earlier than 2013-11-20 | ***SERA OUT si coupure demandée par Gina-------CRM_INTERMEDIATE_6 ACN_OFF1 [105.3%] | 40h |  | 40 |  |  | 5 days |  |
| 614 | 1.5.1.5.16.6 | UT-FRM-AO-0052-SPECIFIC_MANDATE-R2.1-CR *Adobe - Form* |  | 1.88d | 2013-11-26 | 2013-11-28 | 613 |  |  | 2013-11-26 | 2013-11-28 | 0d | 754.11d |  | start no earlier than 2013-11-26 | ***SERA OUT si coupure demandée par Gina-------CRM_INTERMEDIATE_6 ACN_OFF1 | 15h |  | 15 |  |  | 1.88 days |  |
| 615 | 1.5.1.5.16.7 | TS-FRM-AO-0052-SPECIFIC_MANDATE-R2.1 *Adobe - Form* |  | 5d | 2013-10-29 | 2013-11-04 | 106 |  |  | 2013-10-02 | 2013-10-21 | 0d | 737.84d | 0d | start no earlier than 2013-10-29 | Rahane, Samir; Adobe_junior_3 ACN_OFF1; TINA - pranjal gupta (ACN_OFF1) | 108h |  | 108 |  |  | 13.5 days |  |
| 616 | 1.5.1.5.16.8 | RTS-FRM-AO-0052-SPECIFIC_MANDATE-R2.1 *Adobe - Form* | milestone | 0d | 2013-11-11 | 2013-11-11 | 615FS+5d |  |  | 2013-10-28 | 2013-10-28 | 0d | 767.34d |  |  |  |  |  |  |  |  | 0 days |  |
| 617 | 1.5.1.5.16.9 | BUILD-FRM-AO-0052-SPECIFIC_MANDATE-R2.1 *Adobe - Form* |  | 10d | 2013-11-04 | 2013-11-15 | 615 |  |  | 2013-10-21 | 2013-11-20 | 0d | 2.5d | 0d |  | Rahane, Samir; Adobe_junior_3 ACN_OFF1 [50%]; TINA - pranjal gupta (ACN_OFF1) | 180h |  | 180 |  |  | 22.5 days |  |
| 618 | 1.5.1.5.16.10 | UT-FRM-AO-0052-SPECIFIC_MANDATE-R2.1 *Adobe - Form* |  | 20.75d | 2013-11-15 | 2013-12-11 | 617, 103, 106 |  |  | 2013-11-21 | 2013-12-03 | 0d | 737.84d | 0d | start no earlier than 2013-11-15 | Rahane, Samir; Adobe_junior_3 ACN_OFF1 [14.5%]; TINA - pranjal gupta (ACN_OFF1) [14.5%] | 72h |  | 72 |  |  | 9 days |  |
| 619 | 1.5.1.5.16.11 | RB-FRM-AO-0052-SPECIFIC_MANDATE-R2.1 *Adobe - Form* | milestone | 0d | 2013-12-20 | 2013-12-20 | 618FS+7d |  |  | 2013-12-12 | 2013-12-12 | 0d | 737.84d |  |  |  |  |  |  |  |  | 0 days |  |

| ID | WBS | Task | Type | Duration | Start | Finish | Predecessors | Total slack | Free slack | Constraint | Resources | Work | Cost | type of Deliverable | work_091113 |
| --- | --- | --- | --- | --- | --- | --- | --- | --- | --- | --- | --- | --- | --- | --- | --- |
| 620 | 1.5.1.5.17 | **FS-FRM-AO-0070-10481-R2.1 *Adobe - Form*** |  | 20.38d | 2013-11-12 | 2013-12-10 |  | 11.12d |  |  |  | 120h | 120 | AP354 | 15 days |
| 621 | 1.5.1.5.17.1 | TS-FRM-AO-0070-10481-R2.1 *Adobe - Form* |  | 4.5d | 2013-11-12 | 2013-11-15 |  | 155.6d | 0d | start no earlier than 2013-11-12 | Sharma, Jayanti | 36h | 36 |  | 4.5 days |
| 622 | 1.5.1.5.17.2 | RTS-FRM-AO-0070-10481-R2.1 *Adobe - Form* | milestone | 0d | 2013-11-22 | 2013-11-22 | 621FS+5d | 166.98d |  |  |  |  |  |  | 0 days |
| 623 | 1.5.1.5.17.3 | BUILD-FRM-AO-0070-10481-R2.1 *Adobe - Form* |  | 7.5d | 2013-11-18 | 2013-11-26 | 621 | 155.48d | 0d | start no earlier than 2013-11-18 | Sharma, Jayanti | 60h | 60 |  | 7.5 days |
| 624 | 1.5.1.5.17.4 | UT-FRM-AO-0070-10481-R2.1 *Adobe - Form* |  | 3d | 2013-11-26 | 2013-11-29 | 623 | 155.48d | 0d | start no earlier than 2013-10-22 | Sharma, Jayanti | 24h | 24 |  | 3 days |
| 625 | 1.5.1.5.17.5 | RB-FRM-AO-0070-10481-R2.1 *Adobe - Form* | milestone | 0d | 2013-12-10 | 2013-12-10 | 624FS+7d | 155.6d |  |  |  |  |  |  | 0 days |
| 626 | 1.5.1.5.18 | **FS-FRM-AO-0016-SIMULATION-R2.1 *Adobe - Form*** |  | 12.38d? | 2013-10-25 | 2013-11-13 |  | 30d |  |  |  | 28.5h | 28.5 | AP354 | 3.56 days |
| 627 | 1.5.1.5.18.1 | TS-FRM-AO-0016-SIMULATION-R2.1 *Adobe - Form* |  | 2.25d? | 2013-10-25 | 2013-10-29 |  | 174.48d | 0d | start no earlier than 2013-10-25 | TINA - pranjal gupta (ACN_OFF1) [50%] | 9h | 9 |  | 1.13 days |
| 628 | 1.5.1.5.18.2 | RTS-FRM-AO-0016-SIMULATION-R2.1 *Adobe - Form* |  | 1d? | 2013-11-06 | 2013-11-06 | 627FS+5d | 178.98d |  |  |  |  |  |  | 0 days |
| 629 | 1.5.1.5.18.3 | BUILD-FRM-AO-0016-SIMULATION-R2.1 *Adobe - Form* |  | 1.75d? | 2013-10-29 | 2013-10-31 | 627 | 174.48d | 0d |  | TINA - pranjal gupta (ACN_OFF1) | 14h | 14 |  | 1.75 days |
| 630 | 1.5.1.5.18.4 | UT-FRM-AO-0016-SIMULATION-R2.1 *Adobe - Form* |  | 1d? | 2013-10-31 | 2013-11-01 | 629 | 30.12d | 0d |  | TINA - pranjal gupta (ACN_OFF1) [68.8%] | 5.5h | 5.5 |  | 0.69 days |
| 631 | 1.5.1.5.18.5 | RB-FRM-AO-0016-SIMULATION-R2.1 *Adobe - Form* |  | 1d? | 2013-11-12 | 2013-11-13 | 630FS+7d | 174.6d |  |  |  |  |  |  | 0 days |
| 632 | 1.5.1.5.19 | **FS-FRM-AO-0006-16540_Assum-R2.1 *Adobe - Form*** |  | 13d? | 2013-11-21 | 2013-12-09 |  | 11.5d |  |  |  | 44h | 44 | AP354 |  |
| 633 | 1.5.1.5.19.1 | TS-FRM-AO-0006-16540_Assum-R2.1 *Adobe - Form* |  | 1.5d? | 2013-11-21 | 2013-11-22 |  | 155.98d | 0d | start no earlier than 2013-11-21 | Thomas, Jolsna Joy | 12h | 12 |  |  |
| 634 | 1.5.1.5.19.2 | RTS-FRM-AO-0006-16540_Assum-R2.1 *Adobe - Form* |  | 1d? | 2013-11-29 | 2013-12-02 | 633FS+5d | 161.6d |  |  |  |  |  |  |  |
| 635 | 1.5.1.5.19.3 | BUILD-FRM-AO-0006-16540_Assum-R2.1 *Adobe - Form* |  | 3d? | 2013-11-22 | 2013-11-26 | 633 | 155.98d | 0d |  | Thomas, Jolsna Joy | 24h | 24 |  |  |
| 636 | 1.5.1.5.19.4 | UT-FRM-AO-0006-16540_Assum-R2.1 *Adobe - Form* |  | 1d? | 2013-11-27 | 2013-11-27 | 635 | 11.5d | 0d |  | Thomas, Jolsna Joy | 8h | 8 |  |  |
| 637 | 1.5.1.5.19.5 | RB-FRM-AO-0006-16540_Assum-R2.1 *Adobe - Form* |  | 1d? | 2013-12-09 | 2013-12-09 | 636FS+7d | 155.98d |  |  |  |  |  |  |  |
| 638 | 1.5.1.5.20 | **FS-FRM-AO-0023-17860-R2.1 *Adobe - Form*** |  | 16.38d? | 2013-11-27 | 2013-12-20 |  | 3d |  |  |  | 76h | 76 | AP354 |  |
| 639 | 1.5.1.5.20.1 | TS-FRM-AO-0023-17860-R2.1 *Adobe - Form* |  | 3d? | 2013-11-27 | 2013-12-02 |  | 147.48d | 0d | start no earlier than 2013-11-27 | Thomas, Jolsna Joy | 24h | 24 |  |  |
| 640 | 1.5.1.5.20.2 | RTS-FRM-AO-0023-17860-R2.1 *Adobe - Form* |  | 1d? | 2013-12-09 | 2013-12-10 | 639FS+5d | 155.35d |  |  |  |  |  |  |  |
| 641 | 1.5.1.5.20.3 | BUILD-FRM-AO-0023-17860-R2.1 *Adobe - Form* |  | 9d? | 2013-12-02 | 2013-12-12 | 639 | 147.48d | 0d |  | Thomas, Jolsna Joy [50%] | 36h | 36 |  |  |
| 642 | 1.5.1.5.20.4 | UT-FRM-AO-0023-17860-R2.1 *Adobe - Form* |  | 2d? | 2013-12-12 | 2013-12-16 | 641 | 147.48d | 0d |  | Thomas, Jolsna Joy | 16h | 16 |  |  |
| 643 | 1.5.1.5.20.5 | RB-FRM-AO-0023-17860-R2.1 *Adobe - Form* |  | 1d? | 2013-12-19 | 2013-12-20 | 642FS+3d | 147.6d |  |  |  |  |  |  |  |

| ID | WBS | Task | Duration | Start | Finish | Predecessors | Complete | Remaining | Total slack | Free slack | Constraint | Resources | Work | Actual work | Cost | Actual cost | type of Deliverable |
| --- | --- | --- | --- | --- | --- | --- | --- | --- | --- | --- | --- | --- | --- | --- | --- | --- | --- |
| 644 | 1.5.1.5.21 | **FS-FRM-AO-0034-14967-R2.1 *Adobe - Form*** | 27.88d? | 2013-09-23 A | 2013-10-30 |  | 73% | 7.49d? | 39.62d |  |  |  | 102h | 63h | 102 | 63 | AP354 |
| 645 | 1.5.1.5.21.1 | Completed--------TS-FRM-AO-0034-14967-R2.1 *Adobe - Form* | 5d? | 2013-09-23 A | 2013-10-04 A |  | 100% |  |  |  | start no earlier than 2013-09-23 | Cella, Maria [75%] | 30h | 30h | 30 | 30 |  |
| 646 | 1.5.1.5.21.2 | Completed--------RTS-FRM-AO-0034-14967-R2.1 *Adobe - Form* | 1d? | 2013-10-14 A | 2013-10-14 A | 645FS+5d | 100% |  |  |  |  |  |  |  |  |  |  |
| 647 | 1.5.1.5.21.3 | BUILD-FRM-AO-0034-14967-R2.1 *Adobe - Form* | 12.38d? | 2013-09-30 A | 2013-10-16 | 645 | 81% | 2.38d? | 39.62d | 0d |  | Cella, Maria | 52h | 33h | 52 | 33 |  |
| 648 | 1.5.1.5.21.4 | UT-FRM-AO-0034-14967-R2.1 *Adobe - Form* | 2.5d? | 2013-10-16 | 2013-10-18 | 647 |  |  | 39.62d | 0d | start no earlier than 2013-10-08 | Cella, Maria | 20h |  | 20 |  |  |
| 649 | 1.5.1.5.21.5 | RB-FRM-AO-0034-14967-R2.1 *Adobe - Form* | 1d? | 2013-10-29 | 2013-10-30 | 648FS+7d |  |  | 39.62d |  |  |  |  |  |  |  |  |
| 650 | 1.5.1.5.22 | **FS-FRM-AO-0038-28648V-R2.1 *Adobe - Form*** | 17d? | 2013-11-26 | 2013-12-19 |  |  |  | 16d |  |  |  | 76h |  | 76 |  | AP354 |
| 651 | 1.5.1.5.22.1 | TS-FRM-AO-0038-28648V-R2.1 *Adobe - Form* | 3d? | 2013-11-26 | 2013-11-29 |  |  |  | 148.48d | 0d | start no earlier than 2013-11-26 | Cella, Maria | 24h |  | 24 |  |  |
| 652 | 1.5.1.5.22.2 | RTS-FRM-AO-0038-28648V-R2.1 *Adobe - Form* | 1d? | 2013-12-06 | 2013-12-09 | 651FS+5d |  |  | 156.48d |  |  |  |  |  |  |  |  |
| 653 | 1.5.1.5.22.3 | BUILD-FRM-AO-0038-28648V-R2.1 *Adobe - Form* | 4d | 2013-11-29 | 2013-12-05 | 651 |  |  | 148.48d | 0d | start no earlier than 2013-10-14 | Cella, Maria [112.5%] | 36h |  | 36 |  |  |
| 654 | 1.5.1.5.22.4 | UT-FRM-AO-0038-28648V-R2.1 *Adobe - Form* | 2d | 2013-12-05 | 2013-12-09 | 653 |  |  | 148.48d | 0d | start no earlier than 2013-10-23 | Cella, Maria | 16h |  | 16 |  |  |
| 655 | 1.5.1.5.22.5 | RB-FRM-AO-0038-28648V-R2.1 *Adobe - Form* | 1d? | 2013-12-18 | 2013-12-19 | 654FS+7d |  |  | 148.48d |  |  |  |  |  |  |  |  |
| 656 | 1.5.1.5.23 | **FS-FRM-AO-0048-28661-R2.1 *Adobe - Form*** | 17.5d? | 2013-11-13 | 2013-12-06 |  |  |  | 13d |  |  |  | 76h |  | 76 |  | AP354 |
| 657 | 1.5.1.5.23.1 | TS-FRM-AO-0048-28661-R2.1 *Adobe - Form* | 3d? | 2013-11-13 | 2013-11-15 |  |  |  | 157.48d | 0d | start no earlier than 2013-11-13 | Cella, Maria | 24h |  | 24 |  |  |
| 658 | 1.5.1.5.23.2 | RTS-FRM-AO-0048-28661-R2.1 *Adobe - Form* | 1d? | 2013-11-25 | 2013-11-25 | 657FS+5d |  |  | 165.98d |  |  |  |  |  |  |  |  |
| 659 | 1.5.1.5.23.3 | BUILD-FRM-AO-0048-28661-R2.1 *Adobe - Form* | 4.5d? | 2013-11-18 | 2013-11-22 | 657 |  |  | 157.48d | 0d | start no earlier than 2013-10-14 | Cella, Maria | 36h |  | 36 |  |  |
| 660 | 1.5.1.5.23.4 | UT-FRM-AO-0048-28661-R2.1 *Adobe - Form* | 2d? | 2013-11-22 | 2013-11-26 | 659 |  |  | 157.48d | 0d | start no earlier than 2013-10-23 | Cella, Maria | 16h |  | 16 |  |  |
| 661 | 1.5.1.5.23.5 | RB-FRM-AO-0048-28661-R2.1 *Adobe - Form* | 1d? | 2013-12-05 | 2013-12-06 | 660FS+7d |  |  | 157.48d |  |  |  |  |  |  |  |  |
| 662 | 1.5.1.5.24 | **FS-FRM-AO-0049-28648F-R2.1 *Adobe - Form*** | 19.67d? | 2013-10-28 | 2013-11-22 |  |  |  | 22.83d |  |  |  | 76h |  | 76 |  | AP354 |
| 663 | 1.5.1.5.24.1 | TS-FRM-AO-0049-28648F-R2.1 *Adobe - Form* | 3d? | 2013-10-28 | 2013-10-30 |  |  |  | 167.31d | 0d | start no earlier than 2013-10-28 | Cella, Maria | 24h |  | 24 |  |  |
| 664 | 1.5.1.5.24.2 | RTS-FRM-AO-0049-28648F-R2.1 *Adobe - Form* | 1d? | 2013-11-07 | 2013-11-07 | 663FS+5d |  |  | 177.98d |  |  |  |  |  |  |  |  |
| 665 | 1.5.1.5.24.3 | BUILD-FRM-AO-0049-28648F-R2.1 *Adobe - Form* | 6d? | 2013-10-31 | 2013-11-07 | 663 |  |  | 167.31d | 0d | start no earlier than 2013-10-14 | Cella, Maria [75%] | 36h |  | 36 |  |  |
| 666 | 1.5.1.5.24.4 | UT-FRM-AO-0049-28648F-R2.1 *Adobe - Form* | 2.67d? | 2013-11-08 | 2013-11-12 | 665 |  |  | 167.31d | 0d | start no earlier than 2013-10-23 | Cella, Maria [75%] | 16h |  | 16 |  |  |
| 667 | 1.5.1.5.24.5 | RB-FRM-AO-0049-28648F-R2.1 *Adobe - Form* | 1d? | 2013-11-21 | 2013-11-22 | 666FS+7d |  |  | 167.31d |  |  |  |  |  |  |  |  |

| ID | WBS | Task | Type | Duration | Start | Finish | Predecessors | Complete | Remaining | Baseline start | Baseline finish | Baseline duration | Total slack | Free slack | Constraint | Resources | Work | Actual work | Cost | Actual cost | work_091113 | ? For PM | type of Deliverable |
| --- | --- | --- | --- | --- | --- | --- | --- | --- | --- | --- | --- | --- | --- | --- | --- | --- | --- | --- | --- | --- | --- | --- | --- |
| 668 | 1.5.1.5.25 | **Adobe - Form - Extended Scope - BUD 1 *Adobe - Form*** |  | 92.5d? | 2013-08-19 A | 2013-12-25 |  | 21% | 72.66d? | 2013-09-05 | 2013-12-19 | 0d | 12d |  |  |  | 1006h | 248h | 1,006 | 248 | 120.88 days |  |  |
| 669 | 1.5.1.5.25.1 | **FS-FRM-AO-0105-CAMP_MASTERCARD *Adobe - Form*** |  | 82.5d? | 2013-09-02 A | 2013-12-25 |  | 13% | 71.88d? | 2013-10-28 | 2013-12-19 | 0d | 12d |  |  |  | 585h | 187h | 585 | 187 | 71.63 days | hold | AP354 |
| 670 | 1.5.1.5.25.1.1 | HOLD--------TS-FRM-AO-0105-CAMP_MASTERCARD_2 *Adobe - Form* |  | 16.25d | 2013-09-02 A | 2013-09-27 A |  | 100% |  |  |  |  |  |  | start no earlier than 2013-11-06 | Sreekumar, Sreejith; Venkata, Raghavendra | 187h | 187h | 187 | 187 | 9.38 days |  |  |
| 671 | 1.5.1.5.25.1.2 | TS-FRM-AO-0105-CAMP_MASTERCARD *Adobe - Form* |  | 15d | 2013-09-09 A | 2013-10-31 |  |  | 15d |  |  |  | 12d | 0d | start no earlier than 2013-09-06 | Sreekumar, Sreejith [56.7%]; Venkata, Raghavendra [44.4%] | 68h |  | 68 |  | 13.5 days |  |  |
| 672 | 1.5.1.5.25.1.3 | BUILD-FRM-AO-0105-CAMP_MASTERCARD_2 *Adobe - Form* |  | 58d | 2013-09-09 A | 2013-12-24 |  |  | 58d |  |  |  | 736.22d |  | start no earlier than 2013-11-29 | Verma, Vinay [10.8%]; Kumar Sahoo, Saroj | 50h |  | 50 |  | 13.75 days |  |  |
| 673 | 1.5.1.5.25.1.4 | RTS-FRM-AO-0105-CAMP_MASTERCARD *Adobe - Form* |  | 1d? | 2013-11-07 | 2013-11-08 | 671FS+5d |  |  |  |  |  | 768.47d |  |  |  |  |  |  |  | 0 days |  |  |
| 674 | 1.5.1.5.25.1.5 | BUILD-FRM-AO-0105-CAMP_MASTERCARD *Adobe - Form* |  | 22.5d? | 2013-10-31 | 2013-11-28 | 671 |  |  |  |  |  | 12d | 0d |  | Sreekumar, Sreejith | 180h |  | 180 |  | 22.5 days |  |  |
| 675 | 1.5.1.5.25.1.6 | UT-FRM-AO-0105-CAMP_MASTERCARD *Adobe - Form* |  | 12.5d? | 2013-11-28 | 2013-12-13 | 674 |  |  |  |  |  | 12d | 0d |  | Sreekumar, Sreejith | 100h |  | 100 |  | 12.5 days |  |  |
| 676 | 1.5.1.5.25.1.7 | RB-FRM-AO-0105-CAMP_MASTERCARD *Adobe - Form* |  | 1d? | 2013-12-24 | 2013-12-25 | 675FS+7d |  |  |  |  |  | 12d |  |  |  |  |  |  |  | 0 days |  |  |
| 677 | 1.5.1.5.25.2 | **FS-FRM-AO-0108-28946 *Adobe - Form*** |  | 46.67d | 2013-10-04 A | 2013-12-09 |  | 13% | 40.62d | 2013-09-05 | 2013-11-01 | 0d | 11.83d |  |  |  | 270h | 1h | 270 | 1 | 33.75 days |  | AP354 |
| 678 | 1.5.1.5.25.2.1 | TS-FRM-AO-0108-28946 *Adobe - Form* |  | 15.5d | 2013-10-04 A | 2013-10-24 |  | 36% | 9.88d | 2013-09-05 | 2013-09-18 | 0d | 156.19d | 0d | start no earlier than 2013-10-04 | Thomas, Jolsna Joy | 80h | 1h | 80 | 1 | 10 days |  |  |
| 679 | 1.5.1.5.25.2.2 | RTS-FRM-AO-0108-28946 *Adobe - Form* | milestone | 0d | 2013-10-31 | 2013-10-31 | 678FS+5d |  |  | 2013-09-25 | 2013-09-25 | 0d | 183.1d |  |  |  |  |  |  |  | 0 days |  |  |
| 680 | 1.5.1.5.25.2.3 | BUILD-FRM-AO-0108-28946 *Adobe - Form* |  | 17.5d | 2013-10-24 | 2013-11-15 | 678 |  |  | 2013-09-18 | 2013-10-10 | 0d | 156.19d | 0d |  | Thomas, Jolsna Joy | 140h |  | 140 |  | 17.5 days |  |  |
| 681 | 1.5.1.5.25.2.4 | UT-FRM-AO-0108-28946 *Adobe - Form* |  | 10.42d | 2013-11-15 | 2013-11-28 | 680 |  |  | 2013-10-10 | 2013-10-23 | 0d | 156.31d | 0d |  | Thomas, Jolsna Joy [60%] | 50h |  | 50 |  | 6.25 days |  |  |
| 682 | 1.5.1.5.25.2.5 | RB-FRM-AO-0108-28946 *Adobe - Form* | milestone | 0d | 2013-12-09 | 2013-12-09 | 681FS+7d |  |  | 2013-11-01 | 2013-11-01 | 0d | 156.31d |  |  |  |  |  |  |  | 0 days |  |  |
| 683 | 1.5.1.5.25.3 | **FS-FRM-AO-0029-2.0Refi-R2.1 *Adobe - Form*** |  | 86.91d | 2013-08-19 A | 2013-12-17 |  | 39% | 53d | 2013-11-04 | 2013-12-03 | 0d | 5.59d |  |  |  | 151h | 60h | 151 | 60 | 15.5 days |  | AP354 |
| 684 | 1.5.1.5.25.3.1 | TS-FRM-AO-0029-2.0Refi-R2.1 *Adobe - Form* |  | 66.41d | 2013-08-19 A | 2013-11-25 |  | 49% | 34.16d | 2013-11-04 | 2013-11-08 | 0d | 11.21d | 0d | start no earlier than 2013-11-01 | Venkata, Raghavendra [60%]; Sreekumar, Sreejith [66.7%] | 64h | 58h | 64 | 58 | 4.63 days |  |  |
| 685 | 1.5.1.5.25.3.2 | RTS-FRM-AO-0029-2.0Refi-R2.1 *Adobe - Form* | milestone | 0d | 2013-12-02 | 2013-12-02 | 684FS+5d |  |  | 2013-11-15 | 2013-11-15 | 0d | 752.43d |  | start no earlier than 2013-08-21 |  |  |  |  |  | 0 days |  |  |
| 686 | 1.5.1.5.25.3.3 | BUILD-FRM-AO-0029-2.0Refi-R2.1 *Adobe - Form* |  | 13.12d | 2013-08-19 A | 2013-12-04 | 684 |  | 13.12d | 2013-11-11 | 2013-11-20 | 0d | 5.71d | 0d | start no earlier than 2013-11-12 | TINA - pranjal gupta (ACN_OFF1) [57.1%] | 62h | 2h | 62 | 2 | 7.75 days |  |  |
| 687 | 1.5.1.5.25.3.4 | UT-FRM-AO-0029-2.0Refi-R2.1 *Adobe - Form* |  | 3.12d | 2013-12-04 | 2013-12-06 | 686 |  |  | 2013-11-20 | 2013-11-22 | 0d | 5.59d | 0d | start no earlier than 2013-11-27 | TINA - pranjal gupta (ACN_OFF1) | 25h |  | 25 |  | 3.13 days |  |  |
| 688 | 1.5.1.5.25.3.5 | RB-FRM-AO-0029-2.0Refi-R2.1 *Adobe - Form* | milestone | 0d | 2013-12-17 | 2013-12-17 | 687FS+7d |  |  | 2013-12-03 | 2013-12-03 | 0d | 5.59d |  | start no earlier than 2013-09-02 |  |  |  |  |  | 0 days |  |  |
| 689 | 1.5.1.6 | **BUD1 - FUT** |  | 45d | 2013-10-14 | 2013-12-13 |  |  |  | 2013-10-14 | 2013-12-13 | 0d | 14.88d |  |  |  | 3088h |  | 3,088 |  | 386 days |  |  |
| 690 | 1.5.1.6.1 | **FUT -Drop1-** |  | 10d | 2013-10-14 | 2013-10-25 |  |  |  | 2013-10-14 | 2013-11-06 | 0d | 40d |  |  |  | 1616h |  | 1,616 |  | 202 days |  |  |
| 691 | 1.5.1.6.1.1 | FUT -Drop1- CRM |  | 11.12d | 2013-10-14 | 2013-10-25 |  |  |  | 2013-10-14 | 2013-10-25 | 0d | 787.26d | 288.94d | start no earlier than 2013-10-14 | Prasad Bomburey, Satya [54.5%]; ***SERA OUT si coupure demandé par Gina-------CRM_INTERMEDIATE2 (dev ACN_OFF1) [54.5%]; Halali, Sreekanth [54.5%]; Vallanda, Rohan Poovaiah [54.5%]; Kacham, Santosh [53.9%]; Sarkar, Javed [54.5%]; Reddy, Nithin [54.5%]; Kumar, Nitin [45.5%]; (CRM_SENIOR_5) ACN_ON1 601a [45.5%]; EN ATTENTE de création du compte planview Rajani Putha NBC_WORKFLOW_1 (dev ACN_OFF1) [45.5%]; Hartley, David [101.3%]; Tolambiya, Shailendra [101.3%]; Bhandari, Himanshu [90.9%]; Kumar Sahoo, Saroj [89.9%]; Shafai, Ramin [101.3%] | 856h |  | 856 |  | 107 days |  |  |
| 692 | 1.5.1.6.1.2 | FUT -Drop1- PI |  | 11.12d | 2013-10-14 | 2013-10-25 |  |  |  | 2013-10-14 | 2013-10-25 | 0d | 777.38d | 40d | start no earlier than 2013-10-14 | Mistri, Harish [60%]; Merwade, Mahesh [60%]; Missy, Vincent; Kalivarapu, Sai Krishna; Priyambada, Suprita [53.9%] | 304h |  | 304 |  | 38 days |  |  |
| 693 | 1.5.1.6.1.3 | FUT -Drop1- ADOBE |  | 11.12d | 2013-10-14 | 2013-10-25 |  |  |  | 2013-10-14 | 2013-11-06 | 0d | 777.84d | 42.5d | start no earlier than 2013-10-14 | Cella, Maria [50%]; Thomas, Jolsna Joy [89.9%]; Sharma, Jayanti [125%]; Sreekumar, Sreejith [89.9%]; Sriram Sarath, Nandula (termine 22 dec) [44.9%]; Venkata, Raghavendra [89.9%]; Sandra, Prasad [36%]; TINA - pranjal gupta (ACN_OFF1) [36%]; Verma, Vinay [80.9%] | 456h |  | 456 |  | 57 days |  |  |

| ID | WBS | Task | Duration | Start | Finish | Predecessors | Complete | Remaining | Baseline start | Baseline finish | Baseline duration | Total slack | Free slack | Constraint | Resources | Work | Actual work | Cost | Actual cost | work_091113 | ? For PM |
| --- | --- | --- | --- | --- | --- | --- | --- | --- | --- | --- | --- | --- | --- | --- | --- | --- | --- | --- | --- | --- | --- |
| 694 | 1.5.1.6.2 | **FUT - Drop2-** | 10d | 2013-12-02 | 2013-12-13 |  |  |  | 2013-11-28 | 2013-12-13 | 0d | 3.88d |  |  |  | 1472h |  | 1,472 |  | 184 days |  |
| 695 | 1.5.1.6.2.1 | FUT - Drop2- CRM | 11d | 2013-12-02 | 2013-12-13 |  |  |  | 2013-12-02 | 2013-12-13 | 0d | 752.38d | 254.07d | start no earlier than 2013-12-02 | Prasad Bomburey, Satya [90.9%]; ***SERA OUT si coupure demandé par Gina-------CRM_INTERMEDIATE2 (dev ACN_OFF1) [54.5%]; Halali, Sreekanth [54.5%]; Vallanda, Rohan Poovaiah [54.5%]; Kacham, Santosh [101.3%]; Sarkar, Javed [54.5%]; Reddy, Nithin [54.5%]; Kumar, Nitin [54.5%]; (CRM_SENIOR_5) ACN_ON1 601a [54.5%]; EN ATTENTE de création du compte planview Rajani Putha NBC_WORKFLOW_1 (dev ACN_OFF1) [54.5%]; Hartley, David [101.3%]; Tolambiya, Shailendra [101.3%]; Bhandari, Himanshu [45.5%]; Kumar Sahoo, Saroj [50.6%]; Shafai, Ramin [50.6%]; Ta, Bach Sim [50.6%] | 864h |  | 864 |  | 108 days |  |
| 696 | 1.5.1.6.2.2 | FUT - Drop2- PI | 11.12d | 2013-12-02 | 2013-12-13 |  |  |  | 2013-12-02 | 2013-12-13 | 0d | 741.26d | 5d | start no earlier than 2013-12-02 | Mistri, Harish [50%]; Merwade, Mahesh [50%]; Kalivarapu, Sai Krishna [50%]; Missy, Vincent; Priyambada, Suprita | 200h |  | 200 |  | 25 days |  |
| 697 | 1.5.1.6.2.3 | FUT - Drop2- ADOBE | 11.12d | 2013-12-02 | 2013-12-13 |  |  |  | 2013-11-28 | 2013-12-13 | 0d | 742.84d | 7.5d | finish no earlier than 2013-12-13 | Cella, Maria [50%]; Thomas, Jolsna Joy [44.9%]; Sharma, Jayanti [50%]; Rahane, Samir; Sriram Sarath, Nandula (termine 22 dec) [36%]; Reddy, Nithin [36%]; Sandra, Prasad [36%]; TINA - pranjal gupta (ACN_OFF1) [89.9%]; Verma, Vinay [36%]; Sreekumar, Sreejith [89.9%] | 408h |  | 408 |  | 51 days |  |
| 698 | 1.5.1.7 | **BUD1 - IT** | 25d | 2013-12-23 | 2014-01-24 |  |  |  | 2013-12-23 | 2014-01-17 | 0d | 12d |  |  |  | 5376h |  | 5,376 |  | 672 days |  |
| 699 | 1.5.1.7.1 | IT - CRM | 17d | 2014-01-03 | 2014-01-24 | 115, 691, 695 |  |  | 2013-12-23 | 2014-01-24 | 0d | -239.07d | 0d | finish no earlier than 2014-01-24 | Halali, Sreekanth [221.3%]; Sarkar, Javed [164.7%]; Kumar, Nitin [38.2%]; (CRM_SENIOR_5) ACN_ON1 601a [164.7%]; EN ATTENTE de création du compte planview Rajani Putha NBC_WORKFLOW_1 (dev ACN_OFF1) [164.7%]; Hartley, David [185.1%]; Tolambiya, Shailendra [1066.7%]; Bhandari, Himanshu [164.7%]; Kumar Sahoo, Saroj [1066.7%]; Shafai, Ramin [185.1%]; Prasad Bomburey, Satya [164.7%]; CRM_INTERMEDIATE_5 ACN_OFF1 [36%]; Kacham, Santosh [198.5%]; Kambeli, Venkat Rao | 2688h |  | 2,688 |  | 336 days |  |
| 700 | 1.5.1.7.2 | IT - PI | 28d | 2013-12-23 | 2014-01-24 | 388, 692, 696 |  |  | 2013-12-23 | 2014-01-24 | 0d | 12d |  | start no earlier than 2013-12-23 | Mistri, Harish [115%]; Merwade, Mahesh [115%]; Missy, Vincent [115%]; Kalivarapu, Sai Krishna [115%]; Priyambada, Suprita | 896h |  | 896 |  | 112 days |  |
| 701 | 1.5.1.7.3 | IT - ADOBE | 25.25d | 2013-12-25 | 2014-01-24 | 507, 693, 697 |  |  | 2013-12-23 | 2014-01-24 | 0d | 12d |  | finish no earlier than 2014-01-24 | Cella, Maria [124.4%]; Thomas, Jolsna Joy [110.9%]; Sharma, Jayanti [110.9%]; Sandra, Prasad [110.9%]; TINA - pranjal gupta (ACN_OFF1) [110.9%]; Verma, Vinay [110.9%]; Rahane, Samir [68.9%]; Venkata, Raghavendra [71.3%]; Sreekumar, Sreejith [88.5%]; Reddy, Nithin [39.6%] | 1792h |  | 1,792 |  | 224 days |  |
| 702 | 1.6 | **Org Implementation** | 162d | 2013-07-01 A | 2014-02-11 |  | 70% | 48.33d | 2013-06-10 | 2013-10-30 | 0d? | 0d |  |  |  | 2606h | 1482h | 2,026 | 1,084 | 366.38 days | Si question, voir Chris |
| 703 | 1.6.1 | Completed--------2.0 Org Structure Changes : Org Structure Analysis | 25d | 2013-07-01 A | 2013-08-02 A |  | 100% |  | 2013-06-10 | 2013-06-19 | 0d? |  |  | start no earlier than 2013-07-22 | Paulin, Chantal [67.5%]; Morissette, Yves [26.2%] | 62.5h | 62.5h | 62.5 | 62.5 | 7.81 days |  |
| 704 | 1.6.2 | Completed--------2.0 Org Structure Changes: Custom Program Modifications (Design & Build) | 50d | 2013-07-08 A | 2013-09-20 A |  | 100% |  | 2013-06-19 | 2013-09-11 | 0d? |  |  | start no earlier than 2013-07-08 | Morissette, Yves [53.8%]; Miner, Bob [115%]; Shelat, Krishna [50%]; Doré, Jean-Francois [60%] | 403h | 403h | 124 | 124 | 69.56 days |  |
| 705 | 1.6.3 | Completed--------2.1 Org Structure Changes: Org Changes | 30d | 2013-07-22 A | 2013-10-04 A |  | 100% |  | 2013-07-22 | 2013-08-09 | 0d? |  |  | start no earlier than 2013-07-22 | Paulin, Chantal [50%] | 62h | 62h | 62 | 62 | 15 days |  |
| 706 | 1.6.4 | Completed--------BI Changes for Org 2.1 | 40d | 2013-08-05 A | 2013-09-27 A |  | 100% |  | 2013-08-12 | 2013-08-23 | 0d? |  |  | start no earlier than 2013-08-12 | Bradai, Yacine [56.2%] | 36.5h | 36.5h | 36.5 | 36.5 | 10 days |  |
| 707 | 1.6.5 | Completed--------BOBJ Changes for Org 2.1 (POC/Org 2.1) | 45d | 2013-08-05 A | 2013-10-04 A |  | 100% |  | 2013-08-05 | 2013-09-13 | 0d? |  |  | start no earlier than 2013-08-05 | Trudel, Liette [68.8%]; Henri, Sébastien [37.5%]; Leonard, Jean-Rubin OUT [11.2%] | 88.5h | 88.5h | 88.5 | 88.5 | 25.38 days |  |
| 708 | 1.6.6 | Testing Prep/CRD - Mock Run 2 | 72d | 2013-07-22 A | 2013-10-29 |  | 83% | 12d | 2013-07-22 | 2013-10-25 | 0d? | 63d |  | start no earlier than 2013-07-22 | Acharya, Chinta [40%]; Paulin, Chantal [41.7%]; Doré, Jean-Francois [20%]; Morissette, Yves [86.2%]; Miner, Bob [90%]; Shelat, Krishna [18.8%]; Trudel, Liette [41.2%]; Bradai, Yacine [40%]; Djerfaf, Abdelhamid (Banque de temps) | 382h | 269.5h | 270 | 175.5 | 48 days | 8 oct: ajout djerfaf +16h |
| 709 | 1.6.7 | Completed--------CRI - Mock Run (1) | 22d | 2013-08-08 A | 2013-09-23 A |  | 100% |  | 2013-08-08 | 2013-08-20 | 0d? |  |  | start no earlier than 2013-08-08 | Paulin, Chantal [68.8%]; Victor, Soledad [16.7%]; Morissette, Yves [48.8%]; Acharya, Chinta [70%]; Bradai, Yacine [33.3%]; Trudel, Liette [33.3%]; Shelat, Krishna [16.7%] | 93h | 93h | 93 | 93 | 21.63 days |  |
| 710 | 1.6.8 | Completed--------CRA - Mock Run (1) et autres | 28d | 2013-08-21 A | 2013-10-14 A |  | 100% |  | 2013-08-21 | 2013-10-09 | 0d? |  |  | start no earlier than 2013-08-21 | Paulin, Chantal [87.5%]; Acharya, Chinta [122.5%]; Victor, Soledad [2.5%]; Morissette, Yves [63.8%]; Bradai, Yacine [8.8%]; Trudel, Liette [102.5%]; Doré, Jean-Francois [90%]; Miner, Bob [62.5%]; Shelat, Krishna [105%]; Laperriere, Benoit [60%]; Valenciarojas, Edison [30%]; Martel, Sylvain [30%]; Henri, Sébastien [197.3%] | 417.5h | 417.5h | 392.5 | 392.5 | 81 days |  |
| 711 | 1.6.9 | CRE - Mock Run (1) et autres | 87d | 2013-10-07 A | 2014-02-04 |  | 2% | 85.28d | 2013-10-08 | 2013-10-25 | 0d? | 0d |  | finish no earlier than 2013-11-01 | Paulin, Chantal [64.4%]; Victor, Soledad [4.2%]; Morissette, Yves [108.5%]; Acharya, Chinta [108.5%]; Bradai, Yacine [6.7%]; Trudel, Liette [6.2%]; Miner, Bob [15%]; Shelat, Krishna [10%]; Valenciarojas, Edison [6.7%]; Laperriere, Benoit [5%]; Doré, Jean-Francois [78.3%]; Henri, Sébastien; Martel, Sylvain | 468.5h | 49.5h | 428.5 | 49.5 | 24 days | Nouvelles dates : Start 14 oct jusqu'au 1er novembre |
| 712 | 1.6.10 | Deployment | 26d | 2013-08-20 | 2013-11-18 |  |  |  | 2013-08-20 | 2013-10-28 | 0d? | 49d |  | start no earlier than 2013-08-20 | Morissette, Yves [76.9%]; Victor, Soledad [115.4%]; Paulin, Chantal [3.8%] | 234h |  | 234 |  | 51 days |  |
| 713 | 1.6.11 | CRP - GO LIVE | 5d | 2014-02-05 | 2014-02-11 | 711 |  |  | 2013-10-28 | 2013-10-30 | 0d? | 0d |  | start no earlier than 2013-10-28 | Victor, Soledad [20%]; Morissette, Yves [30%]; Acharya, Chinta [60%]; Paulin, Chantal [96.2%]; Bradai, Yacine [210%]; Trudel, Liette [10%]; Miner, Bob [200%]; Shelat, Krishna [110%]; Valenciarojas, Edison [80%]; Laperriere, Benoit [80%] | 358.5h |  | 234.5 |  | 13 days | Nouvelles dates: Start 4 jusqu'au 8 novembre |
